# Data Release Schedule

Schedule from MS Project, 2001-06-05 to 2008-12-01, A marks actual dates.
Fermilab

## Calendars

- Standard: Mon-Fri 08:00-12:00, 13:00-17:00; Sat-Sun off. Exceptions (off unless hours are given): 2004-05-31, 2004-07-05, 2004-09-06, 2004-11-25 to 2004-11-26, 2004-12-24, 2004-12-27, 2004-12-31, 2005-01-03, 2005-12-23, 2005-12-26, 2005-12-30, 2006-01-02, 2006-01-16.

## Resources

| Resource |
| --- |
| Sekhri |
| Lilianstrom |
| Szalay |
| Kent |
| Boroski |
| Schultz |
| Reviewers |
| Inkmann |
| vandenBerg |
| Thakar |
| Yanny |
| Hendry |
| Jester |
| Testers |
| Strauss |
| Lebedeva |
| Kumar |
| Collab |
| Li |
| Neilsen |
| Gray |
| Buyer |
| Receiving |
| Alcorn |
| Stoughton |
| Adelman |
| Trumbo |

## Schedule

| ID | WBS | Task | Type | Duration | Start | Finish | Predecessors | Complete | Remaining | Total slack | Free slack | Constraint | Resources | Work | Actual work | Text1 |
| --- | --- | --- | --- | --- | --- | --- | --- | --- | --- | --- | --- | --- | --- | --- | --- | --- |
| 1 | 1 | **DATA RELEASE MILESTONES** |  | 1940d? | 2001-06-05 A | 2008-12-01 |  | 99% | 0d? | 0d |  |  |  |  |  |  |
| 2 | 1.1 | Early Data Release |  | 1d? | 2001-06-05 A | 2001-06-05 A |  | 100% |  |  |  |  |  |  |  |  |
| 3 | 1.2 | DR1 Collaboration Release |  | 11d | 2003-04-04 A | 2003-04-18 A |  | 100% |  |  |  | start no earlier than 2003-01-06 |  |  |  |  |
| 4 | 1.3 | DR1 Public Release |  | 1d | 2003-06-11 A | 2003-06-11 A |  | 100% |  |  |  | start no earlier than 2003-04-04 |  |  |  |  |
| 5 | 1.4 | DR2 Collaboration Release |  | 1d | 2003-12-18 A | 2003-12-18 A |  | 100% |  |  |  | start no earlier than 2003-12-18 |  |  |  |  |
| 6 | 1.5 | DR2 Public Release |  | 1d | 2004-03-15 A | 2004-03-15 A |  | 100% |  |  |  | start no earlier than 2004-03-15 |  |  |  |  |
| 7 | 1.6 | DR3 Collaboration Release |  | 1d | 2004-05-27 A | 2004-05-27 A |  | 100% |  |  |  | start no earlier than 2004-07-06 |  |  |  |  |
| 8 | 1.7 | DR3 Public Release |  | 1d | 2004-09-27 A | 2004-09-27 A |  | 100% |  |  |  | start no earlier than 2004-09-27 |  |  |  |  |
| 9 | 1.8 | DR4 Collaboration Release |  | 1d | 2004-12-22 A | 2004-12-22 A |  | 100% |  |  |  | start no earlier than 2004-12-01 |  |  |  |  |
| 10 | 1.9 | DR4 Public Release |  | 1d | 2005-06-29 A | 2005-06-29 A |  | 100% |  |  |  | start no earlier than 2005-06-27 |  |  |  |  |
| 11 | 1.10 | DR5 Collaboration Release |  | 1d | 2005-10-21 A | 2005-10-21 A |  | 100% |  |  |  | start no earlier than 2005-09-01 |  |  |  |  |
| 12 | 1.11 | DR5 Public Release | milestone | 0d | 2006-06-26 | 2006-06-26 |  |  |  | 635d |  | start no earlier than 2006-06-26 |  |  |  |  |
| 13 | 1.12 | DR6 Collaboration Release | milestone | 0d | 2006-09-25 | 2006-09-25 |  |  |  | 570d |  | start no earlier than 2006-09-25 |  |  |  |  |
| 14 | 1.13 | DR6 Public Release | milestone | 0d | 2007-06-25 | 2007-06-25 |  |  |  | 375d | 0d | start no earlier than 2007-06-25 |  |  |  |  |
| 15 | 1.14 | DR7 Collaboration Release | milestone | 0d | 2007-09-24 | 2007-09-24 |  |  |  | 310d |  | start no earlier than 2007-09-24 |  |  |  |  |
| 16 | 1.15 | DR7 Public Release | milestone | 0d | 2008-06-23 | 2008-06-23 |  |  |  | 115d |  | start no earlier than 2008-06-23 |  |  |  |  |
| 17 | 1.16 | DR8 Collaboration Release | milestone | 0d | 2008-09-22 | 2008-09-22 |  |  |  | 50d |  | start no earlier than 2008-09-22 |  |  |  |  |
| 18 | 1.17 | DR8 Public Release | milestone | 0d | 2008-12-01 | 2008-12-01 |  |  |  | 0d |  | start no earlier than 2008-12-01 |  |  |  |  |
| 20 | 2 | **CAS Infrastructure** |  | 631.5d? | 2004-01-14 A | 2006-07-05 |  | 31% | 433.46d? | 627.5d |  |  |  | 19164h | 4644h | Infrastructure |
| 21 | 2.1 | **SkyServer Hardware Plan** |  | 51d | 2004-05-04 | 2004-07-15 |  |  |  | 1129d |  |  |  | 672h |  | Infrastructure |
| 22 | 2.1.1 | Hardware planning meeting at JHU |  | 2d | 2004-05-04 | 2004-05-05 |  |  |  | 1145d | 0d | start no earlier than 2004-05-04 |  |  |  | Infrastructure |
| 23 | 2.1.2 | Develop final plan for CAS production system |  | 10d | 2004-05-06 | 2004-05-19 | 22 |  |  | 1164d | 0d |  | Sekhri; Lilianstrom | 160h |  | Infrastructure |
| 24 | 2.1.3 | Internal sign-off for final CAS hardware plan |  | 3d | 2004-05-20 | 2004-05-24 | 23 |  |  | 1164d | 0d |  | Szalay; Kent; Boroski | 72h |  | Infrastructure |
| 25 | 2.1.4 | Post draft of CAS hardware plan on web |  | 1d | 2004-05-25 | 2004-05-25 | 24 |  |  | 1164d |  |  | Schultz | 8h |  | Infrastructure |
| 26 | 2.1.5 | Schedule external review of CAS hardware plan |  | 1d | 2004-05-06 | 2004-05-06 | 22 |  |  | 1145d | 16d |  | Boroski | 8h |  | Infrastructure |
| 27 | 2.1.6 | CAS Hardware Plan External Review |  | 1d | 2004-06-01 | 2004-06-01 | 26 |  |  | 1129d | 0d | start no earlier than 2004-06-01 | Reviewers | 8h |  | Infrastructure |
| 28 | 2.1.7 | Hardware review committee prepares final report |  | 10d | 2004-06-02 | 2004-06-15 | 27 |  |  | 1129d | 0d |  | Reviewers | 80h |  | Infrastructure |
| 29 | 2.1.8 | Post final hardware plan on web |  | 0.5d | 2004-06-16 | 2004-06-16 | 28 |  |  | 1149.5d |  |  | Schultz | 4h |  | Infrastructure |
| 30 | 2.1.9 | Post hardware plan review committee report on web |  | 0.5d | 2004-06-16 | 2004-06-16 | 28 |  |  | 1149.5d |  |  | Schultz | 4h |  | Infrastructure |
| 31 | 2.1.10 | Assign action items from CAS hardware plan review |  | 1d | 2004-06-16 | 2004-06-16 | 28 |  |  | 1129d | 0d |  | Boroski | 8h |  | Infrastructure |
| 32 | 2.1.11 | Track CAS hardware review action items |  | 20d | 2004-06-17 | 2004-07-15 | 31 |  |  | 1129d |  |  | Boroski; Schultz | 320h |  | Infrastructure |

| ID | WBS | Task | Type | Duration | Start | Finish | Predecessors | Complete | Remaining | Total slack | Free slack | Constraint | Resources | Work | Actual work | Text1 |
| --- | --- | --- | --- | --- | --- | --- | --- | --- | --- | --- | --- | --- | --- | --- | --- | --- |
| 33 | 2.2 | **SkyServer Hardware Procurements** |  | 604d? | 2004-01-14 A | 2006-05-26 |  | 57% | 256.73d? | 655d |  |  | Boroski | 11992h | 4644h | Infrastructure |
| 34 | 2.2.1 | Procure new KVM module for CAS production cluster |  | 11d | 2004-02-13 A | 2004-02-27 A |  | 100% |  |  |  |  | Boroski | 88h | 88h | Infrastructure |
| 35 | 2.2.2 | Procure spare disks for SATA servers |  | 3d | 2004-03-05 A | 2004-03-09 A |  | 100% |  |  |  |  | Boroski | 24h | 24h | Infrastructure |
| 36 | 2.2.3 | **Hardware for DR3 Release** |  | 73d? | 2004-01-14 A | 2004-04-23 A |  | 100% |  |  |  |  | Boroski | 1264h | 1264h | Infrastructure |
| 37 | 2.2.3.1 | Procure (2) 6TB SATA servers (008 & 009) |  | 67d | 2004-01-14 A | 2004-04-15 A |  | 100% |  |  |  |  | Boroski | 536h | 536h | Infrastructure |
| 38 | 2.2.3.2 | Install and configure sdssSQL008 as RAID0 |  | 2d | 2004-04-15 A | 2004-04-16 A | 37 | 100% |  |  |  |  | Sekhri; Lilianstrom | 32h | 32h | Infrastructure |
| 39 | 2.2.3.3 | Install and configure sdssSQL009 |  | 1d? | 2004-04-16 A | 2004-04-16 A | 37 | 100% |  |  |  |  | Sekhri | 8h | 8h | Infrastructure |
| 40 | 2.2.3.4 | Burn-in and stress test sdssSQL008 |  | 3d | 2004-04-19 A | 2004-04-21 A | 38 | 100% |  |  |  |  | Sekhri | 24h | 24h | Infrastructure |
| 41 | 2.2.3.5 | Burn-in and stress test sdssSQL009 |  | 5d | 2004-04-19 A | 2004-04-23 A | 39 | 100% |  |  |  |  | Sekhri; Lilianstrom | 80h | 80h | Infrastructure |
| 42 | 2.2.3.6 | Hardware for DR3 public release in place | milestone | 0d | 2004-04-23 A | 2004-04-23 A | 41, 40 | 100% |  |  |  |  |  |  |  | Infrastructure |
| 43 | 2.2.4 | **Hardware for DR4 Release** |  | 37d | 2004-10-27 A | 2004-12-20 A |  | 100% |  |  |  |  | Boroski | 592h | 592h | Infrastructure |
| 44 | 2.2.4.1 | Procure SATA servers sdssSQL010 and 011 |  | 22d | 2004-10-27 A | 2004-11-29 A | 28 | 100% |  |  |  |  | Lilianstrom | 176h | 176h | Infrastructure |
| 45 | 2.2.4.2 | Install and configure sdssSQL010 and 011 |  | 5d | 2004-11-30 A | 2004-12-06 A | 44 | 100% |  |  |  |  | Lilianstrom | 40h | 40h | Infrastructure |
| 46 | 2.2.4.3 | Burn-in and stress test sdssSQL010 and 011 |  | 10d | 2004-12-07 A | 2004-12-20 A | 45 | 100% |  |  |  |  | Lilianstrom | 80h | 80h | Infrastructure |
| 47 | 2.2.4.4 | Hardware for DR4 public release in place | milestone | 0d | 2004-12-20 A | 2004-12-20 A | 46 | 100% |  |  |  |  |  |  |  | Infrastructure |
| 48 | 2.2.5 | **Hardware for DR5 Release and Runs DB Loading/Hosting** |  | 54d | 2005-05-09 A | 2005-07-21 A |  | 100% |  |  |  |  | Boroski | 864h | 864h | Infrastructure |
| 49 | 2.2.5.1 | Procure SATA servers 012-017 |  | 44d | 2005-05-09 A | 2005-07-07 A |  | 100% |  |  |  |  | Boroski | 352h | 352h | Infrastructure |
| 50 | 2.2.5.2 | Install, configure and burn in SATA servers 012-017 |  | 10d | 2005-07-08 A | 2005-07-21 A |  | 100% |  |  |  |  | Lilianstrom | 80h | 80h | Infrastructure |
| 51 | 2.2.5.3 | Hardware for DR5 public release and Runs DB loading in place | milestone | 0d | 2005-07-21 A | 2005-07-21 A |  | 100% |  |  |  |  |  |  |  | Infrastructure |
| 52 | 2.2.6 | **Hardware for Load-balanced Web Server Front-end** |  | 112d | 2005-06-28 A | 2005-11-30 A |  | 100% |  |  |  |  | Boroski | 1368h | 1368h | Infrastructure |
| 53 | 2.2.6.1 | Procure three new web servers |  | 24d | 2005-06-28 A | 2005-07-29 A |  | 100% |  |  |  |  | Boroski | 192h | 192h | Infrastructure |
| 54 | 2.2.6.2 | Install, configure and burn in new web servers |  | 35d | 2005-10-13 A | 2005-11-30 A | 53 | 100% |  |  |  |  | Lilianstrom | 280h | 280h | Infrastructure |
| 55 | 2.2.6.3 | Load-balancing web-server cluster placed into production use | milestone | 0d | 2005-11-30 A | 2005-11-30 A | 54 | 100% |  |  |  |  |  |  |  | Infrastructure |
| 56 | 2.2.7 | **Hardware for Runs DB and 003/004 Replacements** |  | 50d | 2005-12-02 A | 2006-02-16 |  | 17% | 41.67d | 726d |  |  | Boroski | 1120h | 180h | Infrastructure |
| 57 | 2.2.7.1 | Procure SATA server 018 |  | 40d | 2005-12-02 A | 2006-02-02 |  | 19% | 32.5d | 726d | 0d | start no earlier than 2005-12-12 | Boroski | 320h | 60h | Infrastructure |
| 58 | 2.2.7.2 | Procure replacement servers for 003 and 004 |  | 40d | 2005-12-02 A | 2006-02-02 | 57SS | 19% | 32.5d | 726d | 0d |  | Boroski | 320h | 60h | Infrastructure |
| 59 | 2.2.7.3 | Install and configure 018 and 003/004 replacements |  | 5d | 2006-02-03 | 2006-02-09 | 57, 58 |  |  | 726d | 0d |  | Lilianstrom | 40h |  | Infrastructure |
| 60 | 2.2.7.4 | Burn-in and stress test servers 018 and 003/004 replacements |  | 5d | 2006-02-10 | 2006-02-16 | 59 |  |  | 726d | 0d |  | Lilianstrom | 40h |  | Infrastructure |
| 61 | 2.2.7.5 | Server 018 and 003/004 replacements ready for production use | milestone | 0d | 2006-02-16 | 2006-02-16 | 60 |  |  | 726d |  |  |  |  |  | Infrastructure |

| ID | WBS | Task | Type | Duration | Start | Finish | Predecessors | Total slack | Free slack | Constraint | Resources | Work | Text1 |
| --- | --- | --- | --- | --- | --- | --- | --- | --- | --- | --- | --- | --- | --- |
| 62 | 2.2.8 | **Hardware for Hosting Metrics/Performance Data** |  | 35d | 2006-02-03 | 2006-03-23 |  | 691d |  |  | Boroski | 560h | Infrastructure |
| 63 | 2.2.8.1 | Obtain quotes for machine to host SkyServer performance metrics |  | 5d | 2006-02-03 | 2006-02-09 | 90 | 691d | 0d |  | Boroski | 40h | Infrastructure |
| 64 | 2.2.8.2 | Procure server for hosting metrics/monitoring outputs (019) |  | 20d | 2006-02-10 | 2006-03-09 | 63 | 691d | 0d |  | Boroski | 160h | Infrastructure |
| 65 | 2.2.8.3 | Install and configure sdsssql019 |  | 5d | 2006-03-10 | 2006-03-16 | 64 | 691d | 0d |  | Lilianstrom | 40h | Infrastructure |
| 66 | 2.2.8.4 | Burn-in and stress test sdsssql019 |  | 5d | 2006-03-17 | 2006-03-23 | 65 | 691d | 0d |  | Lilianstrom | 40h | Infrastructure |
| 67 | 2.2.8.5 | Hardware for hosting metrics data (019) ready for production use | milestone | 0d | 2006-03-23 | 2006-03-23 | 66 | 691d | 0d |  |  |  | Infrastructure |
| 68 | 2.2.9 | **Hardware for Hosting Enhanced Color JPGs** |  | 40d | 2004-03-26 | 2004-05-20 |  | 1157d |  |  | Boroski | 640h | Infrastructure |
| 69 | 2.2.9.1 | Procure server for hosting enhanced color JPGs (020) |  | 30d | 2004-03-26 | 2004-05-06 | 110 | 1157d | 0d |  | Boroski | 240h | Infrastructure |
| 70 | 2.2.9.2 | Install and configure sdsssql020 |  | 5d | 2004-05-07 | 2004-05-13 | 69 | 1157d | 0d |  | Lilianstrom | 40h | Infrastructure |
| 71 | 2.2.9.3 | Burn-in and stress test sdsssql020 |  | 5d | 2004-05-14 | 2004-05-20 | 70 | 1157d | 0d |  | Lilianstrom | 40h | Infrastructure |
| 72 | 2.2.9.4 | Hardware for hosting color JPGs (020) ready for production use | milestone | 0d | 2004-05-20 | 2004-05-20 | 71 | 1157d | 0d |  |  |  | Infrastructure |
| 73 | 2.2.10 | **Hardware for DR6 Release** |  | 40d | 2006-04-03 | 2006-05-26 |  | 655d |  |  | Boroski | 640h | Infrastructure |
| 74 | 2.2.10.1 | Procure SATA servers 021-022 for DR6 release |  | 30d | 2006-04-03 | 2006-05-12 |  | 655d | 0d | start no earlier than 2006-04-03 | Boroski | 240h | Infrastructure |
| 75 | 2.2.10.2 | Install and configure SATA servers 021-022 |  | 5d | 2006-05-15 | 2006-05-19 | 74 | 655d | 0d |  | Lilianstrom | 40h | Infrastructure |
| 76 | 2.2.10.3 | Burn-in and stress test servers 021-022 |  | 5d | 2006-05-22 | 2006-05-26 | 75 | 655d | 0d |  | Lilianstrom | 40h | Infrastructure |
| 77 | 2.2.10.4 | Hardware for DR6 public release (020-021) ready for production use | milestone | 0d | 2006-05-26 | 2006-05-26 | 76 | 655d |  |  |  |  | Infrastructure |
| 78 | 2.3 | **Enstore Backups** |  | 100d | 2006-01-10 | 2006-05-30 |  | 653d |  |  | Trumbo | 1640h | Infrastructure |
| 79 | 2.3.1 | Test and verify that backup from Enstore can be restored correctly |  | 10d | 2006-01-10 | 2006-01-24 |  | 653d | 0d | start no earlier than 2006-01-10 | Trumbo | 80h | Infrastructure |
| 80 | 2.3.2 | Document procedure for Enstore backup and recovery |  | 5d | 2006-01-25 | 2006-01-31 | 79 | 738d |  |  | Trumbo | 40h | Infrastructure |
| 81 | 2.3.3 | Back up DR4 to Enstore |  | 15d | 2006-01-25 | 2006-02-14 | 79 | 653d | 0d |  | Trumbo | 120h | Infrastructure |
| 82 | 2.3.4 | Back up DR5 to Enstore |  | 15d | 2006-02-15 | 2006-03-07 | 81 | 653d | 0d |  | Trumbo | 120h | Infrastructure |
| 83 | 2.3.5 | Back up DR3 to Enstore |  | 15d | 2006-03-08 | 2006-03-28 | 82 | 653d | 0d |  | Trumbo | 120h | Infrastructure |
| 84 | 2.3.6 | Back up DR2 to Enstore |  | 15d | 2006-03-29 | 2006-04-18 | 83 | 653d | 0d |  | Trumbo | 120h | Infrastructure |
| 85 | 2.3.7 | Back up DR1 to Enstore |  | 15d | 2006-04-19 | 2006-05-09 | 84 | 653d | 0d |  | Trumbo | 120h | Infrastructure |
| 86 | 2.3.8 | Back up EDR to Enstore |  | 15d | 2006-05-10 | 2006-05-30 | 85 | 653d | 0d |  | Trumbo | 120h | Infrastructure |
| 87 | 2.3.9 | All public data releases backed up to Enstore | milestone | 0d | 2006-05-30 | 2006-05-30 | 86 | 653d |  |  |  |  | Infrastructure |

| ID | WBS | Task | Type | Duration | Start | Finish | Predecessors | Total slack | Free slack | Constraint | Resources | Work | Text1 |
| --- | --- | --- | --- | --- | --- | --- | --- | --- | --- | --- | --- | --- | --- |
| 88 | 2.4 | **Performance Monitoring Tools** |  | 60d | 2006-01-12 | 2006-04-06 |  | 691d |  |  | Kumar | 880h | Infrastructure |
| 89 | 2.4.1 | Develop specifications for SkyServer system performance metrics |  | 10d | 2006-01-12 | 2006-01-26 |  | 691d | 0d | start no earlier than 2006-01-12 | Kumar | 80h | Infrastructure |
| 90 | 2.4.2 | Develop specifications for fileserver to host SkyServer performance metrics |  | 5d | 2006-01-27 | 2006-02-02 | 89 | 691d | 0d |  | Kumar; Lilianstrom | 80h | Infrastructure |
| 91 | 2.4.3 | Develop scripts and tools for harvesting, displaying and logging system performance |  | 10d | 2006-01-27 | 2006-02-09 | 89 | 721d | 30d |  | Kumar | 80h | Infrastructure |
| 92 | 2.4.4 | Develop web pages for displaying system performance metrics |  | 10d | 2006-01-12 | 2006-01-26 | 89SS | 731d | 40d |  | Kumar | 80h | Infrastructure |
| 93 | 2.4.5 | Implement metrics web pages, scripts, and logging process on new metrics machine |  | 5d | 2006-03-24 | 2006-03-30 | 91, 92, 67 | 691d | 0d |  | Kumar | 40h | Infrastructure |
| 94 | 2.4.6 | Document scripts and procedures for capturing, displaying and logging performance metrics |  | 5d | 2006-03-31 | 2006-04-06 | 93 | 691d | 0d |  | Kumar | 40h | Infrastructure |
| 95 | 2.4.7 | Performance monitoring system in place and functional | milestone | 0d | 2006-04-06 | 2006-04-06 | 94 | 691d |  |  |  |  | Infrastructure |
| 96 | 2.5 | **Regression Test Suite for Production Operations** |  | 40d | 2006-01-17 | 2006-03-13 |  | 709d |  |  | Kumar | 720h | Infrastructure |
| 97 | 2.5.1 | Develop requirements for production regression test suite |  | 5d | 2006-01-17 | 2006-01-23 |  | 709d | 0d | start no earlier than 2006-01-16 | Kumar | 40h | Infrastructure |
| 98 | 2.5.2 | Develop tests to verify that web harvesting is capturing usage on all production machines |  | 5d | 2006-01-24 | 2006-01-30 | 97 | 709d | 0d |  | Kumar | 40h | Infrastructure |
| 99 | 2.5.3 | Develop regression tests for new fileserver deployment |  | 5d | 2006-01-31 | 2006-02-06 | 98 | 709d | 0d |  | Kumar | 40h | Infrastructure |
| 100 | 2.5.4 | Develop regression tests for web server deployment |  | 5d | 2006-02-07 | 2006-02-13 | 99 | 709d | 0d |  | Kumar | 40h | Infrastructure |
| 101 | 2.5.5 | Develop regresssion tests for new sqlLoader deployment |  | 5d | 2006-02-14 | 2006-02-20 | 100 | 709d | 0d |  | Kumar | 40h | Infrastructure |
| 102 | 2.5.6 | Develop regression tests for FITS2CSV code deployment |  | 5d | 2006-02-21 | 2006-02-27 | 101 | 709d | 0d |  | Kumar | 40h | Infrastructure |
| 103 | 2.5.7 | Develop regression tests for database copy operations |  | 5d | 2006-02-28 | 2006-03-06 | 102 | 709d | 0d |  | Kumar | 40h | Infrastructure |
| 104 | 2.5.8 | Develop regression tests for CasJobs deployment |  | 5d | 2006-03-07 | 2006-03-13 | 103 | 709d | 0d |  | Kumar; Li; Thakar | 120h | Infrastructure |
| 105 | 2.5.9 | Regression test suite in place and documented | milestone | 0d | 2006-03-13 | 2006-03-13 | 104 | 709d |  |  |  |  | Infrastructure |
| 106 | 2.6 | **Enhanced JPEG Creation** |  | 85d | 2004-02-06 | 2004-06-04 |  | 1157d |  |  | Szalay | 1360h | Infrastructure |
| 107 | 2.6.1 | Develop process and procedure for creating enhanced JPEG images |  | 20d | 2004-02-06 | 2004-03-04 |  | 1157d | 0d |  | Szalay | 160h | Infrastructure |
| 108 | 2.6.2 | Assess impact of enhanced JPEG creation on production operations |  | 5d | 2004-03-05 | 2004-03-11 | 107 | 1157d | 0d |  | Yanny; Boroski; Szalay | 120h | Infrastructure |
| 109 | 2.6.3 | Decision point: enhanced JPEG creation process accepted for production deployment? | milestone | 0d | 2004-03-11 | 2004-03-11 | 108 | 1157d | 0d |  |  |  | Infrastructure |
| 110 | 2.6.4 | If yes, define scope of work for production implementation |  | 10d | 2004-03-12 | 2004-03-25 | 109 | 1157d | 0d |  | Lebedeva; Kumar; Yanny | 240h | Infrastructure |
| 111 | 2.6.5 | If yes, implement enhanced JPEG creation process into production operation |  | 10d | 2004-05-21 | 2004-06-04 | 110, 72 | 1157d | 0d |  | Lebedeva; Kumar | 160h | Infrastructure |
| 112 | 2.6.6 | Enhanced JPEG creation process implemented into production and operational | milestone | 0d | 2004-06-04 | 2004-06-04 | 111 | 1157d |  |  |  |  | Infrastructure |

| ID | WBS | Task | Type | Duration | Start | Finish | Predecessors | Complete | Remaining | Total slack | Free slack | Constraint | Resources | Work | Actual work | Text1 |
| --- | --- | --- | --- | --- | --- | --- | --- | --- | --- | --- | --- | --- | --- | --- | --- | --- |
| 113 | 2.7 | **SQL Server 2005 Migration Testing and Development** |  | 40d | 2006-04-03 | 2006-05-26 |  |  |  | 627.5d |  |  | Szalay | 1280h |  | Infrastructure |
| 114 | 2.7.1 | Implement version of DR4 running on SQL Server 2005 at JHU to work out kinks |  | 40d | 2006-04-03 | 2006-05-26 | 395 |  |  | 627.5d | 0d |  | Szalay; Gray | 640h |  | Infrastructure |
| 115 | 2.7.2 | Make modifications as necessary to sqlLoader and Fits2CSV code to accommodate SQL 2005 |  | 20d | 2006-05-01 | 2006-05-26 | 114SS+20d |  |  | 632.5d | 0d |  | Szalay; Thakar | 320h |  | Infrastructure |
| 116 | 2.7.3 | SQL Server 2005 declared ready for production deployment | milestone | 0d | 2006-05-26 | 2006-05-26 | 115 |  |  | 632.5d | 5d |  |  |  |  | Infrastructure |
| 117 | 2.8 | **SQL Server 2005 Implementation at Fermilab** |  | 27.5d | 2006-05-29 | 2006-07-05 |  |  |  | 627.5d |  |  | Lebedeva | 620h |  | Infrastructure |
| 118 | 2.8.1 | Attend SQL Server 2005 training |  | 5d | 2006-05-29 | 2006-06-02 | 114 |  |  | 627.5d | 0d |  | Lebedeva; Kumar | 80h |  | Infrastructure |
| 119 | 2.8.2 | Install SQL Server 2005 onto DR6 production machines |  | 5d | 2006-06-05 | 2006-06-09 | 118, 116 |  |  | 627.5d | 0d |  | Lebedeva | 40h |  | Infrastructure |
| 120 | 2.8.3 | Install/configure sqlLoader and supporting software for SQL 2005 deployment |  | 2.5d | 2006-06-12 | 2006-06-14 | 119 |  |  | 627.5d | 0d |  | Lebedeva; Kumar | 40h |  | Infrastructure |
| 121 | 2.8.4 | Perform test load to verify SQL 2005 implementation at Fermlab is production-ready |  | 15d | 2006-06-14 | 2006-07-05 | 120 |  |  | 627.5d | 0d |  | Lebedeva; Kumar | 240h |  | Infrastructure |
| 122 | 2.8.5 | SQL 2005 implemented in production loading environment at Fermilab | milestone | 0d | 2006-07-05 | 2006-07-05 | 121 |  |  | 627.5d |  |  |  |  |  | Infrastructure |
| 123 | 3 | **CasJobs** |  | 1d | 2004-02-06 | 2004-02-06 |  |  |  | 1241d |  |  | Li | 32h |  | CasJobs |
| 124 | 3.1 | Develop set of regression tests for CasJobs deployments |  | 1d | 2004-02-06 | 2004-02-06 |  |  |  | 1241d |  |  | Li | 8h |  | CasJobs |
| 125 | 3.2 | Develop improved documentation for hosting and maintaining CasJobs |  | 1d | 2004-02-06 | 2004-02-06 |  |  |  | 1241d |  |  | Li; Thakar | 16h |  | CasJobs |
| 126 | 4 | **Data Release 2** |  | 46d | 2004-02-06 A | 2004-04-09 |  | 46% | 24.8d | 1196d |  |  |  | 264h | 104h | DR2 |
| 127 | 4.1 | Order add'l disk to host DR2 at JHU |  | 5d | 2004-02-06 | 2004-02-12 |  |  |  | 1233d | 0d |  | vandenBerg | 40h |  | DR2 |
| 128 | 4.2 | Install add'l disk for DR2 into JHU cluster |  | 1d | 2004-02-13 | 2004-02-13 | 127 |  |  | 1233d | 0d |  | vandenBerg | 8h |  | DR2 |
| 129 | 4.3 | Burn in new disks at JHU for DR2 hosting |  | 3d | 2004-02-16 | 2004-02-18 | 128 |  |  | 1233d |  |  | vandenBerg | 24h |  | DR2 |
| 130 | 4.4 | Ship sneakernet box from JHU to FNAL |  | 2d | 2004-03-03 A | 2004-03-04 A |  | 100% |  |  |  |  | vandenBerg | 16h | 16h | DR2 |
| 131 | 4.5 | Copy final DR2 target and best onto sneakernet box |  | 2d | 2004-03-05 A | 2004-03-08 A | 130 | 100% |  |  |  |  | Sekhri | 16h | 16h | DR2 |
| 132 | 4.6 | Ship sneakernet box from FNAL to JHU |  | 2d | 2004-03-08 A | 2004-03-09 A | 131 | 100% |  |  |  |  | Sekhri | 16h | 16h | DR2 |
| 133 | 4.7 | Copy final DR2 target and best onto cluster at JHU (FAILED) |  | 4d | 2004-03-09 A | 2004-03-12 A | 132, 129 | 100% |  |  |  |  | vandenBerg | 32h | 32h | DR2 |
| 134 | 4.8 | Final testing of DR2 SkyServer at FNAL prior to public release |  | 1d | 2004-03-12 A | 2004-03-12 A |  | 100% |  |  |  | must start on 2004-03-10 |  |  |  | DR2 |
| 135 | 4.9 | Modify sdss.org web pages to point to Data Release 2 |  | 3d | 2004-03-08 A | 2004-03-10 A |  | 100% |  |  |  | start no earlier than 2004-03-10 |  |  |  | DR2 |
| 136 | 4.10 | Switch sdss.org web pages to point to Data Release 2 |  | 0.1d | 2004-03-15 A | 2004-03-15 A | 135 | 100% |  |  |  | must start on 2004-03-15 |  |  |  | DR2 |
| 137 | 4.11 | DR2 Released to the Public | milestone | 0d | 2004-03-15 A | 2004-03-15 A | 136 | 100% |  |  |  |  |  |  |  | DR2 |

| ID | WBS | Task | Type | Duration | Start | Finish | Predecessors | Complete | Remaining | Total slack | Free slack | Constraint | Resources | Work | Actual work | Text1 |
| --- | --- | --- | --- | --- | --- | --- | --- | --- | --- | --- | --- | --- | --- | --- | --- | --- |
| 138 | 4.12 | **DR2 JHU Mirror Site Setup** |  | 15d | 2004-03-22 A | 2004-04-09 |  | 21% | 11.79d | 1196d |  |  |  | 112h | 24h | DR2 |
| 139 | 4.12.1 | Replace faulty disks in JHU sneakernet box and test |  | 3d | 2004-03-22 | 2004-03-24 |  |  |  | 1203d | 0d | start no earlier than 2004-03-22 | vandenBerg | 24h |  | DR2 |
| 140 | 4.12.2 | Ship sneakernet box from JHU to FNAL |  | 2d | 2004-03-25 | 2004-03-26 | 139 |  |  | 1203d | 0d |  | vandenBerg | 16h |  | DR2 |
| 141 | 4.12.3 | Re-copy final DR2 best and target onto sneakernet box |  | 3d | 2004-03-29 | 2004-03-31 | 140 |  |  | 1203d |  |  | Sekhri | 24h |  | DR2 |
| 142 | 4.12.4 | Re-ship sneakernet box from FNAL to JHU |  | 2d | 2004-04-02 A | 2004-04-05 A | 141 | 100% |  |  |  |  | Sekhri | 16h | 16h | DR2 |
| 143 | 4.12.5 | Copy final DR2 onto servers at JHU |  | 2d | 2004-04-06 A | 2004-04-07 | 142 | 50% | 1d | 1196d | 0d |  | vandenBerg | 16h | 8h | DR2 |
| 144 | 4.12.6 | Connect SkyServer front end to DR2-CAS at JHU |  | 1d | 2004-04-08 | 2004-04-08 | 143 |  |  | 1196d | 0d |  | Thakar | 8h |  | DR2 |
| 145 | 4.12.7 | Test and verify DR2 SkyServer mirror operation at JHU |  | 1d | 2004-04-09 | 2004-04-09 | 144 |  |  | 1196d | 0d |  | Thakar | 8h |  | DR2 |
| 146 | 4.12.8 | DR2 SkyServer mirror at JHU verified for operations | milestone | 0d | 2004-04-09 | 2004-04-09 | 145 |  |  | 1196d |  |  |  |  |  | DR2 |
| 147 | 5 | **Data Release 3** |  | 165d? | 2004-02-06 A | 2004-09-28 |  | 10% | 148.22d? | 1077d |  |  |  | 1584h | 264h | DR3 |
| 148 | 5.1 | **DR3 Runs/Plates List** |  | 41.75d | 2004-02-06 | 2004-04-05 |  |  |  | 1200.25d |  |  |  |  |  | DR3 |
| 149 | 5.1.1 | Generate DR3 Runs/Plates list |  | 3d | 2004-02-06 | 2004-02-10 |  |  |  | 1206.5d | 0d |  |  |  |  | DR3 |
| 150 | 5.1.2 | Post DR3 runs/plate list for review |  | 10d | 2004-02-11 | 2004-02-24 | 149 |  |  | 1206.5d | 25d |  |  |  |  | DR3 |
| 151 | 5.1.3 | Review DR3 Runs/Plates list at testing ph-con |  | 0.25d | 2004-03-31 | 2004-03-31 | 150 |  |  | 1181.5d | 0d | start no earlier than 2004-03-31 |  |  |  | DR3 |
| 152 | 5.1.4 | Final revision of DR3 runs/plates list |  | 3d | 2004-03-31 | 2004-04-05 | 151 |  |  | 1181.5d | 0d |  |  |  |  | DR3 |
| 153 | 5.1.5 | MC approval of DR3 runs/plates list |  | 0.25d | 2004-04-05 | 2004-04-05 | 152 |  |  | 1181.5d | 0d |  |  |  |  | DR3 |
| 154 | 5.1.6 | Post DR3 runs/plate list on web |  | 0.25d | 2004-04-05 | 2004-04-05 | 153 |  |  | 1200.25d |  |  |  |  |  | DR3 |
| 155 | 5.1.7 | DR3 runs/plate list finalized | milestone | 0d | 2004-04-05 | 2004-04-05 | 153 |  |  | 1181.5d | 0d |  |  |  |  | DR3 |
| 156 | 5.2 | **DR3 Imaging Data Load** |  | 35d | 2004-02-06 A | 2004-03-25 |  | 87% | 4.67d | 1183d |  |  |  | 296h | 264h | DR3 |
| 157 | 5.2.1 | Generate imaging chunk CSVs (Best and Target) |  | 8d | 2004-02-06 A | 2004-02-17 A |  | 100% |  |  |  |  | Yanny; Hendry | 128h | 128h | DR3 |
| 158 | 5.2.2 | Create and publish 20 of 21 taskDBs for BESTDR3 |  | 12d | 2004-02-27 A | 2004-03-15 A | 157 | 100% |  |  |  |  | Sekhri | 96h | 96h | DR3 |
| 159 | 5.2.3 | Make backup copy of partial BESTDR3 |  | 1d | 2004-03-16 A | 2004-03-16 A | 158 | 100% |  |  |  |  |  |  |  | DR3 |
| 160 | 5.2.4 | Create and publish taskDBs for TARGR3 |  | 5d | 2004-03-16 A | 2004-03-22 A | 159 | 100% |  |  |  |  | Sekhri | 40h | 40h | DR3 |
| 161 | 5.2.5 | Make backup copy of TARGDR3 |  | 1d | 2004-03-23 A | 2004-03-23 | 160 |  | 1d | -1d | 0d |  | Sekhri | 8h |  | DR3 |
| 162 | 5.2.6 | Create and publish last taskDB for BESTDR3 |  | 2d | 2004-03-23 A | 2004-03-24 | 161 |  | 2d | 1183d | 0d |  | Sekhri | 16h |  | DR3 |
| 163 | 5.2.7 | Make backup copy of final BESTDR3 |  | 1d | 2004-03-25 | 2004-03-25 | 162 |  |  | 1183d | 0d |  | Sekhri | 8h |  | DR3 |
| 164 | 5.2.8 | DR3 imaging data loaded | milestone | 0d | 2004-03-25 | 2004-03-25 | 163 |  |  | 1183d | 4d |  |  |  |  | DR3 |

| ID | WBS | Task | Type | Duration | Start | Finish | Predecessors | Complete | Remaining | Total slack | Free slack | Constraint | Resources | Work | Text1 |
| --- | --- | --- | --- | --- | --- | --- | --- | --- | --- | --- | --- | --- | --- | --- | --- |
| 165 | 5.3 | **DR3 Spectro Data Load** |  | 24d | 2004-03-25 | 2004-04-27 |  |  |  | 1179d |  |  |  | 256h | DR3 |
| 166 | 5.3.1 | Generate CSV files for standard survey plates |  | 5d | 2004-03-25 | 2004-03-31 |  |  |  | 1179d | 0d | start no earlier than 2004-03-25 | Yanny; Hendry | 80h | DR3 |
| 167 | 5.3.2 | Create and publish taskDBs for standard survey plates |  | 3d | 2004-04-01 | 2004-04-05 | 166, 164 |  |  | 1179d | 0d |  | Sekhri | 24h | DR3 |
| 168 | 5.3.3 | Make backup after standard plates are loaded? |  | 1d | 2004-04-06 | 2004-04-06 | 167 |  |  | 1179d | 0d |  | Sekhri | 8h | DR3 |
| 169 | 5.3.4 | Generate CSV files for southern repeat plates |  | 5d | 2004-04-05 | 2004-04-12 | 166, 155 |  |  | 1181.5d | 0d |  | Hendry | 40h | DR3 |
| 170 | 5.3.5 | Create and publish taskDBs for southern repeat plates |  | 3d | 2004-04-16 | 2004-04-20 | 169, 178 |  |  | 1179d | 0d |  | Sekhri | 24h | DR3 |
| 171 | 5.3.6 | Make backup after southern repeat plates are loaded? |  | 1d | 2004-04-21 | 2004-04-21 | 170 |  |  | 1179d | 0d |  | Sekhri | 8h | DR3 |
| 172 | 5.3.7 | Generate CSV files for special program plates |  | 5d | 2004-04-12 | 2004-04-19 | 169 |  |  | 1181.5d | 2.5d |  | Hendry | 40h | DR3 |
| 173 | 5.3.8 | Create and publish taskDBs for special program plates |  | 3d | 2004-04-22 | 2004-04-26 | 172, 171 |  |  | 1179d | 0d |  | Sekhri | 24h | DR3 |
| 174 | 5.3.9 | Make backup after special program plates are loaded? |  | 1d | 2004-04-27 | 2004-04-27 | 173 |  |  | 1179d | 0d |  | Sekhri | 8h | DR3 |
| 175 | 5.4 | **DR3 Tiling Data Load** |  | 7d | 2004-04-07 | 2004-04-15 |  |  |  | 1179d |  |  |  | 56h | DR3 |
| 176 | 5.4.1 | Generate DR3 tiling CSVs |  | 3d | 2004-04-07 | 2004-04-09 | 166, 168 |  |  | 1179d | 0d |  | Hendry | 24h | DR3 |
| 177 | 5.4.2 | Create and publish taskDBs for tiling data |  | 3d | 2004-04-12 | 2004-04-14 | 176 |  |  | 1179d | 0d |  | Sekhri | 24h | DR3 |
| 178 | 5.4.3 | Make backup after tiling data loaded? |  | 1d | 2004-04-15 | 2004-04-15 | 177 |  |  | 1179d | 0d |  | Sekhri | 8h | DR3 |
| 179 | 5.5 | **DR3 Finish Step (Initial collab release)** |  | 20d | 2004-04-28 A | 2004-05-25 |  | 27% | 14.55d | 1164d |  |  |  | 152h | DR3 |
| 180 | 5.5.1 | Run finish step on TARGDR3 |  | 5d | 2004-04-28 | 2004-05-04 | 164, 174, 178 |  |  | 1179d |  |  |  |  | DR3 |
| 181 | 5.5.2 | Run finish step on BESTDR3 |  | 6d | 2004-05-05 A | 2004-05-12 A | 164, 174, 178, 180 | 100% |  |  |  |  |  |  | DR3 |
| 182 | 5.5.3 | Make backup copy of DR3CAS_v0.1 onto 007 |  | 2d | 2004-05-13 | 2004-05-14 | 181 |  |  | -4d | 0d |  | Sekhri | 16h | DR3 |
| 183 | 5.5.4 | Run sanity checks on DR3CAS_v0.1 |  | 5d | 2004-05-17 | 2004-05-21 | 182 |  |  | -4d | 0d |  | Thakar; Jester; Testers | 120h | DR3 |
| 184 | 5.5.5 | Copy BESTDR3 to sdsssql008 |  | 1d | 2004-05-24 | 2004-05-24 | 183, 41 |  |  | -4d | 0d |  | Sekhri | 8h | DR3 |
| 185 | 5.5.6 | Copy TARGDR3 to sdsssql008 |  | 1d | 2004-05-25 | 2004-05-25 | 184 |  |  | -4d | 0d |  |  |  | DR3 |
| 186 | 5.5.7 | Copy BESTDR3 to sdsssql009 |  | 1d | 2004-05-20 A | 2004-05-20 | 185 |  | 1d | -1d | 0d |  | Sekhri | 8h | DR3 |
| 187 | 5.5.8 | Copy TARGDR3 to sdsssql009 |  | 1d | 2004-05-20 A | 2004-05-20 | 186 |  | 1d | 1094d | 0d |  |  |  | DR3 |
| 188 | 5.5.9 | DR3CAS_v0.1 released to collaboration (access via 008) | milestone | 0d | 2004-05-20 | 2004-05-20 | 187 |  |  | 1094d | 0d |  |  |  | DR3 |

| ID | WBS | Task | Type | Duration | Start | Finish | Predecessors | Total slack | Free slack | Constraint | Resources | Work | Text1 |
| --- | --- | --- | --- | --- | --- | --- | --- | --- | --- | --- | --- | --- | --- |
| 189 | 5.6 | **DR3 Proprietary Access Period** |  | 60d | 2004-05-21 | 2004-08-16 |  | 1094d |  |  |  |  | DR3 |
| 190 | 5.6.1 | Miniminum collab access to DR3 prior to public release |  | 60d | 2004-05-21 | 2004-08-16 | 188 | 1094d | 0d |  |  |  | DR3 |
| 191 | 5.7 | **DR3-CAS Bug Fixes and Patches** |  | 35d | 2004-05-21 | 2004-07-12 |  | 34d |  |  |  |  | DR3 |
| 192 | 5.7.1 | Placeholder for bug fixes and patches that are required |  | 35d | 2004-05-21 | 2004-07-12 | 188 | 1125d | 43d |  |  |  | DR3 |
| 193 | 5.7.2 | Freeze date for bug fixes on DR3 CAS | milestone | 0d | 2004-07-12 | 2004-07-12 |  | 0d |  | must start on 2004-07-12 |  |  | DR3 |
| 194 | 5.8 | **DR3 JHU Mirror Site Setup** |  | 16d | 2004-07-12 | 2004-08-02 |  | 1117d |  |  |  | 128h | DR3 |
| 195 | 5.8.1 | Ship sneakernet box from JHU to FNAL |  | 2d | 2004-07-12 | 2004-07-13 | 193 | 1117d | 0d |  | vandenBerg | 16h | DR3 |
| 196 | 5.8.2 | Copy final DR3 best and target onto sneakernet box |  | 3d | 2004-07-14 | 2004-07-16 | 195 | 1117d | 0d |  | Sekhri | 24h | DR3 |
| 197 | 5.8.3 | Ship sneakernet box from FNAL to JHU |  | 2d | 2004-07-19 | 2004-07-20 | 196 | 1117d | 0d |  | Sekhri | 16h | DR3 |
| 198 | 5.8.4 | Copy final DR3 onto servers at JHU |  | 3d | 2004-07-21 | 2004-07-23 | 197 | 1117d | 0d |  | vandenBerg | 24h | DR3 |
| 199 | 5.8.5 | Connect SkyServer front end to DR3-CAS at JHU |  | 1d | 2004-07-26 | 2004-07-26 | 198 | 1117d | 0d |  | Thakar | 8h | DR3 |
| 200 | 5.8.6 | Test and verify DR3 SkyServer mirror operation at JHU |  | 5d | 2004-07-27 | 2004-08-02 | 199 | 1117d | 0d |  | Thakar | 40h | DR3 |
| 201 | 5.8.7 | DR3 SkyServer mirror at JHU verified for operations | milestone | 0d | 2004-08-02 | 2004-08-02 | 200 | 1117d |  |  |  |  | DR3 |
| 202 | 5.9 | **DR3 Paper** |  | 51d | 2004-07-19 | 2004-09-28 |  | 1077d |  |  |  | 328h | DR3 |
| 203 | 5.9.1 | Prepare DR3 paper for collab review |  | 30d | 2004-07-19 | 2004-08-27 |  | 1080d | 0d | start no earlier than 2004-07-19 | Strauss | 240h | DR3 |
| 204 | 5.9.2 | Revise DR3 paper per feedback |  | 10d | 2004-08-30 | 2004-09-13 | 203 | 1087d | 10d |  | Strauss | 80h | DR3 |
| 205 | 5.9.3 | Submit DR3 paper to ApJ |  | 1d | 2004-09-28 | 2004-09-28 | 8, 204 | 1077d |  |  | Strauss | 8h | DR3 |
| 206 | 5.10 | **DR3 Documentation** |  | 27d | 2004-08-17 | 2004-09-23 |  | 1080d |  |  |  | 264h | DR3 |
| 207 | 5.10.1 | Update documentation pages to reflect DR3 changes |  | 20d | 2004-08-23 | 2004-09-20 | 203FS-5d | 1080d | 0d |  | Jester | 160h | DR3 |
| 208 | 5.10.2 | Update DR3 caveats page |  | 10d | 2004-08-17 | 2004-08-30 | 190 | 1094d | 14d |  | Jester | 80h | DR3 |
| 209 | 5.10.3 | Sanity checks of DR3 documentation pages |  | 2d | 2004-09-21 | 2004-09-22 | 208, 207 | 1080d | 0d |  | Strauss | 16h | DR3 |
| 210 | 5.10.4 | Final changes to DR3 documentation pages |  | 1d | 2004-09-23 | 2004-09-23 | 209 | 1080d |  |  | Jester | 8h | DR3 |
| 211 | 5.11 | **DR3 Web Pages** |  | 13d | 2004-09-07 | 2004-09-23 |  | 1080d |  |  |  | 104h | DR3 |
| 212 | 5.11.1 | Generate DR3 web pages |  | 10d | 2004-09-07 | 2004-09-20 |  | 1080d | 0d | start no earlier than 2004-09-07 | Jester | 80h | DR3 |
| 213 | 5.11.2 | Test DR3 web pages |  | 3d | 2004-09-21 | 2004-09-23 | 212 | 1080d |  |  | Strauss | 24h | DR3 |

| ID | WBS | Task | Type | Duration | Start | Finish | Predecessors | Complete | Remaining | Total slack | Free slack | Constraint | Resources | Work | Actual work | Text1 |
| --- | --- | --- | --- | --- | --- | --- | --- | --- | --- | --- | --- | --- | --- | --- | --- | --- |
| 214 | 5.12 | **DR3 Public Version Preparations** |  | 11d | 2004-09-13 | 2004-09-27 |  |  |  | 1078d |  |  |  |  |  | DR3 |
| 215 | 5.12.1 | Attach SkyServer to DR3-CAS on 008 |  | 2d | 2004-09-13 | 2004-09-14 | 192 |  |  | 1082d | 0d | start no earlier than 2004-09-13 |  |  |  | DR3 |
| 216 | 5.12.2 | Sanity tests on DR3 SkyServer |  | 5d | 2004-09-15 | 2004-09-21 | 215 |  |  | 1082d |  |  |  |  |  | DR3 |
| 217 | 5.12.3 | Update sdss.org pages for DR3 |  | 5d | 2004-09-13 | 2004-09-17 |  |  |  | 1083d | 0d | start no earlier than 2004-09-13 |  |  |  | DR3 |
| 218 | 5.12.4 | Test modified web pages |  | 1d | 2004-09-20 | 2004-09-20 | 217 |  |  | 1083d | 5d |  |  |  |  | DR3 |
| 219 | 5.12.5 | DR3 ready for public release | milestone | 0d | 2004-09-27 | 2004-09-27 | 8, 218 |  |  | 1078d |  |  |  |  |  | DR3 |
| 220 | 5.13 | Generate ssAtlas packages for DR3 |  | 1d? | 2004-02-06 | 2004-02-06 |  |  |  | 1241d |  |  |  |  |  | DR3 |
| 221 | 6 | **Data Release 4** |  | 223.25d? | 2004-02-06 A | 2004-12-22 |  | 10% | 201.76d? | 1018.75d |  |  |  | 2136h | 549.6h | DR4 |
| 222 | 6.1 | **DR4 Data Model** |  | 10d? | 2004-02-06 | 2004-02-19 |  |  |  | 1232d |  |  |  | 312h |  | DR4 |
| 223 | 6.1.1 | **DR4 Data Model Change Requests** |  | 10d | 2004-02-06 | 2004-02-19 |  |  |  | 1232d |  |  |  | 240h |  | DR4 |
| 224 | 6.1.1.1 | **Solicit proposals/justifications for DR4 data model changes** |  | 10d | 2004-02-06 | 2004-02-19 |  |  |  | 1232d |  |  | Boroski | 80h |  | DR4 |
| 225 | 6.1.1.1.1 | Multiple reductions |  | 10d | 2004-02-06 | 2004-02-19 |  |  |  | 1232d |  |  |  |  |  | DR4 |
| 226 | 6.1.1.1.2 | Southern survey plates |  | 10d | 2004-02-06 | 2004-02-19 |  |  |  | 1232d |  |  |  |  |  | DR4 |
| 227 | 6.1.1.1.3 | Non-survey plates (photo-z, reddening, etc) |  | 10d | 2004-02-06 | 2004-02-19 |  |  |  | 1232d |  |  |  |  |  | DR4 |
| 228 | 6.1.1.1.4 | Reddening correction |  | 10d | 2004-02-06 | 2004-02-19 |  |  |  | 1232d |  |  |  |  |  | DR4 |
| 229 | 6.1.1.1.5 | Moments and polynomials for spectrophotometry algorithm |  | 10d | 2004-02-06 | 2004-02-19 |  |  |  | 1232d |  |  |  |  |  | DR4 |
| 230 | 6.1.1.1.6 | Changes due to telluric correction code changes |  | 10d | 2004-02-06 | 2004-02-19 |  |  |  | 1232d |  |  |  |  |  | DR4 |
| 231 | 6.1.1.2 | Solicit DR4 CAS data model change requests |  | 10d | 2004-02-06 | 2004-02-19 |  |  |  | 1232d |  |  | Boroski | 80h |  | DR4 |
| 232 | 6.1.1.3 | Solicit DR4 SkyServer data model changes |  | 10d | 2004-02-06 | 2004-02-19 |  |  |  | 1232d |  |  | Boroski | 80h |  | DR4 |
| 233 | 6.1.2 | **DR4 Data Model Review** |  | 10d? | 2004-02-06 | 2004-02-19 |  |  |  | 1232d |  |  |  | 72h |  | DR4 |
| 234 | 6.1.2.1 | Schedule DR4 data model phone-con |  | 1d | 2004-02-06 | 2004-02-06 |  |  |  | 1232d | 0d |  | Boroski | 8h |  | DR4 |
| 235 | 6.1.2.2 | Prepare summary of DR4 data model change requests |  | 5d | 2004-02-09 | 2004-02-13 | 234 |  |  | 1232d | 0d |  | Boroski | 40h |  | DR4 |
| 236 | 6.1.2.3 | Post summary of DR4 data model change requests |  | 1d | 2004-02-16 | 2004-02-16 | 235 |  |  | 1232d | 0d |  | Boroski | 8h |  | DR4 |
| 237 | 6.1.2.4 | DR4 Data Model Phone-con |  | 1d | 2004-02-17 | 2004-02-17 | 236 |  |  | 1232d | 0d |  |  |  |  | DR4 |
| 238 | 6.1.2.5 | Write & post summary of approved DR4 data model changes |  | 2d | 2004-02-18 | 2004-02-19 | 237 |  |  | 1232d | 0d |  | Boroski | 16h |  | DR4 |
| 239 | 6.1.2.6 | Include imaging QA plots in data release (PR5859)? |  | 1d? | 2004-02-06 | 2004-02-06 |  |  |  | 1241d |  |  |  |  |  | DR4 |
| 240 | 6.1.2.7 | DR4 Data Model Defined | milestone | 0d | 2004-02-19 | 2004-02-19 | 238 |  |  | 1232d |  |  |  |  |  | DR4 |

| ID | WBS | Task | Type | Duration | Start | Finish | Predecessors | Complete | Remaining | Total slack | Free slack | Constraint | Text1 |
| --- | --- | --- | --- | --- | --- | --- | --- | --- | --- | --- | --- | --- | --- |
| 241 | 6.2 | **DR4 CAS Development** |  | 20d? | 2004-02-06 | 2004-03-04 |  |  |  | 1222d |  |  | DR4 |
| 242 | 6.2.1 | Placeholder for DR4 CAS work (pending DM changes) |  | 20d | 2004-02-06 | 2004-03-04 |  |  |  | 1222d |  |  | DR4 |
| 243 | 6.2.2 | Test DR4 sqlLoader at JHU to validate DM changes |  | 5d | 2004-02-06 | 2004-02-12 |  |  |  | 1237d |  |  | DR4 |
| 244 | 6.2.3 | Document changes to DR4 sqlLoader |  | 5d | 2004-02-06 | 2004-02-12 |  |  |  | 1237d |  |  | DR4 |
| 245 | 6.2.4 | Load and publich DR4 test load at JHU |  | 1d? | 2004-02-06 | 2004-02-06 |  |  |  | 1241d |  |  | DR4 |
| 246 | 6.2.5 | Validate DR4 test load at JHU |  | 1d? | 2004-02-06 | 2004-02-06 |  |  |  | 1241d |  |  | DR4 |
| 247 | 6.2.6 | Update CAS loading document with DR4 changes |  | 1d? | 2004-02-06 | 2004-02-06 |  |  |  | 1241d |  |  | DR4 |
| 248 | 6.2.7 | Check DR4 CAS into CVS at Fermilab and tag |  | 1d? | 2004-02-06 | 2004-02-06 |  |  |  | 1241d |  |  | DR4 |
| 249 | 6.2.8 | DR4 CAS development complete | milestone | 0d | 2004-02-06 | 2004-02-06 |  |  |  | 1242d |  |  | DR4 |
| 250 | 6.3 | **DR4 SkyServer Development** |  | 20d | 2004-02-06 | 2004-03-04 |  |  |  | 1222d |  |  | DR4 |
| 251 | 6.3.1 | Placeholder for DR4 SkyServer work (pending DM changes) |  | 20d | 2004-02-06 | 2004-03-04 |  |  |  | 1222d |  |  | DR4 |
| 252 | 6.4 | **DR4 Runs List** |  | 41.75d | 2004-02-06 | 2004-04-05 |  |  |  | 4.5d |  |  | DR4 |
| 253 | 6.4.1 | Generate DR4 runs list |  | 3d | 2004-02-06 | 2004-02-10 |  |  |  | 4.5d | 0d |  | DR4 |
| 254 | 6.4.2 | Post DR4 runs list for review |  | 10d | 2004-02-11 | 2004-02-24 | 253 |  |  | 4.5d |  |  | DR4 |
| 255 | 6.4.3 | Review DR4 runs list at testing ph-con |  | 0.25d | 2004-03-31 | 2004-03-31 | 254 |  |  | -20.5d | 0d | start no earlier than 2004-03-31 | DR4 |
| 256 | 6.4.4 | Final revision of DR4 runs list |  | 3d | 2004-03-31 | 2004-04-05 | 255 |  |  | -20.5d | 0d |  | DR4 |
| 257 | 6.4.5 | MC approval of DR4 runs list |  | 0.25d | 2004-04-05 | 2004-04-05 | 256 |  |  | -20.5d | 0d |  | DR4 |
| 258 | 6.4.6 | Post approved DR4 runs list on web |  | 0.25d | 2004-04-05 | 2004-04-05 | 257 |  |  | 1200.25d |  |  | DR4 |
| 259 | 6.4.7 | DR4 runs list finalized | milestone | 0d | 2004-04-05 | 2004-04-05 | 257 |  |  | -20.5d | 0d |  | DR4 |
| 260 | 6.5 | **DR4 Plates List** |  | 7.5d | 2004-09-16 A | 2004-09-27 |  | 24% | 5.74d | 1078.5d |  |  | DR4 |
| 261 | 6.5.1 | Generate DR4 plate list |  | 1d | 2004-09-16 A | 2004-09-16 A |  | 100% |  |  |  |  | DR4 |
| 262 | 6.5.2 | Post DR4 plate list for review |  | 1d | 2004-09-16 A | 2004-09-16 A | 261 | 100% |  |  |  |  | DR4 |
| 263 | 6.5.3 | Review DR4 plate list |  | 4d | 2004-09-17 | 2004-09-22 | 262 |  |  | -149.25d | 0d | start no earlier than 2004-03-31 | DR4 |
| 264 | 6.5.4 | Final revision of DR4 plate list |  | 2d | 2004-09-23 | 2004-09-24 | 263 |  |  | -149.25d | 0d |  | DR4 |
| 265 | 6.5.5 | MC approval of DR4 plate list |  | 0.25d | 2004-09-27 | 2004-09-27 | 264 |  |  | -149.25d | 0d |  | DR4 |
| 266 | 6.5.6 | Post approved DR4 plate list on web |  | 0.25d | 2004-09-27 | 2004-09-27 | 265 |  |  | 1078.5d |  |  | DR4 |
| 267 | 6.5.7 | DR4 plate list finalized | milestone | 0d | 2004-09-27 | 2004-09-27 | 265 |  |  | -149.25d | 0d |  | DR4 |

| ID | WBS | Task | Type | Duration | Start | Finish | Predecessors | Complete | Remaining | Total slack | Free slack | Constraint | Resources | Work | Actual work | Text1 |
| --- | --- | --- | --- | --- | --- | --- | --- | --- | --- | --- | --- | --- | --- | --- | --- | --- |
| 268 | 6.6 | **DR4 Imaging Data Load** |  | 137.87d | 2004-03-23 A | 2004-10-05 |  | 90% | 13.79d | 0d |  |  |  | 584h | 549.6h | DR4 |
| 269 | 6.6.1 | Generate imaging chunk CSVs (Best and Target) |  | 21d | 2004-08-13 A | 2004-09-13 A |  | 100% |  |  |  |  | Yanny; Hendry | 336h | 336h | DR4 |
| 270 | 6.6.2 | Create and publish 26 taskDBs for BESTDR4 |  | 15d | 2004-08-26 A | 2004-09-20 | 269 | 89% | 1.65d | -143.32d | 0d |  | Sekhri | 120h | 106.8h | DR4 |
| 271 | 6.6.3 | Make backup copy of partial BESTDR4 |  | 1d | 2004-09-20 | 2004-09-21 | 270 |  |  | -143.32d | 0d |  |  |  |  | DR4 |
| 272 | 6.6.4 | Create and publish 26 taskDBs for TARGDR4 |  | 15d | 2004-08-26 A | 2004-10-05 | 271 | 89% | 1.65d | -137.87d | 0d |  | Sekhri | 120h | 106.8h | DR4 |
| 273 | 6.6.5 | Make backup copy of TARGDR4 |  | 1d | 2004-03-23 A | 2004-03-23 | 272 |  | 1d | -17d | 0d |  | Sekhri | 8h |  | DR4 |
| 274 | 6.6.6 | DR4 imaging data loaded | milestone | 0d | 2004-09-21 | 2004-09-21 | 273, 271 |  |  | -143.32d | 0d |  |  |  |  | DR4 |
| 275 | 6.7 | **DR4 Spectro Data Load** |  | 21d | 2004-09-27 | 2004-10-26 |  |  |  | -149.25d | 0d |  |  | 208h |  | DR4 |
| 276 | 6.7.1 | Generate CSV files for standard survey plates |  | 2d | 2004-09-27 | 2004-09-29 | 267 |  |  | -149.25d | 0d | start no earlier than 2004-03-25 | Yanny; Hendry | 32h |  | DR4 |
| 277 | 6.7.2 | Create and publish taskDBs for standard survey plates |  | 3d | 2004-09-29 | 2004-10-04 | 274, 276 |  |  | -149.25d | 0d |  | Sekhri | 24h |  | DR4 |
| 278 | 6.7.3 | Make backup after standard plates are loaded? |  | 1d | 2004-10-04 | 2004-10-05 | 277 |  |  | -149.25d | 0d |  | Sekhri | 8h |  | DR4 |
| 279 | 6.7.4 | Generate CSV files for southern repeat plates |  | 5d | 2004-09-29 | 2004-10-06 | 259, 276 |  |  | -144.25d | 0d |  | Hendry | 40h |  | DR4 |
| 280 | 6.7.5 | Create and publish taskDBs for southern repeat plates |  | 3d | 2004-10-14 | 2004-10-19 | 279, 288 |  |  | -149.25d | 0d |  | Sekhri | 24h |  | DR4 |
| 281 | 6.7.6 | Make backup after southern repeat plates are loaded? |  | 1d | 2004-10-19 | 2004-10-20 | 280 |  |  | -149.25d | 0d |  | Sekhri | 8h |  | DR4 |
| 282 | 6.7.7 | Generate CSV files for special program plates |  | 5d | 2004-10-06 | 2004-10-13 | 279 |  |  | -144.25d | 0d |  | Hendry | 40h |  | DR4 |
| 283 | 6.7.8 | Create and publish taskDBs for special program plates |  | 3d | 2004-10-20 | 2004-10-25 | 281, 282 |  |  | -149.25d | 0d |  | Sekhri | 24h |  | DR4 |
| 284 | 6.7.9 | Make backup after special program plates are loaded? |  | 1d | 2004-10-25 | 2004-10-26 | 283 |  |  | -149.25d | 0d |  | Sekhri | 8h |  | DR4 |
| 285 | 6.8 | **DR4 Tiling Data Load** |  | 7d | 2004-10-05 | 2004-10-14 |  |  |  | -149.25d | 0d |  |  | 56h |  | DR4 |
| 286 | 6.8.1 | Generate DR4 tiling CSVs |  | 3d | 2004-10-05 | 2004-10-08 | 276, 278 |  |  | -149.25d | 0d |  | Hendry | 24h |  | DR4 |
| 287 | 6.8.2 | Create and publish taskDBs for tiling data |  | 3d | 2004-10-08 | 2004-10-13 | 286 |  |  | -149.25d | 0d |  | Sekhri | 24h |  | DR4 |
| 288 | 6.8.3 | Make backup after tiling data loaded? |  | 1d | 2004-10-13 | 2004-10-14 | 287 |  |  | -149.25d | 0d |  | Sekhri | 8h |  | DR4 |
| 289 | 6.9 | **DR4 Finish Step (Initial collab release)** |  | 149.25d | 2004-05-20 A | 2004-12-22 |  |  | 149.25d | 945.75d |  |  |  | 152h |  | DR4 |
| 290 | 6.9.1 | Run finish step on TARGDR4 |  | 15d | 2004-10-26 | 2004-11-16 | 274, 284, 288 |  |  | -149.25d | 0d |  |  |  |  | DR4 |
| 291 | 6.9.2 | Run finish step on BESTDR4 |  | 15d | 2004-11-16 | 2004-12-09 | 274, 284, 288, 290 |  |  | -149.25d | 0d |  |  |  |  | DR4 |
| 292 | 6.9.3 | Make backup copy of DR4CAS_v0.1 onto 007 |  | 2d | 2004-12-09 | 2004-12-13 | 291 |  |  | -149.25d | 0d |  | Sekhri | 16h |  | DR4 |
| 293 | 6.9.4 | Run sanity checks on DR4CAS_v0.1 |  | 5d | 2004-12-13 | 2004-12-20 | 292 |  |  | -149.25d | 0d |  | Thakar; Jester; Testers | 120h |  | DR4 |
| 294 | 6.9.5 | Copy BESTDR4 to sdsssql008 |  | 1d | 2004-12-20 | 2004-12-21 | 293 |  |  | -149.25d | 0d |  | Sekhri | 8h |  | DR4 |
| 295 | 6.9.6 | Copy TARGDR4 to sdsssql008 |  | 1d | 2004-12-21 | 2004-12-22 | 294 |  |  | -149.25d | 0d |  |  |  |  | DR4 |
| 296 | 6.9.7 | Copy BESTDR4 to sdsssql009 |  | 1d | 2004-05-20 A | 2004-05-20 | 295 |  | 1d | -1d | 0d |  | Sekhri | 8h |  | DR4 |
| 297 | 6.9.8 | Copy TARGDR4 to sdsssql009 |  | 1d | 2004-05-20 A | 2004-05-20 | 296 |  | 1d | 1094d | 0d |  |  |  |  | DR4 |
| 298 | 6.9.9 | DR4CAS_v0.1 released to collaboration (access via 008) | milestone | 0d | 2004-05-20 | 2004-05-20 | 297 |  |  | 1094d | 0d |  |  |  |  | DR4 |

| ID | WBS | Task | Type | Duration | Start | Finish | Predecessors | Total slack | Free slack | Constraint | Resources | Work | Text1 |
| --- | --- | --- | --- | --- | --- | --- | --- | --- | --- | --- | --- | --- | --- |
| 299 | 6.10 | **DR4 Proprietary Access Period** |  | 60d | 2004-05-21 | 2004-08-16 |  | 1094d |  |  |  |  | DR4 |
| 300 | 6.10.1 | Miniminum collab access to DR4 prior to public release |  | 60d | 2004-05-21 | 2004-08-16 | 298 | 1094d | 0d |  |  |  | DR4 |
| 301 | 6.11 | **DR4-CAS Bug Fixes and Patches** |  | 35d | 2004-05-21 | 2004-07-12 |  | 34d |  |  |  |  | DR4 |
| 302 | 6.11.1 | Placeholder for bug fixes and patches that are required |  | 35d | 2004-05-21 | 2004-07-12 | 298 | 1125d | 43d |  |  |  | DR4 |
| 303 | 6.11.2 | Freeze date for bug fixes on DR4 CAS | milestone | 0d | 2004-07-12 | 2004-07-12 |  | 0d |  | must start on 2004-07-12 |  |  | DR4 |
| 304 | 6.12 | **DR4 JHU Mirror Site Setup** |  | 16d | 2004-07-12 | 2004-08-02 |  | 1117d |  |  |  | 128h | DR4 |
| 305 | 6.12.1 | Ship sneakernet box from JHU to FNAL |  | 2d | 2004-07-12 | 2004-07-13 | 303 | 1117d | 0d |  | vandenBerg | 16h | DR4 |
| 306 | 6.12.2 | Copy final DR4 best and target onto sneakernet box |  | 3d | 2004-07-14 | 2004-07-16 | 305 | 1117d | 0d |  | Sekhri | 24h | DR4 |
| 307 | 6.12.3 | Ship sneakernet box from FNAL to JHU |  | 2d | 2004-07-19 | 2004-07-20 | 306 | 1117d | 0d |  | Sekhri | 16h | DR4 |
| 308 | 6.12.4 | Copy final DR4 onto servers at JHU |  | 3d | 2004-07-21 | 2004-07-23 | 307 | 1117d | 0d |  | vandenBerg | 24h | DR4 |
| 309 | 6.12.5 | Connect SkyServer front end to DR4-CAS at JHU |  | 1d | 2004-07-26 | 2004-07-26 | 308 | 1117d | 0d |  | Thakar | 8h | DR4 |
| 310 | 6.12.6 | Test and verify DR4 SkyServer mirror operation at JHU |  | 5d | 2004-07-27 | 2004-08-02 | 309 | 1117d | 0d |  | Thakar | 40h | DR4 |
| 311 | 6.12.7 | DR4 SkyServer mirror at JHU verified for operations | milestone | 0d | 2004-08-02 | 2004-08-02 | 310 | 1117d |  |  |  |  | DR4 |
| 312 | 6.13 | **DR4 Paper** |  | 41d | 2004-07-19 | 2004-09-14 |  | 1080d |  |  |  | 328h | DR4 |
| 313 | 6.13.1 | Prepare DR4 paper for collab review |  | 30d | 2004-07-19 | 2004-08-27 |  | 1080d | 0d | start no earlier than 2004-07-19 | Strauss | 240h | DR4 |
| 314 | 6.13.2 | Revise DR4 paper per feedback |  | 10d | 2004-08-30 | 2004-09-13 | 313 | 1087d | 0d |  | Strauss | 80h | DR4 |
| 315 | 6.13.3 | Submit DR4 paper to ApJ |  | 1d | 2004-09-14 | 2004-09-14 | 314 | 1087d |  |  | Strauss | 8h | DR4 |
| 316 | 6.14 | **DR4 Documentation** |  | 27d | 2004-08-17 | 2004-09-23 |  | 1080d |  |  |  | 264h | DR4 |
| 317 | 6.14.1 | Update documentation pages to reflect DR4 changes |  | 20d | 2004-08-23 | 2004-09-20 | 313FS-5d | 1080d | 0d |  | Jester | 160h | DR4 |
| 318 | 6.14.2 | Update DR4 caveats page |  | 10d | 2004-08-17 | 2004-08-30 | 300 | 1094d | 14d |  | Jester | 80h | DR4 |
| 319 | 6.14.3 | Sanity checks of DR4 documentation pages |  | 2d | 2004-09-21 | 2004-09-22 | 317, 318 | 1080d | 0d |  | Strauss | 16h | DR4 |
| 320 | 6.14.4 | Final changes to DR4 documentation pages |  | 1d | 2004-09-23 | 2004-09-23 | 319 | 1080d |  |  | Jester | 8h | DR4 |
| 321 | 6.15 | **DR4 Web Pages** |  | 13d | 2004-09-07 | 2004-09-23 |  | 1080d |  |  |  | 104h | DR4 |
| 322 | 6.15.1 | Generate DR4 web pages |  | 10d | 2004-09-07 | 2004-09-20 |  | 1080d | 0d | start no earlier than 2004-09-07 | Jester | 80h | DR4 |
| 323 | 6.15.2 | Test DR4 web pages |  | 3d | 2004-09-21 | 2004-09-23 | 322 | 1080d |  |  | Strauss | 24h | DR4 |

| ID | WBS | Task | Type | Duration | Start | Finish | Predecessors | Complete | Remaining | Total slack | Free slack | Constraint | Resources | Work | Actual work | Text1 |
| --- | --- | --- | --- | --- | --- | --- | --- | --- | --- | --- | --- | --- | --- | --- | --- | --- |
| 324 | 6.16 | **DR4 Public Version Preparations** |  | 7d | 2004-09-13 | 2004-09-21 |  |  |  | 1082d |  |  |  |  |  | DR4 |
| 325 | 6.16.1 | Attach SkyServer to DR4-CAS on 008 |  | 2d | 2004-09-13 | 2004-09-14 | 302 |  |  | 1082d | 0d | start no earlier than 2004-09-13 |  |  |  | DR4 |
| 326 | 6.16.2 | Sanity tests on DR4 SkyServer |  | 5d | 2004-09-15 | 2004-09-21 | 325 |  |  | 1082d |  |  |  |  |  | DR4 |
| 327 | 6.16.3 | Update sdss.org pages for DR4 |  | 5d | 2004-09-13 | 2004-09-17 |  |  |  | 1083d | 0d | start no earlier than 2004-09-13 |  |  |  | DR4 |
| 328 | 6.16.4 | Test modified web pages |  | 1d | 2004-09-20 | 2004-09-20 | 327 |  |  | 1083d | 0d |  |  |  |  | DR4 |
| 329 | 6.16.5 | DR4 ready for public release | milestone | 0d | 2004-09-20 | 2004-09-20 | 328 |  |  | 1083d |  |  |  |  |  | DR4 |
| 330 | 6.17 | **DR4 ssAtlas Package** |  | 10d | 2004-02-06 | 2004-02-19 |  |  |  | 1232d |  |  |  |  |  | DR4 |
| 331 | 6.17.1 | Generate ssAtlas packages for DR4 |  | 10d | 2004-02-06 | 2004-02-19 |  |  |  | 1232d |  |  |  |  |  | DR4 |
| 332 | 7 | **Data Release 5** |  | 173d | 2005-10-19 A | 2006-06-26 |  | 19% | 139.61d | 635d |  |  | Boroski | 3952h | 568h | DR5 |
| 333 | 7.1 | Initial DR5 Collab Release | milestone | 0d | 2005-10-19 A | 2005-10-19 A |  | 100% |  |  |  |  |  |  |  | DR5 |
| 334 | 7.2 | **Second DR5 Collab Release (DR5_v2)** |  | 54d | 2005-11-10 A | 2006-01-31 |  | 42% | 31.15d | 738d |  |  | Boroski | 1536h | 568h | DR5 |
| 335 | 7.2.1 | JHU test of modifiied DR5 finish step (region/wedge/sector code) |  | 7d | 2005-11-10 A | 2005-11-18 A |  | 100% |  |  |  |  | Thakar | 56h | 56h | DR5 |
| 336 | 7.2.2 | Hand-off modified DR5 finish step to production | milestone | 0d | 2005-11-18 A | 2005-11-18 A | 335 | 100% |  |  |  |  |  |  |  | DR5 |
| 337 | 7.2.3 | Run modified finish step on BestDR5 |  | 8d | 2005-11-27 A | 2005-12-07 A | 336 | 100% |  |  |  |  | Lebedeva | 64h | 64h | DR5 |
| 338 | 7.2.4 | Make copies of modified BestDR5 |  | 2d | 2005-12-16 A | 2005-12-19 A | 337 | 100% |  |  |  |  | Lebedeva | 16h | 16h | DR5 |
| 339 | 7.2.5 | Run sanity tests (test queries) on modified BestDR5 |  | 20d | 2005-12-08 A | 2006-01-10 | 338 | 80% | 4d | 751d | 13d |  | Lebedeva; Kumar; Thakar | 480h | 384h | DR5 |
| 340 | 7.2.6 | Update documentation to reflect changes to DR5_v2 |  | 20d | 2005-12-27 | 2006-01-26 | 336 |  |  | 740d | 2d | start no earlier than 2005-12-26 | Szalay; Thakar | 320h |  | DR5 |
| 341 | 7.2.7 | Add runQA to BestDR5 |  | 10d | 2006-01-17 | 2006-01-30 |  |  |  | 738d | 0d | start no earlier than 2006-01-16 | Yanny | 80h |  | DR5 |
| 342 | 7.2.8 | Add runQA to TargDR5 |  | 10d | 2006-01-17 | 2006-01-30 | 341SS |  |  | 739d |  |  | Yanny | 80h |  | DR5 |
| 343 | 7.2.9 | Re-point web servers to modified DR5-CAS |  | 1d | 2006-01-31 | 2006-01-31 | 339, 340, 341 |  |  | 738d | 0d |  | Lebedeva | 8h |  | DR5 |
| 344 | 7.2.10 | DR5_v2 Collab Release | milestone | 0d | 2006-01-31 | 2006-01-31 | 343, 340 |  |  | 738d |  |  |  |  |  | DR5 |
| 345 | 7.3 | **DR5 Mirror Site at JHU** |  | 63d | 2006-01-03 | 2006-03-31 |  |  |  | 695d |  |  | Szalay | 1032h |  | DR5 |
| 346 | 7.3.1 | Procure new file server for mirroring DR5 at JHU |  | 20d | 2006-01-03 | 2006-01-31 |  |  |  | 695d | 0d | start no earlier than 2006-01-03 | vandenBerg | 160h |  | DR5 |
| 347 | 7.3.2 | Install and configure JHU file server for DR5 mirror site |  | 10d | 2006-02-01 | 2006-02-14 | 346 |  |  | 695d | 0d |  | vandenBerg | 80h |  | DR5 |
| 348 | 7.3.3 | Prepare BestDR5 files for transfer to JHU |  | 5d | 2006-02-15 | 2006-02-21 | 347 |  |  | 695d | 0d |  | Lebedeva | 40h |  | DR5 |
| 349 | 7.3.4 | Copy BestDR5 to JHU |  | 5d | 2006-02-22 | 2006-02-28 | 348 |  |  | 695d | 0d |  | vandenBerg | 40h |  | DR5 |
| 350 | 7.3.5 | Install and test BestDR5 at JHU |  | 5d | 2006-03-01 | 2006-03-07 | 349 |  |  | 695d | 0d |  | vandenBerg | 40h |  | DR5 |
| 351 | 7.3.6 | Prepare TargDR5 files for transfer to JHU |  | 5d | 2006-03-08 | 2006-03-14 | 350 |  |  | 695d | 0d |  | Lebedeva | 40h |  | DR5 |
| 352 | 7.3.7 | Copy TargDR5 to JHU |  | 5d | 2006-03-15 | 2006-03-21 | 351 |  |  | 695d | 0d |  | vandenBerg | 40h |  | DR5 |
| 353 | 7.3.8 | Install and test TargDR5 at JHU |  | 5d | 2006-03-22 | 2006-03-28 | 352 |  |  | 695d | 0d |  | vandenBerg | 40h |  | DR5 |
| 354 | 7.3.9 | Test switchover from FNAL to JHU |  | 1d | 2006-03-29 | 2006-03-29 | 353 |  |  | 695d | 0d |  | vandenBerg; Lilianstrom | 16h |  | DR5 |
| 355 | 7.3.10 | Re-point web servers to DR5 at FNAL |  | 2d | 2006-03-30 | 2006-03-31 | 354 |  |  | 695d | 0d |  | vandenBerg; Lilianstrom | 32h |  | DR5 |
| 356 | 7.3.11 | DR5 mirror site verified to be operational | milestone | 0d | 2006-03-31 | 2006-03-31 | 355 |  |  | 695d |  |  |  |  |  | DR5 |

| ID | WBS | Task | Type | Duration | Start | Finish | Predecessors | Total slack | Free slack | Constraint | Resources | Work | Text1 |
| --- | --- | --- | --- | --- | --- | --- | --- | --- | --- | --- | --- | --- | --- |
| 357 | 7.4 | **Loading Additional Data into DR5? (Placeholder)** |  | 15d | 2005-12-12 | 2006-01-05 |  | 755d |  |  |  |  | DR5 |
| 358 | 7.4.1 | Special scans like M31, Perseus? |  | 15d | 2005-12-12 | 2006-01-05 |  | 755d | 0d | start no earlier than 2005-12-12 |  |  | DR5 |
| 359 | 7.4.2 | Other plates? |  | 15d | 2005-12-12 | 2006-01-05 | 358SS | 755d |  |  |  |  | DR5 |
| 360 | 7.5 | DR5 released to the public | milestone | 0d | 2006-06-26 | 2006-06-26 |  | 635d |  | start no earlier than 2006-06-26 |  |  | DR5 |
| 361 | 8 | **Data Release 6** |  | 374d | 2006-01-17 | 2007-06-25 |  | 375d |  |  | Boroski | 21616h | DR6 |
| 362 | 8.1 | **DR6 Data Model Changes** |  | 20d | 2006-01-17 | 2006-02-13 |  | 654d |  |  | Boroski | 400h | DR6 |
| 363 | 8.1.1 | Compile list of proposed data model changes for DR6 |  | 10d | 2006-01-17 | 2006-01-30 |  | 654d | 0d | start no earlier than 2006-01-16 | Boroski | 80h | DR6 |
| 364 | 8.1.2 | Vet proposed data model changes at testing phone-con |  | 10d | 2006-01-31 | 2006-02-13 | 363 | 654d | 0d |  | Boroski; Strauss | 160h | DR6 |
| 365 | 8.1.3 | Set of proposed data model changes approved | milestone | 0d | 2006-02-13 | 2006-02-13 | 364 | 654d | 0d |  |  |  | DR6 |
| 366 | 8.2 | **DR6-CAS sqlLoader Upgrade** |  | 50d | 2006-02-14 | 2006-04-24 |  | 654d |  |  | Thakar | 1016h | DR6 |
| 367 | 8.2.1 | Modify sqlLoader to incorporate approved DR6 data model changes |  | 15d | 2006-02-14 | 2006-03-06 | 365 | 654d | 0d |  | Thakar | 120h | DR6 |
| 368 | 8.2.2 | Generate list of runs and plates for DR6 test load |  | 5d | 2006-02-14 | 2006-02-20 | 367SS | 654d | 0d |  | Yanny | 40h | DR6 |
| 369 | 8.2.3 | Generate imaging CSV files for DR6 test load |  | 5d | 2006-02-21 | 2006-02-27 | 368 | 654d | 0d |  | Lebedeva; Kumar | 80h | DR6 |
| 370 | 8.2.4 | Generate plate CSV files for DR6 test load |  | 5d | 2006-02-28 | 2006-03-06 | 369 | 654d | 0d |  | Lebedeva; Kumar | 80h | DR6 |
| 371 | 8.2.5 | Developer BestDR6 test load using DR6 sqlLoader |  | 10d | 2006-03-07 | 2006-03-20 | 367, 370, 369 | 654d | 0d |  | Thakar | 80h | DR6 |
| 372 | 8.2.6 | Developer tests on BestDR6 test load |  | 5d | 2006-03-21 | 2006-03-27 | 371 | 654d | 0d |  | Thakar | 40h | DR6 |
| 373 | 8.2.7 | Testing group evaluation of BestDR6 test load |  | 5d | 2006-03-28 | 2006-04-03 | 372 | 664d | 0d |  | Collab | 40h | DR6 |
| 374 | 8.2.8 | SEGUE team evaluation of BestDR6 test load |  | 5d | 2006-03-28 | 2006-04-03 | 373SS | 664d | 0d |  | Yanny | 40h | DR6 |
| 375 | 8.2.9 | sqlLoader for BestDR6 checked into CVS for production validation |  | 1d | 2006-04-04 | 2006-04-04 | 374 | 664d | 10d |  | Thakar | 8h | DR6 |
| 376 | 8.2.10 | Developer TargDR6 test load using DR6 sqlLoader |  | 10d | 2006-03-28 | 2006-04-10 | 372 | 654d | 0d |  |  |  | DR6 |
| 377 | 8.2.11 | Developer tests on TargDR6 test load |  | 5d | 2006-04-11 | 2006-04-17 | 376 | 654d | 0d |  | Thakar | 40h | DR6 |
| 378 | 8.2.12 | Testing group evaluation of TargDR6 test load |  | 5d | 2006-04-18 | 2006-04-24 | 377 | 679d |  |  | Collab | 40h | DR6 |
| 379 | 8.2.13 | SEGUE team evaluation of BestDR6 test load |  | 5d | 2006-04-11 | 2006-04-17 | 377SS | 654d | 0d |  |  |  | DR6 |
| 380 | 8.2.14 | sqlLoader for TargDR6 checked into CVS for production validation |  | 1d | 2006-04-18 | 2006-04-18 | 379 | 654d | 0d |  | Thakar | 8h | DR6 |
| 381 | 8.2.15 | sqlLoader for DR6 ready for production validation | milestone | 0d | 2006-04-18 | 2006-04-18 | 375, 380 | 654d | 0d |  |  |  | DR6 |

| ID | WBS | Task | Type | Duration | Start | Finish | Predecessors | Total slack | Free slack | Constraint | Resources | Work | Text1 |
| --- | --- | --- | --- | --- | --- | --- | --- | --- | --- | --- | --- | --- | --- |
| 382 | 8.3 | **DR6-CAS slqLoader Validation** |  | 24d | 2006-04-19 | 2006-05-22 |  | 654d |  |  | Lebedeva | 416h | DR6 |
| 383 | 8.3.1 | Check out and install DR6 sqlLoader onto production test machine at FNAL |  | 5d | 2006-04-19 | 2006-04-25 | 381 | 654d | 0d |  | Lebedeva | 40h | DR6 |
| 384 | 8.3.2 | Production BestDR6 test load using DR6 sqlLoader |  | 5d | 2006-04-26 | 2006-05-02 | 383 | 654d | 0d |  | Lebedeva | 40h | DR6 |
| 385 | 8.3.3 | Production verification tests on BestDR6 test load |  | 2d | 2006-05-03 | 2006-05-04 | 384 | 654d | 0d |  | Lebedeva; Yanny | 32h | DR6 |
| 386 | 8.3.4 | DR6 sqlLoader validated for BestDR6 by production group | milestone | 0d | 2006-05-04 | 2006-05-04 | 385 | 654d | 0d |  |  |  | DR6 |
| 387 | 8.3.5 | Production TargDR6 test load using DR6 sqlLoader |  | 5d | 2006-05-05 | 2006-05-11 | 386 | 654d | 0d |  | Lebedeva | 40h | DR6 |
| 388 | 8.3.6 | Production verification tests on TargDR6 test load |  | 5d | 2006-05-12 | 2006-05-18 | 387 | 654d | 0d |  | Lebedeva | 40h | DR6 |
| 389 | 8.3.7 | DR6 sqlLoader validated for TargDR6 loading by production group |  | 2d | 2006-05-19 | 2006-05-22 | 388 | 654d | 0d |  | Lebedeva; Yanny | 32h | DR6 |
| 390 | 8.3.8 | DR6 sqlLoader validated for TargDR6 by production group | milestone | 0d | 2006-05-22 | 2006-05-22 | 389 | 654d | 0d |  |  |  | DR6 |
| 391 | 8.3.9 | sqlLoader declared ready for DR6 production use | milestone | 0d | 2006-05-22 | 2006-05-22 | 386, 390 | 654d | 1d |  |  |  | DR6 |
| 392 | 8.4 | **DR6 DB Partioning Scheme** |  | 40d | 2006-02-06 | 2006-03-31 |  | 627.5d |  |  | Szalay | 1120h | DR6 |
| 393 | 8.4.1 | Develop partioning scheme for DR6-CAS |  | 20d | 2006-02-06 | 2006-03-03 |  | 627.5d | 0d | start no earlier than 2006-02-06 | Szalay; Gray; Lebedeva; Kumar | 640h | DR6 |
| 394 | 8.4.2 | Implement partioning scheme in sqlLoader (need scope defined) |  | 20d | 2006-03-06 | 2006-03-31 | 393 | 627.5d | 0d |  | Thakar | 160h | DR6 |
| 395 | 8.4.3 | Partioning scheme developed for DR6 load | milestone | 0d | 2006-03-31 | 2006-03-31 | 394 | 627.5d | 0d |  |  |  | DR6 |
| 396 | 8.5 | **DR6 Fileserver Procurement** |  | 37d | 2006-03-06 | 2006-04-25 |  | 653d |  |  | Boroski | 672h | DR6 |
| 397 | 8.5.1 | Specify hardware requirements for DR6 fileservers |  | 5d | 2006-03-06 | 2006-03-10 |  | 653d | 0d | start no earlier than 2006-03-06 | Lebedeva | 40h | DR6 |
| 398 | 8.5.2 | Obtain quotes for DR6 fileservers |  | 10d | 2006-03-13 | 2006-03-24 | 397 | 653d | 0d |  | Boroski; Lebedeva | 160h | DR6 |
| 399 | 8.5.3 | Procure DR6 fileservers |  | 20d | 2006-03-27 | 2006-04-21 | 398 | 653d | 0d |  | Buyer | 160h | DR6 |
| 400 | 8.5.4 | Take receipt of DR6 fileservers |  | 2d | 2006-04-24 | 2006-04-25 | 399 | 653d | 0d |  | Lilianstrom | 16h | DR6 |
| 401 | 8.5.5 | DR6 fileserver procurement complete | milestone | 0d | 2006-04-25 | 2006-04-25 | 400 | 678d |  |  |  |  | DR6 |
| 402 | 8.6 | **DR6 Fileserver Configuration** |  | 25d | 2006-04-26 | 2006-05-30 |  | 653d |  |  | Lilianstrom | 616h | DR6 |
| 403 | 8.6.1 | OS-level setup and burn-in of DR6 fileservers |  | 10d | 2006-04-26 | 2006-05-09 | 400 | 653d | 0d |  | Lilianstrom | 80h | DR6 |
| 404 | 8.6.2 | Implement partioning scheme on DR6 fileservers |  | 10d | 2006-04-26 | 2006-05-09 | 403SS | 653d | 0d |  | Lilianstrom | 80h | DR6 |
| 405 | 8.6.3 | Applicaton-level setup and configuration of DR6 fileservers |  | 10d | 2006-05-10 | 2006-05-23 | 404 | 653d | 0d |  | Lebedeva; Kumar | 160h | DR6 |
| 406 | 8.6.4 | Install DR6 sqlLoader on DR6 fileservers |  | 2d | 2006-05-24 | 2006-05-25 | 405, 391 | 653d | 0d |  | Lebedeva; Kumar | 32h | DR6 |
| 407 | 8.6.5 | Copy BestDR5 onto fileserver and rename for BestDR6 load |  | 1d | 2006-05-26 | 2006-05-26 | 406 | 655d |  |  | Lebedeva; Kumar | 16h | DR6 |
| 408 | 8.6.6 | Copy TargDR5 onto fileserver and rename for TargDR6 load |  | 1d | 2006-05-26 | 2006-05-26 | 406 | 653d | 0d |  | Lebedeva; Kumar | 16h | DR6 |
| 409 | 8.6.7 | Perform regression tests to verify that DR6 fileservers are ready for production use |  | 2d | 2006-05-29 | 2006-05-30 | 408 | 653d | 0d |  | Lebedeva; Kumar | 32h | DR6 |
| 410 | 8.6.8 | DR6 fileservers declared ready for production use | milestone | 0d | 2006-05-30 | 2006-05-30 | 409 | 653d |  |  |  |  | DR6 |

| ID | WBS | Task | Type | Duration | Start | Finish | Predecessors | Total slack | Free slack | Constraint | Resources | Work | Text1 |
| --- | --- | --- | --- | --- | --- | --- | --- | --- | --- | --- | --- | --- | --- |
| 411 | 8.7 | **DR6 Runs List** |  | 15d | 2006-07-05 | 2006-07-25 |  | 439d |  |  | Yanny | 280h | DR6 |
| 412 | 8.7.1 | Generate DR6 Legacy runs list |  | 5d | 2006-07-05 | 2006-07-11 |  | 439d | 0d | start no earlier than 2006-07-05 | Kent | 40h | DR6 |
| 413 | 8.7.2 | Generate DR6 SEGUE runs list |  | 5d | 2006-07-05 | 2006-07-11 | 412SS | 439d | 0d |  | Yanny | 40h | DR6 |
| 414 | 8.7.3 | Vet DR6 runs list at testing phone-con |  | 10d | 2006-07-12 | 2006-07-25 | 412, 413 | 439d | 0d |  | Strauss | 80h | DR6 |
| 415 | 8.7.4 | DR6 runs list approved | milestone | 0d | 2006-07-25 | 2006-07-25 | 414 | 439d | 0d |  |  |  | DR6 |
| 416 | 8.8 | **DR6 Plates List** |  | 15d | 2006-07-05 | 2006-07-25 |  | 449d |  |  | Yanny | 280h | DR6 |
| 417 | 8.8.1 | Generate DR6 Legacy plates list |  | 5d | 2006-07-05 | 2006-07-11 |  | 449d | 0d | start no earlier than 2006-07-05 | Kent | 40h | DR6 |
| 418 | 8.8.2 | Generate DR6 SEGUE plates list |  | 5d | 2006-07-05 | 2006-07-11 | 417SS | 449d | 0d |  | Yanny | 40h | DR6 |
| 419 | 8.8.3 | Vet DR6 plate lists at testing phone-con |  | 10d | 2006-07-12 | 2006-07-25 | 417, 418 | 449d | 0d |  | Strauss | 80h | DR6 |
| 420 | 8.8.4 | DR6 plate lists approved | milestone | 0d | 2006-07-25 | 2006-07-25 | 419 | 449d | 5d |  |  |  | DR6 |
| 421 | 8.9 | **DR6 Collab Release** |  | 106d | 2006-07-24 | 2006-12-18 |  | 441d |  |  | Boroski | 9720h | DR6 |
| 422 | 8.9.1 | **DR6-DAS** |  | 45d | 2006-07-26 | 2006-09-26 |  | 568d |  |  | Stoughton | 840h | DR6 |
| 423 | 8.9.1.1 | Create links in DAS to DR6 imaging data |  | 20d | 2006-07-26 | 2006-08-22 | 415 | 568d | 0d |  | Adelman | 160h | DR6 |
| 424 | 8.9.1.2 | Create links in DAS to DR6 spectro data |  | 20d | 2006-08-23 | 2006-09-19 | 423, 420 | 568d | 0d |  | Adelman | 160h | DR6 |
| 425 | 8.9.1.3 | Update DAS web pages to reflect DR6 |  | 15d | 2006-09-06 | 2006-09-26 | 427FF | 568d |  |  | Jester | 120h | DR6 |
| 426 | 8.9.1.4 | Sanity tests to verify that DR6-DAS links are working properly |  | 5d | 2006-09-20 | 2006-09-26 | 424 | 568d | 0d |  | Testers | 40h | DR6 |
| 427 | 8.9.1.5 | DR6-DAS ready for collaboration release | milestone | 0d | 2006-09-26 | 2006-09-26 | 426 | 568d | 0d |  |  |  | DR6 |
| 428 | 8.9.2 | **DR6-CAS** |  | 100d | 2006-07-26 | 2006-12-12 |  | 439d |  |  | Yanny | 7680h | DR6 |
| 429 | 8.9.2.1 | **BestDR6 Data Load** |  | 85d | 2006-07-26 | 2006-11-21 |  | 439d |  |  | Yanny | 3160h | DR6 |
| 430 | 8.9.2.1.1 | **BestDR6 Legacy Data Load** |  | 45d | 2006-07-26 | 2006-09-26 |  | 439d |  |  | Lebedeva | 1120h | DR6 |
| 431 | 8.9.2.1.1.1 | Generate imaging CSV files for Legacy data load into BestDR6 |  | 5d | 2006-07-26 | 2006-08-01 | 415 | 439d | 0d |  | Lebedeva; Kumar | 80h | DR6 |
| 432 | 8.9.2.1.1.2 | Generate spectro CSV files for Legacy data load into BestDR6 |  | 5d | 2006-08-02 | 2006-08-08 | 431, 420 | 444d | 0d |  | Lebedeva; Kumar | 80h | DR6 |
| 433 | 8.9.2.1.1.3 | Load Legacy imaging data into BestDR6 |  | 10d | 2006-08-02 | 2006-08-15 | 431 | 439d | 0d |  | Lebedeva; Kumar | 160h | DR6 |
| 434 | 8.9.2.1.1.4 | Load Legacy spectro data into BestDR6 |  | 10d | 2006-08-16 | 2006-08-29 | 433, 432 | 439d | 0d |  | Lebedeva; Kumar | 160h | DR6 |
| 435 | 8.9.2.1.1.5 | Detach and make backup copy of BestDR6 with Legacy data |  | 2d | 2006-08-30 | 2006-08-31 | 434 | 439d | 0d |  | Lebedeva; Kumar | 32h | DR6 |
| 436 | 8.9.2.1.1.6 | Run finish step on BestDR6 with Legacy data load |  | 10d | 2006-09-01 | 2006-09-14 | 435 | 439d | 0d |  | Lebedeva; Kumar | 160h | DR6 |
| 437 | 8.9.2.1.1.7 | Detach and make copies of BestDR6 with Legacy data load |  | 3d | 2006-09-15 | 2006-09-19 | 436 | 439d | 0d |  | Lebedeva; Kumar | 48h | DR6 |
| 438 | 8.9.2.1.1.8 | Run test queries against BestDR6 with Legacy data load |  | 5d | 2006-09-20 | 2006-09-26 | 437 | 439d | 0d |  | Testers | 40h | DR6 |
| 439 | 8.9.2.1.1.9 | BestDR6 Legacy data load complete | milestone | 0d | 2006-09-26 | 2006-09-26 | 438 | 479d | 40d |  |  |  | DR6 |

| ID | WBS | Task | Type | Duration | Start | Finish | Predecessors | Total slack | Free slack | Resources | Work | Text1 |
| --- | --- | --- | --- | --- | --- | --- | --- | --- | --- | --- | --- | --- |
| 440 | 8.9.2.1.2 | **BestDR6 SEGUE Data Load** |  | 75d | 2006-08-09 | 2006-11-21 |  | 439d |  | Lebedeva | 1360h | DR6 |
| 441 | 8.9.2.1.2.1 | Generate imaging CSV files for SEGUE data load into BestDR6 |  | 5d | 2006-08-09 | 2006-08-15 | 432 | 469d | 0d | Lebedeva; Kumar | 80h | DR6 |
| 442 | 8.9.2.1.2.2 | Generate spectro CSV files for SEGUE data load into BestDR6 |  | 5d | 2006-08-16 | 2006-08-22 | 441 | 474d | 35d | Lebedeva; Kumar | 80h | DR6 |
| 443 | 8.9.2.1.2.3 | Load SEGUE imaging data into BestDR6 |  | 10d | 2006-09-27 | 2006-10-10 | 441, 438 | 439d | 0d | Lebedeva; Kumar | 160h | DR6 |
| 444 | 8.9.2.1.2.4 | Load SEGUE spectro data into BestDR6 |  | 10d | 2006-10-11 | 2006-10-24 | 443, 442 | 439d | 0d | Lebedeva; Kumar | 160h | DR6 |
| 445 | 8.9.2.1.2.5 | Detach and make backup copy of BestDR6 with SEGUE data |  | 2d | 2006-10-25 | 2006-10-26 | 444 | 439d | 0d | Lebedeva; Kumar | 32h | DR6 |
| 446 | 8.9.2.1.2.6 | Run finish step on BestDR6 with SEGUE data load |  | 10d | 2006-10-27 | 2006-11-09 | 445 | 439d | 0d | Lebedeva; Kumar | 160h | DR6 |
| 447 | 8.9.2.1.2.7 | Detach and make copies of BestDR6 with SEGUE data load |  | 3d | 2006-11-10 | 2006-11-14 | 446 | 439d | 0d | Lebedeva; Kumar | 48h | DR6 |
| 448 | 8.9.2.1.2.8 | Run test queries against BestDR6 with SEGUE data load |  | 5d | 2006-11-15 | 2006-11-21 | 447 | 439d | 0d | Testers | 40h | DR6 |
| 449 | 8.9.2.1.2.9 | BestDR6 SEGUE data load complete | milestone | 0d | 2006-11-21 | 2006-11-21 | 448 | 439d | 0d |  |  | DR6 |
| 450 | 8.9.2.1.3 | BestDR6 load complete | milestone | 0d | 2006-11-21 | 2006-11-21 | 449, 439 | 439d | 0d |  |  | DR6 |
| 451 | 8.9.2.2 | **TargDR6 Data Load** |  | 85d | 2006-07-26 | 2006-11-21 |  | 455d |  | Yanny | 3160h | DR6 |
| 452 | 8.9.2.2.1 | **TargDR6 Legacy Data Load** |  | 45d | 2006-07-26 | 2006-09-26 |  | 455d |  | Lebedeva | 1120h | DR6 |
| 453 | 8.9.2.2.1.1 | Generate imaging CSV files for Legacy data load into TargDR6 |  | 5d | 2006-07-26 | 2006-08-01 | 415 | 455d | 0d | Lebedeva; Kumar | 80h | DR6 |
| 454 | 8.9.2.2.1.2 | Generate spectro CSV files for Legacy data load into TargDR6 |  | 5d | 2006-08-02 | 2006-08-08 | 453 | 460d | 0d | Lebedeva; Kumar | 80h | DR6 |
| 455 | 8.9.2.2.1.3 | Load Legacy imaging data into TargDR6 |  | 10d | 2006-08-02 | 2006-08-15 | 453 | 455d | 0d | Lebedeva; Kumar | 160h | DR6 |
| 456 | 8.9.2.2.1.4 | Load Legacy spectro data into TargDR6 |  | 10d | 2006-08-16 | 2006-08-29 | 454, 455 | 455d | 0d | Lebedeva; Kumar | 160h | DR6 |
| 457 | 8.9.2.2.1.5 | Detach and make backup copy of TargDR6 with Legacy data |  | 2d | 2006-08-30 | 2006-08-31 | 456 | 455d | 0d | Lebedeva; Kumar | 32h | DR6 |
| 458 | 8.9.2.2.1.6 | Run finish step on TargDR6 with Legacy data load |  | 10d | 2006-09-01 | 2006-09-14 | 457 | 455d | 0d | Lebedeva; Kumar | 160h | DR6 |
| 459 | 8.9.2.2.1.7 | Detach and make copies of TargDR6 with Legacy data load |  | 3d | 2006-09-15 | 2006-09-19 | 458 | 455d | 0d | Lebedeva; Kumar | 48h | DR6 |
| 460 | 8.9.2.2.1.8 | Run test queries against TargDR6 with Legacy data load |  | 5d | 2006-09-20 | 2006-09-26 | 459 | 455d | 0d | Testers | 40h | DR6 |
| 461 | 8.9.2.2.1.9 | TargDR6 Legacy data load complete | milestone | 0d | 2006-09-26 | 2006-09-26 | 460 | 495d | 40d |  |  | DR6 |
| 462 | 8.9.2.2.2 | **TargDR6 SEGUE Data Load** |  | 75d | 2006-08-09 | 2006-11-21 |  | 455d |  | Lebedeva | 1360h | DR6 |
| 463 | 8.9.2.2.2.1 | Generate imaging CSV files for SEGUE data load into TargDR6 |  | 5d | 2006-08-09 | 2006-08-15 | 454 | 485d | 0d | Lebedeva; Kumar | 80h | DR6 |
| 464 | 8.9.2.2.2.2 | Generate spectro CSV files for SEGUE data load into TargDR6 |  | 5d | 2006-08-16 | 2006-08-22 | 463 | 490d | 35d | Lebedeva; Kumar | 80h | DR6 |
| 465 | 8.9.2.2.2.3 | Load SEGUE imaging data into TargDR6 |  | 10d | 2006-09-27 | 2006-10-10 | 460, 463 | 455d | 0d | Lebedeva; Kumar | 160h | DR6 |
| 466 | 8.9.2.2.2.4 | Load SEGUE spectro data into TargDR6 |  | 10d | 2006-10-11 | 2006-10-24 | 464, 465 | 455d | 0d | Lebedeva; Kumar | 160h | DR6 |
| 467 | 8.9.2.2.2.5 | Detach and make backup copy of TargDR6 with SEGUE data |  | 2d | 2006-10-25 | 2006-10-26 | 466 | 455d | 0d | Lebedeva; Kumar | 32h | DR6 |
| 468 | 8.9.2.2.2.6 | Run finish step on TargDR6 with SEGUE data load |  | 10d | 2006-10-27 | 2006-11-09 | 467 | 455d | 0d | Lebedeva; Kumar | 160h | DR6 |
| 469 | 8.9.2.2.2.7 | Detach and make copies of TargDR6 with SEGUE data load |  | 3d | 2006-11-10 | 2006-11-14 | 468 | 455d | 0d | Lebedeva; Kumar | 48h | DR6 |
| 470 | 8.9.2.2.2.8 | Run test queries against TargDR6 with SEGUE data load |  | 5d | 2006-11-15 | 2006-11-21 | 469 | 455d | 0d | Testers | 40h | DR6 |
| 471 | 8.9.2.2.2.9 | TargDR6 SEGUE data load complete | milestone | 0d | 2006-11-21 | 2006-11-21 | 470 | 455d | 0d |  |  | DR6 |
| 472 | 8.9.2.2.3 | TargDR6 load complete | milestone | 0d | 2006-11-21 | 2006-11-21 | 461, 471 | 455d | 10d |  |  | DR6 |

| ID | WBS | Task | Type | Duration | Start | Finish | Predecessors | Total slack | Free slack | Constraint | Resources | Work | Text1 |
| --- | --- | --- | --- | --- | --- | --- | --- | --- | --- | --- | --- | --- | --- |
| 473 | 8.9.2.3 | **DR6 runQA** |  | 15d | 2006-11-22 | 2006-12-12 |  | 439d |  |  | Yanny | 360h | DR6 |
| 474 | 8.9.2.3.1 | Add runQA to BestDR6 |  | 15d | 2006-11-22 | 2006-12-12 | 450 | 439d | 0d | start no earlier than 2005-12-12 | Yanny | 120h | DR6 |
| 475 | 8.9.2.3.2 | Add runQA to TargDR6 |  | 15d | 2006-11-22 | 2006-12-12 | 474SS | 439d | 0d |  | Yanny | 120h | DR6 |
| 476 | 8.9.2.4 | Update DR6-CAS documentation |  | 5d | 2006-09-04 | 2006-09-08 |  | 506d | 0d | start no earlier than 2006-09-04 | Jester; Neilsen; Thakar; Yanny | 160h | DR6 |
| 477 | 8.9.2.5 | Update SkyServer front-end to include DR6 information |  | 5d | 2006-09-04 | 2006-09-08 | 476SS | 506d | 67d |  | Thakar | 40h | DR6 |
| 478 | 8.9.2.6 | DR6-CAS ready for collaboration release | milestone | 0d | 2006-12-12 | 2006-12-12 | 475, 476, 477 | 439d | 0d |  |  |  | DR6 |
| 479 | 8.9.3 | **DR6 Web Pages** |  | 15d | 2006-07-24 | 2006-08-11 |  | 600d |  |  | Neilsen | 320h | DR6 |
| 480 | 8.9.3.1 | Create set of front-end web pages for DR6 release |  | 10d | 2006-07-24 | 2006-08-04 |  | 600d | 0d | start no earlier than 2006-07-24 | Jester; Neilsen | 160h | DR6 |
| 481 | 8.9.3.2 | Vet DR6 web pages via testing phone-con forum |  | 5d | 2006-08-07 | 2006-08-11 | 480 | 600d | 0d |  | Strauss | 40h | DR6 |
| 482 | 8.9.3.3 | DR6 web pages ready for release | milestone | 0d | 2006-08-11 | 2006-08-11 | 481 | 600d |  |  |  |  | DR6 |
| 483 | 8.9.4 | Connect SkyServer front to DR6-CAS |  | 1d | 2006-12-13 | 2006-12-13 | 478 | 439d | 0d |  | Lebedeva | 8h | DR6 |
| 484 | 8.9.5 | Point CAS web servers to BestDR6 and TargDR6 |  | 2d | 2006-12-14 | 2006-12-15 | 450, 472, 475, 483 | 439d | 0d |  | Lebedeva | 16h | DR6 |
| 485 | 8.9.6 | Post DR6 collab announcement notice to sdss-general |  | 1d | 2006-12-18 | 2006-12-18 | 484 | 439d | 0d |  | Yanny | 8h | DR6 |
| 486 | 8.9.7 | DR6 released to collaboration | milestone | 0d | 2006-12-18 | 2006-12-18 | 485 | 439d | 0d |  |  |  | DR6 |
| 487 | 8.10 | **DR6 CAS Mirror Site at JHU** |  | 29d | 2006-11-22 | 2007-01-01 |  | 499d |  |  | Szalay | 536h | DR6 |
| 488 | 8.10.1 | Prepare BestDR6 files for transfer to JHU |  | 5d | 2006-11-22 | 2006-11-28 | 450 | 499d | 0d |  | Lebedeva | 40h | DR6 |
| 489 | 8.10.2 | Copy BestDR6 to JHU |  | 5d | 2006-11-29 | 2006-12-05 | 488 | 499d | 0d |  | vandenBerg | 40h | DR6 |
| 490 | 8.10.3 | Reconstruct and test BestDR6 at JHU |  | 5d | 2006-12-06 | 2006-12-12 | 489 | 513d |  |  | vandenBerg | 40h | DR6 |
| 491 | 8.10.4 | Prepare TargDR6 files for transfer to JHU |  | 5d | 2006-12-06 | 2006-12-12 | 472, 489 | 499d | 0d |  | Lebedeva | 40h | DR6 |
| 492 | 8.10.5 | Copy TargDR6 to JHU |  | 5d | 2006-12-13 | 2006-12-19 | 491 | 499d | 0d |  | vandenBerg | 40h | DR6 |
| 493 | 8.10.6 | Reconstruct and test TargDR6 at JHU |  | 5d | 2006-12-20 | 2006-12-26 | 492 | 499d | 0d |  | vandenBerg | 40h | DR6 |
| 494 | 8.10.7 | Test DR6 switchover from FNAL to JHU |  | 2d | 2006-12-27 | 2006-12-28 | 493 | 499d | 0d |  | vandenBerg; Lilianstrom | 32h | DR6 |
| 495 | 8.10.8 | Re-point web servers to DR6 at FNAL |  | 2d | 2006-12-29 | 2007-01-01 | 494 | 499d | 0d |  | vandenBerg; Lilianstrom | 32h | DR6 |
| 496 | 8.10.9 | DR6-CAS mirror site at JHU verified operational | milestone | 0d | 2007-01-01 | 2007-01-01 | 495 | 499d | 124d |  |  |  | DR6 |

| ID | WBS | Task | Type | Duration | Start | Finish | Predecessors | Complete | Remaining | Total slack | Free slack | Constraint | Resources | Work | Actual work | Text1 |
| --- | --- | --- | --- | --- | --- | --- | --- | --- | --- | --- | --- | --- | --- | --- | --- | --- |
| 497 | 8.11 | **DR6 Public Release** |  | 134d | 2006-12-19 | 2007-06-25 |  |  |  | 375d |  |  | Yanny | 3568h |  | DR6 |
| 498 | 8.11.1 | Implement patches to DR6-DAS and CAS based on collab feedback, as necessary |  | 70d | 2006-12-19 | 2007-03-26 | 486 |  |  | 439d |  |  | Lebedeva; Thakar; Kumar; Stoughton | 2240h |  | DR6 |
| 499 | 8.11.2 | DR6-DAS and CAS public release versions frozen | milestone | 0d | 2007-03-26 | 2007-03-26 |  |  |  | 440d |  | start no earlier than 2007-03-26 |  |  |  | DR6 |
| 500 | 8.11.3 | Update caveats page to reflect known problems with DR6 release |  | 10d | 2007-06-11 | 2007-06-25 | 503FF |  |  | 375d |  |  | Jester; Neilsen; Thakar | 240h |  | DR6 |
| 501 | 8.11.4 | Change permission settings to allow public access to the DR6-DAS |  | 1d | 2007-06-22 | 2007-06-25 | 503FF |  |  | 375d |  |  | Alcorn | 8h |  | DR6 |
| 502 | 8.11.5 | Change permissions to allow public access to DR6-CAS and Skyserver |  | 1d | 2007-06-22 | 2007-06-25 | 503FF |  |  | 375d |  |  | Lebedeva | 8h |  | DR6 |
| 503 | 8.11.6 | DR6 released to the public | milestone | 0d | 2007-06-25 | 2007-06-25 | 14SS, 496 |  |  | 375d | 0d | start no earlier than 2006-06-26 |  |  |  | DR6 |
| 505 | 9 | **Runs DB** |  | 340d | 2005-11-09 A | 2007-03-06 |  | 10% | 305.17d | 453d |  |  | Yanny | 12200h | 664h | RunsDB |
| 506 | 9.1 | **RunsDB Stripe 82 Load** |  | 42d | 2005-11-09 A | 2006-01-11 |  | 89% | 4.47d | 454d |  |  | Lebedeva | 1016h | 656h | RunsDB |
| 507 | 9.1.1 | Generate list of Stripe 82 runs for DB load |  | 1d | 2005-11-09 A | 2005-11-09 A |  | 100% |  |  |  | start no earlier than 2005-10-24 | Yanny | 8h | 8h | RunsDB |
| 508 | 9.1.2 | Load first half of Stripe 82 data into runsDB (40 runs) |  | 9d | 2005-11-09 A | 2005-11-21 A | 507 | 100% |  |  |  |  | Lebedeva; Kumar | 144h | 144h | RunsDB |
| 509 | 9.1.3 | Detach and make backup copy of runsDB with Stripe 82 data |  | 3d | 2005-11-21 A | 2005-11-23 A | 508 | 100% |  |  |  |  | Lebedeva; Kumar | 48h | 48h | RunsDB |
| 510 | 9.1.4 | Run finish step on runsDB with partial Stripe 82 data load |  | 5d | 2005-11-24 A | 2005-11-30 A | 509 | 100% |  |  |  |  | Lebedeva; Kumar | 80h | 80h | RunsDB |
| 511 | 9.1.5 | Make copies of runsDB with partial Stripe 82 data load |  | 2d | 2005-11-30 A | 2005-12-01 A | 510 | 100% |  |  |  |  | Kumar | 16h | 16h | RunsDB |
| 512 | 9.1.6 | Run test queries against runsDB with partial Stripe 82 data load |  | 2d | 2005-12-02 A | 2005-12-05 A | 511 | 100% |  |  |  |  | Kumar; Thakar | 32h | 32h | RunsDB |
| 513 | 9.1.7 | Release runsDB partial stripe 82 load to collaboration | milestone | 0d | 2005-12-06 A | 2005-12-06 A | 512 | 100% |  |  |  |  | Yanny |  |  | RunsDB |
| 514 | 9.1.8 | Load second half of Stripe 82 data into runsDB (30 runs) |  | 7d | 2005-12-07 A | 2005-12-15 A | 513 | 100% |  |  |  |  | Lebedeva; Kumar | 112h | 112h | RunsDB |
| 515 | 9.1.9 | Run finish step on runsDB with full Stripe 82 data load |  | 12d | 2005-12-15 A | 2006-01-05 A | 514 | 100% |  |  |  |  | Lebedeva; Kumar | 192h | 192h | RunsDB |
| 516 | 9.1.10 | Update runsDB documentation to include Stripe 82 data |  | 3d | 2006-01-06 | 2006-01-10 | 515 |  |  | 455d | 1d |  |  |  |  | RunsDB |
| 517 | 9.1.11 | Make copies of runsDB with fulll Stripe 82 data load |  | 1d | 2006-01-09 A | 2006-01-09 A | 515 | 100% |  |  |  |  | Kumar; Lebedeva | 16h | 16h | RunsDB |
| 518 | 9.1.12 | Run test queries against runsDB with fulll Stripe 82 data load |  | 2d | 2006-01-10 A | 2006-01-11 | 517 |  | 2d | 454d | 0d |  | Yanny; Thakar | 32h |  | RunsDB |
| 519 | 9.1.13 | Release runsDB to collab with Stripe 82 data | milestone | 0d | 2006-01-11 | 2006-01-11 | 516, 518 |  |  | 454d | 1d |  |  |  |  | RunsDB |
| 520 | 9.2 | **RunsDB SEGUE Data Load** |  | 37d | 2006-01-06 | 2006-02-28 |  |  |  | 453d |  |  | Lebedeva | 896h |  | RunsDB |
| 521 | 9.2.1 | Generate list of SEGUE runs for DB load |  | 5d | 2006-01-06 | 2006-01-12 | 515 |  |  | 453d | 0d | start no earlier than 2006-01-05 | Yanny | 40h |  | RunsDB |
| 522 | 9.2.2 | Load SEGUE imaging data into runsDB |  | 15d | 2006-01-13 | 2006-02-03 | 521, 519 |  |  | 453d | 0d |  | Lebedeva; Kumar | 240h |  | RunsDB |
| 523 | 9.2.3 | Detach and make backup copy of runsDB with SEGUE data |  | 2d | 2006-02-06 | 2006-02-07 | 522 |  |  | 453d | 0d |  | Lebedeva; Kumar | 32h |  | RunsDB |
| 524 | 9.2.4 | Run finish step on runsDB with SEGUE data load |  | 10d | 2006-02-08 | 2006-02-21 | 523 |  |  | 453d | 0d |  | Lebedeva; Kumar | 160h |  | RunsDB |
| 525 | 9.2.5 | Update runsDB documentation to include SEGUE data |  | 3d | 2006-02-22 | 2006-02-24 | 524 |  |  | 458d | 1d |  | Lebedeva; Kumar | 48h |  | RunsDB |
| 526 | 9.2.6 | Make copies of runsDB with SEGUE data load |  | 2d | 2006-02-22 | 2006-02-23 | 524 |  |  | 457d | 0d |  | Lebedeva; Kumar | 32h |  | RunsDB |
| 527 | 9.2.7 | Run test queries against runsDB with SEGUE data load |  | 3d | 2006-02-24 | 2006-02-28 | 526 |  |  | 456d | 0d |  | Yanny; Thakar | 48h |  | RunsDB |
| 528 | 9.2.8 | Release runsDB to collab with SEGUE data | milestone | 0d | 2006-02-28 | 2006-02-28 | 525, 527 |  |  | 456d | 3d |  |  |  |  | RunsDB |

| ID | WBS | Task | Type | Duration | Start | Finish | Predecessors | Total slack | Free slack | Constraint | Resources | Work | Text1 |
| --- | --- | --- | --- | --- | --- | --- | --- | --- | --- | --- | --- | --- | --- |
| 529 | 9.3 | **RunsDB Legacy Year-5 and Aug-Dec '05 Data Load** |  | 45d | 2006-02-22 | 2006-04-25 |  | 453d |  |  | Lebedeva | 1120h | RunsDB |
| 530 | 9.3.1 | Generate list of Year-5 runs for DB load |  | 5d | 2006-02-22 | 2006-02-28 | 524 | 453d | 0d | start no earlier than 2005-10-24 | Yanny | 40h | RunsDB |
| 531 | 9.3.2 | Generate list of Aug-Dec 2005 runs for DB load |  | 3d | 2006-03-01 | 2006-03-03 | 530 | 453d | 0d |  | Lebedeva; Kumar | 48h | RunsDB |
| 532 | 9.3.3 | Load Year-5 and Aug-Dec '05 data into runsDB (93 runs) |  | 20d | 2006-03-06 | 2006-03-31 | 528, 531 | 453d | 0d |  | Lebedeva; Kumar | 320h | RunsDB |
| 533 | 9.3.4 | Detach and make backup copy of runsDB with Year-5 data |  | 2d | 2006-04-03 | 2006-04-04 | 532 | 453d | 0d |  | Lebedeva; Kumar | 32h | RunsDB |
| 534 | 9.3.5 | Run finish step on runsDB with Year-5 data load |  | 10d | 2006-04-05 | 2006-04-18 | 533 | 453d | 0d |  | Lebedeva; Kumar | 160h | RunsDB |
| 535 | 9.3.6 | Update runsDB documentation to include Year-5 data |  | 3d | 2006-04-19 | 2006-04-21 | 534 | 680d | 2d |  | Lebedeva; Kumar | 48h | RunsDB |
| 536 | 9.3.7 | Make copies of runsDB with Year-5 data load |  | 3d | 2006-04-19 | 2006-04-21 | 534 | 678d | 0d |  | Lebedeva; Kumar | 48h | RunsDB |
| 537 | 9.3.8 | Run test queries against runsDB with Year-5 data load |  | 2d | 2006-04-24 | 2006-04-25 | 536 | 678d | 0d |  | Lebedeva; Kumar; Yanny; Thakar | 64h | RunsDB |
| 538 | 9.3.9 | Release runsDB to collab with Year-5 and Aug-Dec '05 data | milestone | 0d | 2006-04-25 | 2006-04-25 | 535, 537 | 678d |  |  |  |  | RunsDB |
| 539 | 9.4 | **RunsDB Legacy Year-4 and Jan-Feb '06 Data Load** |  | 40d | 2006-04-19 | 2006-06-13 |  | 453d |  |  | Lebedeva | 1000h | RunsDB |
| 540 | 9.4.1 | Generate list of Year-4 runs for DB load |  | 5d | 2006-04-19 | 2006-04-25 | 534 | 453d | 0d | start no earlier than 2005-10-24 | Yanny | 40h | RunsDB |
| 541 | 9.4.2 | Generate list of Jan-Feb 2006 runs for DB load |  | 3d | 2006-04-26 | 2006-04-28 | 540 | 453d | 0d |  | Lebedeva; Kumar | 48h | RunsDB |
| 542 | 9.4.3 | Load Year-4 and Jan-Feb '06 data into runsDB (64+ runs) |  | 15d | 2006-05-01 | 2006-05-19 | 541 | 453d | 0d |  | Lebedeva; Kumar | 240h | RunsDB |
| 543 | 9.4.4 | Detach and make backup copy of runsDB with Year-4 data |  | 2d | 2006-05-22 | 2006-05-23 | 542 | 453d | 0d |  | Lebedeva; Kumar | 32h | RunsDB |
| 544 | 9.4.5 | Run finish step on runsDB with Year-4 data load |  | 10d | 2006-05-24 | 2006-06-06 | 543 | 453d | 0d |  | Lebedeva; Kumar | 160h | RunsDB |
| 545 | 9.4.6 | Update runsDB documentation to include Year-4 data |  | 3d | 2006-06-07 | 2006-06-09 | 544 | 645d | 2d |  | Lebedeva; Kumar | 48h | RunsDB |
| 546 | 9.4.7 | Make copies of runsDB with Year-4 data load |  | 3d | 2006-06-07 | 2006-06-09 | 544 | 643d | 0d |  | Lebedeva; Kumar | 48h | RunsDB |
| 547 | 9.4.8 | Run test queries against runsDB with Year-4 data load |  | 2d | 2006-06-12 | 2006-06-13 | 546 | 643d | 0d |  | Lebedeva; Kumar; Yanny; Thakar | 64h | RunsDB |
| 548 | 9.4.9 | Release runsDB to collab with Year-4 and Jan-Feb '06 data | milestone | 0d | 2006-06-13 | 2006-06-13 | 545, 547 | 643d |  |  |  |  | RunsDB |
| 549 | 9.5 | **RunsDB Legacy Year-3 and Mar-Apr '06 Data Load** |  | 45d | 2006-06-07 | 2006-08-08 |  | 453d |  |  | Lebedeva | 1104h | RunsDB |
| 550 | 9.5.1 | Generate list of Year-3 runs for DB load |  | 5d | 2006-06-07 | 2006-06-13 | 544 | 453d | 0d | start no earlier than 2005-10-24 | Yanny | 40h | RunsDB |
| 551 | 9.5.2 | Generate list of Mar-Apr '06 runs for DB load |  | 2d | 2006-06-14 | 2006-06-15 | 550 | 453d | 0d |  | Lebedeva; Kumar | 32h | RunsDB |
| 552 | 9.5.3 | Load Year-3 and Mar-Apr '06 data into runsDB (99+ runs) |  | 20d | 2006-06-16 | 2006-07-13 | 551 | 453d | 0d |  | Lebedeva; Kumar | 320h | RunsDB |
| 553 | 9.5.4 | Detach and make backup copy of runsDB with Year-3 data |  | 2d | 2006-07-14 | 2006-07-17 | 552 | 453d | 0d |  | Lebedeva; Kumar | 32h | RunsDB |
| 554 | 9.5.5 | Run finish step on runsDB with Year-3 data load |  | 10d | 2006-07-18 | 2006-07-31 | 553 | 453d | 0d |  | Lebedeva; Kumar | 160h | RunsDB |
| 555 | 9.5.6 | Make copies of runsDB with Year-3 data load |  | 3d | 2006-08-01 | 2006-08-03 | 554 | 603d | 0d |  | Lebedeva; Kumar | 48h | RunsDB |
| 556 | 9.5.7 | Update runsDB documentation to include Year-3 data |  | 3d | 2006-08-04 | 2006-08-08 | 555 | 603d | 0d |  | Lebedeva; Kumar | 48h | RunsDB |
| 557 | 9.5.8 | Run test queries against runsDB with Year-3 data load |  | 2d | 2006-08-04 | 2006-08-07 | 555 | 604d |  |  | Lebedeva; Kumar; Yanny; Thakar | 64h | RunsDB |
| 558 | 9.5.9 | Release runsDB to collab with Year-3 and Mar-Apr '06 data | milestone | 0d | 2006-08-08 | 2006-08-08 | 556 | 603d |  |  |  |  | RunsDB |

| ID | WBS | Task | Type | Duration | Start | Finish | Predecessors | Total slack | Free slack | Constraint | Resources | Work | Text1 |
| --- | --- | --- | --- | --- | --- | --- | --- | --- | --- | --- | --- | --- | --- |
| 559 | 9.6 | **RunsDB Legacy Year-2 and May-Jun '06 Data Load** |  | 39d | 2006-08-01 | 2006-09-22 |  | 453d |  |  | Lebedeva | 976h | RunsDB |
| 560 | 9.6.1 | Generate list of Year-2 runs for DB load |  | 5d | 2006-08-01 | 2006-08-07 | 554 | 453d | 0d | start no earlier than 2005-10-24 | Yanny | 40h | RunsDB |
| 561 | 9.6.2 | Generate list of May-Jun '06 runs for DB load |  | 2d | 2006-08-08 | 2006-08-09 | 560 | 453d | 0d |  | Lebedeva; Kumar | 32h | RunsDB |
| 562 | 9.6.3 | Load Year-2 and May-Jun '06 data into runsDB (66+ runs) |  | 15d | 2006-08-10 | 2006-08-30 | 561 | 453d | 0d |  | Lebedeva; Kumar | 240h | RunsDB |
| 563 | 9.6.4 | Detach and make backup copy of runsDB with Year-2 data |  | 2d | 2006-08-31 | 2006-09-01 | 562 | 453d | 0d |  | Lebedeva; Kumar | 32h | RunsDB |
| 564 | 9.6.5 | Run finish step on runsDB with Year-2 data load |  | 10d | 2006-09-04 | 2006-09-15 | 563 | 453d | 0d |  | Lebedeva; Kumar | 160h | RunsDB |
| 565 | 9.6.6 | Update runsDB documentation to include Year-2 data |  | 3d | 2006-09-18 | 2006-09-20 | 564 | 572d | 2d |  | Lebedeva; Kumar | 48h | RunsDB |
| 566 | 9.6.7 | Make copies of runsDB with Year-2 data load |  | 3d | 2006-09-18 | 2006-09-20 | 564 | 570d | 0d |  | Lebedeva; Kumar | 48h | RunsDB |
| 567 | 9.6.8 | Run test queries against runsDB with Year-2 data load |  | 2d | 2006-09-21 | 2006-09-22 | 566 | 570d | 0d |  | Lebedeva; Kumar; Yanny; Thakar | 64h | RunsDB |
| 568 | 9.6.9 | Release runsDB to collab with Year-2 and May-Jun '06 data | milestone | 0d | 2006-09-22 | 2006-09-22 | 565, 567 | 570d |  |  |  |  | RunsDB |
| 569 | 9.7 | **RunsDB Legacy Year-1 Data Load** |  | 37d | 2006-09-18 | 2006-11-07 |  | 453d |  |  | Lebedeva | 928h | RunsDB |
| 570 | 9.7.1 | Generate list of Year-1 runs for DB load |  | 5d | 2006-09-18 | 2006-09-22 | 564 | 453d | 0d | start no earlier than 2005-10-24 | Yanny | 40h | RunsDB |
| 571 | 9.7.2 | Load Year-1 data into runsDB (60+ runs) |  | 15d | 2006-09-25 | 2006-10-13 | 570 | 453d | 0d |  | Lebedeva; Kumar | 240h | RunsDB |
| 572 | 9.7.3 | Detach and make backup copy of runsDB with Year-1 data |  | 2d | 2006-10-16 | 2006-10-17 | 571 | 453d | 0d |  | Lebedeva; Kumar | 32h | RunsDB |
| 573 | 9.7.4 | Run finish step on runsDB with Year-1 data load |  | 10d | 2006-10-18 | 2006-10-31 | 572 | 453d | 0d |  | Lebedeva; Kumar | 160h | RunsDB |
| 574 | 9.7.5 | Update runsDB documentation to include Year-1 data |  | 3d | 2006-11-01 | 2006-11-03 | 573 | 540d | 2d |  | Lebedeva; Kumar | 48h | RunsDB |
| 575 | 9.7.6 | Make copies of runsDB with Year-1 data load |  | 3d | 2006-11-01 | 2006-11-03 | 573 | 538d | 0d |  | Lebedeva; Kumar | 48h | RunsDB |
| 576 | 9.7.7 | Run test queries against runsDB with Year-1 data load |  | 2d | 2006-11-06 | 2006-11-07 | 575 | 538d | 0d |  | Lebedeva; Kumar; Yanny; Thakar | 64h | RunsDB |
| 577 | 9.7.8 | Release runsDB to collab with Year-1 data | milestone | 0d | 2006-11-07 | 2006-11-07 | 574, 576 | 538d |  |  |  |  | RunsDB |
| 578 | 9.8 | **RunsDB Legacy Commissioning and Aug-Sep '06 Data Load** |  | 38d | 2006-11-01 | 2006-12-22 |  | 453d |  |  | Lebedeva | 936h | RunsDB |
| 579 | 9.8.1 | Generate list of commissioning data runs for DB load |  | 5d | 2006-11-01 | 2006-11-07 | 573 | 453d | 0d | start no earlier than 2005-10-24 | Yanny | 40h | RunsDB |
| 580 | 9.8.2 | Generate list of Aug-Sep '06 runs for DB load |  | 2d | 2006-11-08 | 2006-11-09 | 579 | 453d | 0d |  | Lebedeva; Kumar | 32h | RunsDB |
| 581 | 9.8.3 | Load commissioning and Aug-Sep '06 data into runsDB (40+ runs) |  | 15d | 2006-11-10 | 2006-11-30 | 580 | 453d | 0d |  | Lebedeva; Kumar | 240h | RunsDB |
| 582 | 9.8.4 | Detach and make backup copy of runsDB with commissioning data |  | 2d | 2006-12-01 | 2006-12-04 | 581 | 453d | 0d |  | Lebedeva; Kumar | 32h | RunsDB |
| 583 | 9.8.5 | Run finish step on runsDB with commissioning data load |  | 10d | 2006-12-05 | 2006-12-18 | 582 | 453d | 0d |  | Lebedeva; Kumar | 160h | RunsDB |
| 584 | 9.8.6 | Update runsDB documentation to include commissioning data |  | 3d | 2006-12-19 | 2006-12-21 | 583 | 454d | 1d |  | Lebedeva; Kumar | 48h | RunsDB |
| 585 | 9.8.7 | Make copies of runsDB with commissioning data load |  | 3d | 2006-12-19 | 2006-12-21 | 583 | 453d | 0d |  | Lebedeva; Kumar | 48h | RunsDB |
| 586 | 9.8.8 | Run test queries against runsDB with commissioning data load |  | 1d | 2006-12-22 | 2006-12-22 | 585 | 453d | 0d |  | Lebedeva; Kumar; Yanny; Thakar | 32h | RunsDB |
| 587 | 9.8.9 | Release runsDB to collab with commissioning and Aug-Sep '06 data | milestone | 0d | 2006-12-22 | 2006-12-22 | 586, 584 | 453d | 0d |  |  |  | RunsDB |

| ID | WBS | Task | Type | Duration | Start | Finish | Predecessors | Total slack | Free slack | Resources | Work | Text1 |
| --- | --- | --- | --- | --- | --- | --- | --- | --- | --- | --- | --- | --- |
| 588 | 9.9 | **RunsDB Oct-Nov '06 Data Load** |  | 30d | 2006-12-19 | 2007-01-29 |  | 453d |  | Lebedeva | 752h | RunsDB |
| 589 | 9.9.1 | Generate list of Oct-Nov '06 runs for DB load |  | 2d | 2006-12-19 | 2006-12-20 | 583 | 455d | 2d | Lebedeva; Kumar | 32h | RunsDB |
| 590 | 9.9.2 | Load Oct-Nov '06 data into runsDB (## runs) |  | 10d | 2006-12-25 | 2007-01-05 | 589, 587 | 453d | 0d | Lebedeva; Kumar | 160h | RunsDB |
| 591 | 9.9.3 | Detach and make backup copy of runsDB with Oct-Nov '06 data |  | 2d | 2007-01-08 | 2007-01-09 | 590 | 453d | 0d | Lebedeva; Kumar | 32h | RunsDB |
| 592 | 9.9.4 | Run finish step on runsDB with Oct-Nov '06 data load |  | 10d | 2007-01-10 | 2007-01-23 | 591 | 453d | 0d | Lebedeva; Kumar | 160h | RunsDB |
| 593 | 9.9.5 | Update runsDB documentation to include Oct-Nov '06 data |  | 3d | 2007-01-24 | 2007-01-26 | 592 | 454d | 1d | Lebedeva; Kumar | 48h | RunsDB |
| 594 | 9.9.6 | Make copies of runsDB with Oct-Nov '06 data load |  | 3d | 2007-01-24 | 2007-01-26 | 592 | 453d | 0d | Lebedeva; Kumar | 48h | RunsDB |
| 595 | 9.9.7 | Run test queries against runsDB with Oct-Nov '06 data load |  | 1d | 2007-01-29 | 2007-01-29 | 594 | 453d | 0d | Lebedeva; Kumar; Yanny; Thakar | 32h | RunsDB |
| 596 | 9.9.8 | Release runsDB to collab with Oct-Nov '06 data | milestone | 0d | 2007-01-29 | 2007-01-29 | 593, 595 | 453d | 0d |  |  | RunsDB |
| 597 | 9.10 | **RunsDB Dec '06 - Jan '07 Data Load** |  | 30d | 2007-01-24 | 2007-03-06 |  | 453d |  | Lebedeva | 752h | RunsDB |
| 598 | 9.10.1 | Generate list of Dec-Jan '06 runs for DB load |  | 2d | 2007-01-24 | 2007-01-25 | 592 | 455d | 2d | Lebedeva; Kumar | 32h | RunsDB |
| 599 | 9.10.2 | Load Dec '06 - Jan '07 data into runsDB (## runs) |  | 10d | 2007-01-30 | 2007-02-12 | 598, 596 | 453d | 0d | Lebedeva; Kumar | 160h | RunsDB |
| 600 | 9.10.3 | Detach and make backup copy of runsDB with Dec '06 - Jan '07 data |  | 2d | 2007-02-13 | 2007-02-14 | 599 | 453d | 0d | Lebedeva; Kumar | 32h | RunsDB |
| 601 | 9.10.4 | Run finish step on runsDB with Dec '06 - Jan '07 data load |  | 10d | 2007-02-15 | 2007-02-28 | 600 | 453d | 0d | Lebedeva; Kumar | 160h | RunsDB |
| 602 | 9.10.5 | Update runsDB documentation to include Dec '06 - Jan '07 data |  | 3d | 2007-03-01 | 2007-03-05 | 601 | 454d | 1d | Lebedeva; Kumar | 48h | RunsDB |
| 603 | 9.10.6 | Make copies of runsDB with Dec '06 - Jan '07 data load |  | 3d | 2007-03-01 | 2007-03-05 | 601 | 453d | 0d | Lebedeva; Kumar | 48h | RunsDB |
| 604 | 9.10.7 | Run test queries against runsDB with Dec '06 - Jan '07 data load |  | 1d | 2007-03-06 | 2007-03-06 | 603 | 453d | 0d | Lebedeva; Kumar; Yanny; Thakar | 32h | RunsDB |
| 605 | 9.10.8 | Release runsDB to collab with Dec '06 - Jan '07 data | milestone | 0d | 2007-03-06 | 2007-03-06 | 602, 604 | 453d |  |  |  | RunsDB |
