# SDSS-II (2005-02-28)

Schedule from MS Project, 2004-11-15 to 2008-12-01, costs in $, A marks actual dates.
Fermilab

## Calendars

- Standard: Mon-Fri 08:00-12:00, 13:00-17:00; Sat-Sun off. Exceptions (off unless hours are given): 2004-11-25 to 2004-11-26, 2004-12-24, 2004-12-27 to 2004-12-31, 2005-05-30.

## Resources

| Resource | Group |
| --- | --- |
| Josh Frieman | UC |
| John Marriner | FNAL |
| Fritz DeJongh | FNAL |
| Hubert Lampeitl | FNAL |
| Ben Dilday | UC |
| Mgmt Committee | ARC |
| Rich Kron | UC |
| Bill Boroski | FNAL |
| Michael Strauss | PU |
| Jim Gunn | PU |
| Robert Lupton | PU |
| Brian Yanny | FNAL |
| Steve Kent | FNAL |
| Scot Kleinman | NMSU |
| Craig Hogan | UW |
| Rick Kessler | UC |
| Craig Loomis | NMSU |
| Chris Stoughton | FNAL |
| Bruce Gillespie | NMSU |
| Jen Adelman | FNAL |
| Andy Becker | UW |
| Connie Rockosi | UCSC |
| R. French Leger | FNAL |
| Juan Estrada | FNAL |
| Douglas Tucker | FNAL |
| Erin Sheldon | UC |
| Dan Yocum | FNAL |
| Jim Annis | FNAL |
| Huan Lin | FNAL |
| Jon Holtzman | NMSU |
| Bob Nichol | Portsmouth |
| John Hendry | FNAL |
| Mark Klaene | NMSU |
| American Museum | AMNH |
| Contractor | VENDOR |
| Mike Evans | UW |
| Ron Rechenmacher | FNAL |
| Dinker Charak | FNAL |
| Margaret Votava | FNAL |
| CP6 | FNAL |
| Peregrine Mc Gehee | LANL |
| Observers | NMSU |
| Don Holmgren | FNAL |
| JEA |  |
| Eric Neilsen | FNAL |
| TBD |  |
| Jill Knapp | PU |
| Alex Szalay | JHU |
| Kurt Biery | FNAL |
| David Slimmer | FNAL |
| VW |  |
| BT |  |
| KB |  |
| Fritz Stauffer |  |
| FS |  |

## Schedule

| ID | WBS | Task | Type | Duration | Start | Finish | Total slack | Free slack | Constraint | Resources | Work | Text2 |
| --- | --- | --- | --- | --- | --- | --- | --- | --- | --- | --- | --- | --- |
| 1 | 1 | **Survey Management** |  | 956d | 2005-04-01 | 2008-12-01 | 0d |  |  | Rich Kron | 56976h | Operations |
| 2 | 1.1 | ARC Administration |  | 892d | 2005-07-01 | 2008-12-01 | 0d |  | finish no earlier than 2008-12-01 | Mike Evans | 7136h | Operations |
| 3 | 1.2 | Office of the Director |  | 892d | 2005-07-01 | 2008-12-01 | 0d |  | start no earlier than 2005-07-01 | Rich Kron | 7136h | Operations |
| 4 | 1.3 | Office of the Project Scientist |  | 892d | 2005-07-01 | 2008-12-01 | 0d |  | start no earlier than 2005-07-01 | Jim Gunn | 7136h | Operations |
| 5 | 1.4 | **Office of the Project Manager** |  | 956d | 2005-04-01 | 2008-12-01 | 0d |  |  | Bill Boroski | 20784h | Operations |
| 6 | 1.4.1 | Project Management Office |  | 892d | 2005-07-01 | 2008-12-01 | 0d |  | start no earlier than 2005-07-01 | Bill Boroski | 7136h | Operations |
| 7 | 1.4.2 | **Project Milestones** |  | 955d | 2005-04-01 | 2008-12-01 | 1d |  |  |  |  | Operations |
| 8 | 1.4.2.1 | SDSS-II Approved | milestone | 0d | 2005-04-01 | 2005-04-01 | 878d | 0d | start no earlier than 2005-04-01 |  |  | Operations |
| 9 | 1.4.2.2 | SDSS-II Project End | milestone | 0d | 2008-12-01 | 2008-12-01 | 1d |  | start no earlier than 2008-12-01 |  |  | Operations |
| 10 | 1.4.3 | **Data Release Milestones** |  | 750d | 2005-12-19 | 2008-11-03 | 21d |  |  | Bill Boroski | 6000h | Operations |
| 11 | 1.4.3.1 | DR5 Collaboration Release | milestone | 0d | 2005-12-19 | 2005-12-19 | 771d |  | start no earlier than 2005-12-19 |  |  | Operations |
| 12 | 1.4.3.2 | DR5 Public Release | milestone | 0d | 2006-07-10 | 2006-07-10 | 626d |  | start no earlier than 2006-07-10 |  |  | Operations |
| 13 | 1.4.3.3 | DR6 Collaboration Release | milestone | 0d | 2006-12-18 | 2006-12-18 | 511d |  | start no earlier than 2006-12-18 |  |  | Operations |
| 14 | 1.4.3.4 | DR6 Public Release | milestone | 0d | 2007-07-09 | 2007-07-09 | 366d |  | start no earlier than 2007-07-09 |  |  | Operations |
| 15 | 1.4.3.5 | DR7 Collaboration Release | milestone | 0d | 2007-12-17 | 2007-12-17 | 251d |  | start no earlier than 2007-12-17 |  |  | Operations |
| 16 | 1.4.3.6 | DR7 Public Release | milestone | 0d | 2008-07-07 | 2008-07-07 | 106d |  | start no earlier than 2008-07-07 |  |  | Operations |
| 17 | 1.4.3.7 | DR8 Collaboration Release | milestone | 0d | 2008-09-08 | 2008-09-08 | 61d |  | start no earlier than 2008-09-08 |  |  | Operations |
| 18 | 1.4.3.8 | DR8 Public Release | milestone | 0d | 2008-11-03 | 2008-11-03 | 21d |  | start no earlier than 2008-11-03 |  |  | Operations |
| 19 | 1.4.4 | **Summer Shutdown Periods** |  | 39d | 2005-06-15 | 2005-08-08 | 865d |  |  |  |  |  |
| 20 | 1.4.4.1 | Summer Shutdown 2005 |  | 39d | 2005-06-15 | 2005-08-08 | 865d |  | finish no earlier than 2005-08-08 |  |  |  |
| 21 | 1.5 | Office of the Scientific Spokesperson |  | 892d | 2005-07-01 | 2008-12-01 | 0d |  | start no earlier than 2005-07-01 | Michael Strauss | 7136h | Operations |
| 22 | 2 | **Survey Operations** |  | 892d | 2005-07-01 | 2008-12-01 | 0d |  |  | Jim Gunn; Bill Boroski; Steve Kent | 107040h | Operations |
| 23 | 2.1 | **Observing Systems** |  | 892d | 2005-07-01 | 2008-12-01 | 0d |  |  | Jim Gunn; Bill Boroski | 35680h | Operations |
| 24 | 2.1.1 | Technical Support at APO |  | 892d | 2005-07-01 | 2008-12-01 | 0d |  | start no earlier than 2005-07-01 |  |  | Operations |
| 25 | 2.1.2 | Off-mountain Technical Support |  | 892d | 2005-07-01 | 2008-12-01 | 0d |  | start no earlier than 2005-07-01 | Bill Boroski | 7136h | Operations |
| 26 | 2.1.3 | Plug Plate Production |  | 892d | 2005-07-01 | 2008-12-01 | 0d |  | start no earlier than 2005-07-01 | Mike Evans | 7136h | Operations |
| 27 | 2.1.4 | ARC Support for Observing Systems |  | 892d | 2005-07-01 | 2008-12-01 | 0d |  | start no earlier than 2005-07-01 | Mike Evans | 7136h | Operations |
| 28 | 2.2 | Observatory Operations |  | 892d | 2005-07-01 | 2008-12-01 | 0d |  | start no earlier than 2005-07-01 | Bruce Gillespie | 7136h | Operations |

| ID | WBS | Task | Type | Duration | Start | Finish | Predecessors | Complete | Remaining | Total slack | Free slack | Constraint | Resources | Work | Actual work | Cost | Text2 |
| --- | --- | --- | --- | --- | --- | --- | --- | --- | --- | --- | --- | --- | --- | --- | --- | --- | --- |
| 29 | 2.3 | **Data Processing** |  | 892d | 2005-07-01 | 2008-12-01 |  |  |  | 0d |  |  | Chris Stoughton | 14272h |  |  | Operations |
| 30 | 2.3.1 | **Data Processing Operations** |  | 892d | 2005-07-01 | 2008-12-01 |  |  |  | 0d |  |  | Chris Stoughton | 7136h |  |  | Operations |
| 31 | 2.3.1.1 | Legacy Data Processing |  | 892d | 2005-07-01 | 2008-12-01 |  |  |  | 0d |  | start no earlier than 2005-07-01 |  |  |  |  | Operations |
| 32 | 2.3.1.2 | SEGUE Data Processing |  | 892d | 2005-07-01 | 2008-12-01 |  |  |  | 0d |  | start no earlier than 2005-07-01 |  |  |  |  | Operations |
| 33 | 2.3.1.3 | Supernova Data Processing |  | 892d | 2005-07-01 | 2008-12-01 |  |  |  | 0d |  | start no earlier than 2005-07-01 |  |  |  |  | Operations |
| 34 | 2.3.2 | Software and Data Processing Support |  | 892d | 2005-07-01 | 2008-12-01 |  |  |  | 0d |  | start no earlier than 2005-07-01 |  |  |  |  | Operations |
| 35 | 2.4 | **Data Distribution** |  | 892d | 2005-07-01 | 2008-12-01 |  |  |  | 0d |  |  | Bill Boroski | 21408h |  |  | Operations |
| 36 | 2.4.1 | **Data Distribution Operations** |  | 892d | 2005-07-01 | 2008-12-01 |  |  |  | 0d |  |  | Brian Yanny | 7136h |  |  | Operations |
| 37 | 2.4.1.1 | Legacy Data Distribution |  | 892d | 2005-07-01 | 2008-12-01 |  |  |  | 0d |  | start no earlier than 2005-07-01 |  |  |  |  | Operations |
| 38 | 2.4.1.2 | SEGUE Data Distribution |  | 892d | 2005-07-01 | 2008-12-01 |  |  |  | 0d |  | start no earlier than 2005-07-01 |  |  |  |  | Operations |
| 39 | 2.4.1.3 | Supernova Data Distribution |  | 892d | 2005-07-01 | 2008-12-01 |  |  |  | 0d |  | start no earlier than 2005-07-01 |  |  |  |  | Operations |
| 40 | 2.4.2 | Data Archive Development and Support |  | 892d | 2005-07-01 | 2008-12-01 |  |  |  | 0d |  | start no earlier than 2005-07-01 | Alex Szalay | 7136h |  |  | Operations |
| 41 | 2.5 | **Survey Coordination** |  | 892d | 2005-07-01 | 2008-12-01 |  |  |  | 0d |  |  |  |  |  |  | Operations |
| 42 | 2.5.1 | Legacy Survey Coordination |  | 892d | 2005-07-01 | 2008-12-01 |  |  |  | 0d |  | start no earlier than 2005-07-01 |  |  |  |  | Operations |
| 43 | 2.5.2 | **SEGUE Survey Coordination** |  | 892d | 2005-07-01 | 2008-12-01 |  |  |  | 0d |  |  |  |  |  |  | Operations |
| 44 | 2.5.2.1 | Monitor new imaging and spectra as they arrive and adjust observing plan as necessary |  | 892d | 2005-07-01 | 2008-12-01 |  |  |  | 0d |  | start no earlier than 2005-07-01 |  |  |  |  | Operations |
| 45 | 2.5.2.2 | Develop monthly SEGUE observing plans |  | 892d | 2005-07-01 | 2008-12-01 |  |  |  | 0d |  | start no earlier than 2005-07-01 |  |  |  |  | Operations |
| 46 | 2.5.3 | Supernova Survey Coordination |  | 892d | 2005-07-01 | 2008-12-01 |  |  |  | 0d |  | start no earlier than 2005-07-01 |  |  |  |  | Operations |
| 47 | 2.6 | ARC Support for Survey Operations |  | 892d | 2005-07-01 | 2008-12-01 |  |  |  | 0d |  | start no earlier than 2005-07-01 | Mike Evans | 7136h |  |  | Operations |
| 48 | 3 | **New Development** |  | 269d? | 2004-11-15 A | 2005-12-07 |  | 2% | 263.98d? | 778d |  |  | Rich Kron | 192948h | 2655.21h | 14,700 |  |
| 49 | 3.1 | **SEGUE Project Development** |  | 269d? | 2004-11-15 | 2005-12-07 |  |  |  | 778d |  |  | Connie Rockosi; Brian Yanny | 4624h |  |  | SEGUE |
| 50 | 3.1.1 | **Segue Science Requirements** |  | 30d | 2004-11-15 | 2005-01-05 |  |  |  | 1017d |  |  |  | 320h |  |  | SEGUE |
| 51 | 3.1.1.1 | Develop SEGUE Science Requirements Document |  | 20d | 2004-11-15 | 2004-12-14 |  |  |  | 1017d | 0d |  | Connie Rockosi; Brian Yanny | 320h |  |  | SEGUE |
| 52 | 3.1.1.2 | Review and revision of SEGUE Science Requirements Document |  | 10d | 2004-12-15 | 2005-01-05 | 51 |  |  | 1017d | 0d |  |  |  |  |  | SEGUE |
| 53 | 3.1.1.3 | SEGUE Science Requirements Document approved by MC | milestone | 0d | 2005-01-05 | 2005-01-05 | 52 |  |  | 1017d |  |  |  |  |  |  | SEGUE |

| ID | WBS | Task | Type | Duration | Start | Finish | Predecessors | Total slack | Free slack | Text2 |
| --- | --- | --- | --- | --- | --- | --- | --- | --- | --- | --- |
| 54 | 3.1.2 | **SEGUE Survey Stategy** |  | 6d? | 2004-11-15 | 2004-11-22 |  | 1041d |  | SEGUE |
| 55 | 3.1.2.1 | Develop the baseline 3-year SEGUE observing plan, in prioritized order |  | 1d? | 2004-11-15 | 2004-11-15 |  | 1041d | 0d | SEGUE |
| 56 | 3.1.2.2 | Baseline SEGUE observing plan reviewed by MC, Head of Survey Coordination |  | 5d | 2004-11-16 | 2004-11-22 | 55 | 1041d | 0d | SEGUE |
| 57 | 3.1.2.3 | Baseline SEGUE observing plan approved | milestone | 0d | 2004-11-22 | 2004-11-22 | 56 | 1041d |  | SEGUE |
| 58 | 3.1.3 | **SEGUE Target Selection** |  | 2d? | 2004-11-15 | 2004-11-16 |  | 1045d |  | SEGUE |
| 59 | 3.1.3.1 | Formalize SEGUE target selection web page |  | 1d? | 2004-11-15 | 2004-11-15 |  | 1046d |  | SEGUE |
| 60 | 3.1.3.2 | **SEGUE Target Selection Code Changes** |  | 1d? | 2004-11-15 | 2004-11-15 |  | 1046d |  | SEGUE |
| 61 | 3.1.3.2.1 | Cool white dwarf numbers allowed to exceed (on rare occassions) 10/plate pair. |  | 1d? | 2004-11-15 | 2004-11-15 |  | 1046d | 0d | SEGUE |
| 62 | 3.1.3.2.2 | Incorporate proper motion catalog from AMNH/Shara et al. |  | 1d? | 2004-11-15 | 2004-11-15 |  | 1046d | 0d | SEGUE |
| 63 | 3.1.3.2.3 | SEGUE target selection code finished | milestone | 0d | 2004-11-15 | 2004-11-15 | 61, 62 | 1046d |  | SEGUE |
| 64 | 3.1.3.3 | **SEGUE Target Selection Technical Paper** |  | 1d? | 2004-11-15 | 2004-11-15 |  | 1045d |  | SEGUE |
| 65 | 3.1.3.3.1 | Write and publish SEGUE target selection paper |  | 1d? | 2004-11-15 | 2004-11-15 |  | 1045d | 0d | SEGUE |
| 66 | 3.1.3.3.2 | SEGUE target selection paper published | milestone | 0d | 2004-11-15 | 2004-11-15 |  | 1047d |  | SEGUE |
| 67 | 3.1.3.4 | **SEGUE Qualilty Assurance Program** |  | 1d? | 2004-11-16 | 2004-11-16 | 65 | 1045d |  | SEGUE |
| 68 | 3.1.3.4.1 | **SEGUE Imaging Quality Assurance** |  | 1d? | 2004-11-16 | 2004-11-16 |  | 1045d |  | SEGUE |
| 69 | 3.1.3.4.1.1 | Develop process for inspecting new SEGUE imaging data at APO |  | 1d? | 2004-11-16 | 2004-11-16 |  | 1045d | 0d | SEGUE |
| 70 | 3.1.3.4.1.2 | Develop process for inspecting new SEGUE imaging data in DP Factory |  | 1d? | 2004-11-16 | 2004-11-16 |  | 1045d | 0d | SEGUE |
| 71 | 3.1.3.4.1.3 | SEGUE imaging QA processes defined | milestone | 0d | 2004-11-16 | 2004-11-16 | 69, 70 | 1045d |  | SEGUE |
| 72 | 3.1.3.4.2 | **SEGUE Spectra Quality Assurance** |  | 1d? | 2004-11-16 | 2004-11-16 |  | 1045d |  | SEGUE |
| 73 | 3.1.3.4.2.1 | Develop process for inspecting new spectra in each of the 11 target selection categories |  | 1d? | 2004-11-16 | 2004-11-16 |  | 1045d | 0d | SEGUE |
| 74 | 3.1.3.4.2.2 | Develop process for monitoring overall SEGUE plate qualilty on "next-day" basis during operations |  | 1d? | 2004-11-16 | 2004-11-16 |  | 1045d | 0d | SEGUE |
| 75 | 3.1.3.4.2.3 | SEGUE specta QA processes defined | milestone | 0d | 2004-11-16 | 2004-11-16 | 73, 74 | 1045d |  | SEGUE |
| 76 | 3.1.4 | **Refined Derived-Parameters Determinations and Theory/Simulations** |  | 1d? | 2004-11-15 | 2004-11-15 |  | 1046d |  | SEGUE |
| 77 | 3.1.4.1 | Compute and verify photometric parallax info |  | 1d? | 2004-11-15 | 2004-11-15 |  | 1046d |  | SEGUE |
| 78 | 3.1.4.2 | Determine effects of zero-point errors in photometry and variations across the sky |  | 1d? | 2004-11-15 | 2004-11-15 |  | 1046d |  | SEGUE |
| 79 | 3.1.4.3 | Determine errors in Teff, log, g, etc, with respect to F subdwarf model atmospheres |  | 1d? | 2004-11-15 | 2004-11-15 |  | 1046d |  | SEGUE |
| 80 | 3.1.4.4 | Quantify how the determinations of velocity and log(g) scale with S/N |  | 1d? | 2004-11-15 | 2004-11-15 |  | 1046d |  | SEGUE |
| 81 | 3.1.4.5 | Determine the S/N for a star of fiducial flux and exposure time |  | 1d? | 2004-11-15 | 2004-11-15 |  | 1046d |  | SEGUE |
| 82 | 3.1.4.6 | Define the set of model atmospheres, known star templates and isochrones that will be used and verify their self-consistency. |  | 1d? | 2004-11-15 | 2004-11-15 |  | 1046d |  | SEGUE |
| 83 | 3.1.4.7 | Define a method to quantify how well SEGUE will test the distribution of dark matter |  | 1d? | 2004-11-15 | 2004-11-15 |  | 1046d |  | SEGUE |
| 84 | 3.1.4.8 | Determine the appropriate number of sky fibers per faint plate. |  | 1d? | 2004-11-15 | 2004-11-15 |  | 1046d |  | SEGUE |
| 85 | 3.1.4.9 | Develop new models of the galaxy with kinematics in order to compare SEGUE scan data and radial velocities. |  | 1d? | 2004-11-15 | 2004-11-15 |  | 1046d |  | SEGUE |

| ID | WBS | Task | Type | Duration | Start | Finish | Predecessors | Total slack | Free slack | Text2 |
| --- | --- | --- | --- | --- | --- | --- | --- | --- | --- | --- |
| 86 | 3.1.5 | **Calibrations/Catalogs of Spectroscopy of Star of Known Metalicity** |  | 4d? | 2004-11-15 | 2004-11-18 |  | 1043d |  | SEGUE |
| 87 | 3.1.5.1 | Design globular cluster and open cluster plates at high S/N to assist with star catalog assembly |  | 1d? | 2004-11-15 | 2004-11-15 |  | 1043d | 0d | SEGUE |
| 88 | 3.1.5.2 | Observe SEGUE globular and open cluster plates |  | 1d? | 2004-11-16 | 2004-11-16 | 87 | 1043d | 0d | SEGUE |
| 89 | 3.1.5.3 | Assemble catalog of stars of known metalicity, gravity, Teff for use in refining atmosperic parameter measuring code. |  | 1d? | 2004-11-17 | 2004-11-17 | 88 | 1043d | 0d | SEGUE |
| 90 | 3.1.5.4 | SEGUE star catalog assembled | milestone | 0d | 2004-11-17 | 2004-11-17 | 89 | 1043d | 0d | SEGUE |
| 91 | 3.1.5.5 | Incorporate data from SEGUE globular and open cluster plates into processing algorithms. |  | 1d? | 2004-11-18 | 2004-11-18 | 90 | 1043d |  | SEGUE |
| 92 | 3.1.6 | **SEGUE Spectroscopic Data Processing Pipelines** |  | 269d? | 2004-11-15 | 2005-12-07 |  | 778d |  | SEGUE |
| 93 | 3.1.6.1 | **SEGUE Spectro-1D Pipeline** |  | 2d? | 2004-11-15 | 2004-11-16 |  | 1045d |  | SEGUE |
| 94 | 3.1.6.1.1 | Incorporate most recent ELODIE catalog of known star templates into SEGUE Spectro-1D |  | 1d? | 2004-11-15 | 2004-11-15 |  | 1046d |  | SEGUE |
| 95 | 3.1.6.1.2 | Prune ELODIE templates to clean zero-pointed list |  | 1d? | 2004-11-15 | 2004-11-15 |  | 1046d |  | SEGUE |
| 96 | 3.1.6.1.3 | Generate list of new data model outputs from ELODIE matches and diagnose quality of fit |  | 1d? | 2004-11-15 | 2004-11-15 |  | 1046d |  | SEGUE |
| 97 | 3.1.6.1.4 | Perform regression tests on modified SEGUE Spectro-1D pipeline and verify production-readiness |  | 1d? | 2004-11-15 | 2004-11-15 |  | 1045d | 0d | SEGUE |
| 98 | 3.1.6.1.5 | SEGUE Spectro-1D pipeline development complete |  | 1d? | 2004-11-16 | 2004-11-16 | 97 | 1045d |  | SEGUE |
| 99 | 3.1.6.2 | **SEGUE Spectro-2D Pipeline** |  | 1d? | 2004-11-15 | 2004-11-15 |  | 1046d |  | SEGUE |
| 100 | 3.1.6.2.1 | Generate Spectro-2D outputs that are co-added and wavelength calibrated |  | 1d? | 2004-11-15 | 2004-11-15 |  | 1046d | 0d | SEGUE |
| 101 | 3.1.6.2.2 | Modify Spectro-2D pipeline to output continuum subtracted spectra |  | 1d? | 2004-11-15 | 2004-11-15 |  | 1046d | 0d | SEGUE |
| 102 | 3.1.6.2.3 | Modify Spectro-2D to output non-sky subtracted spectra. |  | 1d? | 2004-11-15 | 2004-11-15 |  | 1046d | 0d | SEGUE |
| 103 | 3.1.6.2.4 | Make modifications to Lick indices and documentation for them |  | 1d? | 2004-11-15 | 2004-11-15 |  | 1046d | 0d | SEGUE |
| 104 | 3.1.6.2.5 | Modify Spectro-2D to include rebinning or smoothing options for spectra vs. S/N |  | 1d? | 2004-11-15 | 2004-11-15 |  | 1046d | 0d | SEGUE |
| 105 | 3.1.6.2.6 | SEGUE Spectro-2D pipeline development complete | milestone | 0d | 2004-11-15 | 2004-11-15 | 100, 101, 102, 103, 104 | 1046d |  | SEGUE |
| 106 | 3.1.6.3 | **SEGUE Stellar Atmosphere Parameter Code** |  | 1d? | 2004-11-15 | 2004-11-15 |  | 1046d |  | SEGUE |
| 107 | 3.1.6.3.1 | Determine Teff, RV, chi-sq, log(g), etc. for each star, with errors on quantities |  | 1d? | 2004-11-15 | 2004-11-15 |  | 1046d |  | SEGUE |
| 108 | 3.1.6.4 | **Incorporate Proper Motions into Stellar Parameters** |  | 1d? | 2004-11-15 | 2004-11-15 |  | 1046d |  | SEGUE |
| 109 | 3.1.6.4.1 | Incorporate proper motions (USNO-B2.0) into included stellar parameters and derived distance, space velocities, with errors |  | 1d? | 2004-11-15 | 2004-11-15 |  | 1046d | 0d | SEGUE |
| 110 | 3.1.6.4.2 | Proper motions incorporated into stellar parameters | milestone | 0d | 2004-11-15 | 2004-11-15 | 109 | 1046d |  | SEGUE |
| 111 | 3.1.6.4.3 | Develop methodology and process |  | 1d? | 2004-11-15 | 2004-11-15 |  | 1046d |  | SEGUE |

| ID | WBS | Task | Type | Duration | Start | Finish | Predecessors | Total slack | Free slack | Constraint | Text2 |
| --- | --- | --- | --- | --- | --- | --- | --- | --- | --- | --- | --- |
| 112 | 3.1.6.5 | **SEGUE Spectro Parameter Flat File Format** |  | 1d? | 2004-11-15 | 2004-11-15 |  | 1046d |  |  | SEGUE |
| 113 | 3.1.6.5.1 | Develop process for packaging new spectro parameters into uniform flat file format for collaboration (Year 1) |  | 1d? | 2004-11-15 | 2004-11-15 |  | 1046d | 0d |  | SEGUE |
| 114 | 3.1.6.5.2 | Process developed for packaging new spectro parameters into flat files | milestone | 0d | 2004-11-15 | 2004-11-15 | 113 | 1046d |  |  | SEGUE |
| 115 | 3.1.6.6 | **SEGUE ????? Pipeline** |  | 1d? | 2004-11-15 | 2004-11-15 |  | 1046d |  |  | SEGUE |
| 116 | 3.1.6.6.1 | Develop pipeline for computing stellar atmosphere parameters, incorporating proper motions and generating flat files |  | 1d? | 2004-11-15 | 2004-11-15 |  | 1046d |  |  | SEGUE |
| 117 | 3.1.6.6.2 | Test ???? Pipeline and verify production-readiness |  | 1d? | 2004-11-15 | 2004-11-15 |  | 1046d |  |  | SEGUE |
| 118 | 3.1.6.6.3 | Incorporate ???? Pipeline into SEGUE data processing production operation |  | 1d? | 2004-11-15 | 2004-11-15 |  | 1046d | 0d |  | SEGUE |
| 119 | 3.1.6.6.4 | SEGUE ??? Pipeline development complete | milestone | 0d | 2004-11-15 | 2004-11-15 | 118 | 1046d |  |  | SEGUE |
| 120 | 3.1.6.7 | **SEGUE Database Development** |  | 1d? | 2004-11-15 | 2004-11-15 |  | 1046d |  |  | SEGUE |
| 121 | 3.1.6.7.1 | Produce DAS-style flat-fields for SEGUE outputs (imaging and spectra) |  | 1d? | 2004-11-15 | 2004-11-15 |  | 1046d |  |  | SEGUE |
| 122 | 3.1.6.7.2 | Produce CAS-style indexed look-up with new SEGUE parameters included. |  | 1d? | 2004-11-15 | 2004-11-15 |  | 1046d |  |  | SEGUE |
| 123 | 3.1.6.7.3 | Incorporate other Spectro-2D v5 data model changes into CAS data releases |  | 1d? | 2004-11-15 | 2004-11-15 |  | 1046d |  |  | SEGUE |
| 124 | 3.1.6.8 | **Photo Pipeline Modifications for Crowded Field Data** |  | 3d? | 2005-12-05 | 2005-12-07 |  | 778d |  |  | SEGUE |
| 125 | 3.1.6.8.1 | Explore photometry error systematics in crowded field data |  | 1d? | 2005-12-05 | 2005-12-05 |  | 778d | 0d | start no earlier than 2005-12-05 | SEGUE |
| 126 | 3.1.6.8.2 | DAOPHOT/DoPhot-style PSF only (no galaxies) fitting with PHOTO, to reduce load on photo deblender in crowded fields. |  | 1d? | 2005-12-06 | 2005-12-06 | 125 | 778d | 0d |  | SEGUE |
| 127 | 3.1.6.8.3 | Perform regression tests on modified Photo and verify production-readiness |  | 1d? | 2005-12-07 | 2005-12-07 | 126 | 778d | 0d |  | SEGUE |
| 128 | 3.1.6.8.4 | Photo pipeline modifications done | milestone | 0d | 2005-12-07 | 2005-12-07 | 127 | 778d |  |  | SEGUE |
| 129 | 3.1.6.9 | **Very-Low-Latitude Target Selection and Data Processing Analysis** |  | 1d? | 2004-11-15 | 2004-11-15 |  | 1046d |  |  | SEGUE |
| 130 | 3.1.6.9.1 | Generate list of suggested cross-scans that could be provided to Survey Coordinator when asked. |  | 1d? | 2004-11-15 | 2004-11-15 |  | 1046d | 0d |  | SEGUE |
| 131 | 3.1.6.9.2 | Develop and implement target selection algorithm for open cluster plates |  | 1d? | 2004-11-15 | 2004-11-15 |  | 1046d | 0d |  | SEGUE |
| 132 | 3.1.6.9.3 | Develop and implement target selection algorithm for Sagitarrius stream plates |  | 1d? | 2004-11-15 | 2004-11-15 |  | 1046d | 0d |  | SEGUE |
| 133 | 3.1.6.9.4 | Very-low-latitude target selection algorithms and analysis complete | milestone | 0d | 2004-11-15 | 2004-11-15 | 130, 131, 132 | 1046d |  |  | SEGUE |
| 134 | 3.1.6.10 | **SEGUE Stellar Parameter Technical Paper** |  | 1d? | 2004-11-15 | 2004-11-15 |  | 1046d |  |  | SEGUE |
| 135 | 3.1.6.10.1 | Write and publish paper on SEGUE stellar parameter techniques |  | 1d? | 2004-11-15 | 2004-11-15 |  | 1046d | 0d |  | SEGUE |
| 136 | 3.1.6.10.2 | SEGUE stellar parameter technical paper published | milestone | 0d | 2004-11-15 | 2004-11-15 | 135 | 1046d |  |  | SEGUE |

| ID | WBS | Task | Type | Duration | Start | Finish | Predecessors | Total slack | Free slack | Resources | Work | Text2 |
| --- | --- | --- | --- | --- | --- | --- | --- | --- | --- | --- | --- | --- |
| 137 | 3.2 | **Supernova Project Development** |  | 181d | 2004-11-15 | 2005-08-05 |  | 115d |  | Josh Frieman | 168592h | Supernova |
| 138 | 3.2.1 | **SN Survey Planning and Coordination** |  | 160d | 2004-11-15 | 2005-07-07 |  | 115d |  | Josh Frieman | 53196h | Supernova |
| 139 | 3.2.1.1 | **SN Science Requirements Document** |  | 58d | 2004-11-15 | 2005-02-14 |  | 989d |  | Josh Frieman | 7288h | Supernova |
| 140 | 3.2.1.1.1 | Develop SN Science Requirements Document |  | 53d | 2004-11-15 | 2005-02-07 |  | 989d | 0d | Josh Frieman; Hubert Lampeitl; Ben Dilday; Rick Kessler; Douglas Tucker; Juan Estrada; John Marriner; Fritz DeJongh; Andy Becker | 3816h | Supernova |
| 141 | 3.2.1.1.2 | Develop requirements on accuracy of stripe 82 template photometry |  | 53d | 2004-11-15 | 2005-02-07 |  | 989d | 0d | Josh Frieman; Hubert Lampeitl; Ben Dilday; Rick Kessler; John Marriner; Douglas Tucker; Juan Estrada | 2968h | Supernova |
| 142 | 3.2.1.1.3 | Review of SN Science Requirements Document |  | 5d | 2005-02-08 | 2005-02-14 | 140, 141 | 989d | 0d | Mgmt Committee | 40h | Supernova |
| 143 | 3.2.1.1.4 | SN Science Requirements Document approved by MC | milestone | 0d | 2005-02-14 | 2005-02-14 | 142 | 989d |  | Mgmt Committee |  | Supernova |
| 144 | 3.2.1.2 | **SN Quality Assurance Plan** |  | 107.5d | 2004-11-15 | 2005-04-25 |  | 939.5d |  | Rick Kessler | 7860h | Supernova |
| 145 | 3.2.1.2.1 | Develop QA plan for on-mountain reductions |  | 95d | 2004-11-15 | 2005-04-06 |  | 939.5d | 0d | Rick Kessler; Jen Adelman; Fritz DeJongh; Hubert Lampeitl | 3040h | Supernova |
| 146 | 3.2.1.2.2 | Develop QA plan for off-mountain reductions |  | 95d | 2004-11-15 | 2005-04-06 |  | 939.5d | 0d | Rick Kessler; Jen Adelman; Fritz DeJongh; Hubert Lampeitl | 3040h | Supernova |
| 147 | 3.2.1.2.3 | Develop QA plan for data loaded into SN Public Archive |  | 31.67d | 2004-11-15 | 2005-01-07 |  | 1002.83d | 63.33d | Chris Stoughton; John Marriner; Andy Becker | 760h | Supernova |
| 148 | 3.2.1.2.4 | Assemble QA sub-plans into single QA document for SN Project |  | 5d | 2005-04-07 | 2005-04-13 | 145, 146, 147 | 939.5d | 0d | Rick Kessler | 40h | Supernova |
| 149 | 3.2.1.2.5 | Review of SN Quality Assurance plan by affected parties |  | 7.5d | 2005-04-14 | 2005-04-25 | 148 | 939.5d | 0d | Mgmt Committee; Scot Kleinman | 120h | Supernova |
| 150 | 3.2.1.2.6 | SN Quality Assurance plan approved by MC | milestone | 0d | 2005-04-25 | 2005-04-25 | 149 | 939.5d |  | Mgmt Committee |  | Supernova |
| 151 | 3.2.1.3 | **SN Software Requirements Document** |  | 55d | 2004-11-15 | 2005-02-09 |  | 992d |  | Josh Frieman | 6160h | Supernova |
| 152 | 3.2.1.3.1 | Develop PHOTO software requirements (SN) |  | 30d | 2004-11-15 | 2005-01-05 |  | 1012d | 20d | Jen Adelman; Rick Kessler; Ben Dilday; Fritz DeJongh; Andy Becker | 1200h | Supernova |
| 153 | 3.2.1.3.2 | Develop Frame Subtraction pipeline requirements (SN) |  | 50d | 2004-11-15 | 2005-02-02 |  | 992d | 0d | Fritz DeJongh; Andy Becker | 800h | Supernova |
| 154 | 3.2.1.3.3 | Develop doObjects software requirements (SN) |  | 50d | 2004-11-15 | 2005-02-02 |  | 992d | 0d | Hubert Lampeitl | 400h | Supernova |
| 155 | 3.2.1.3.4 | Develop hand-scan software requirements (SN) |  | 33.33d | 2004-11-15 | 2005-01-11 |  | 1008.67d | 16.67d | Hubert Lampeitl; Rick Kessler; Andy Becker | 800h | Supernova |
| 156 | 3.2.1.3.5 | Develop requirements for candidate webserver, including color selection (SN) |  | 33.33d | 2004-11-15 | 2005-01-11 |  | 1008.67d | 16.67d | Josh Frieman; John Marriner; Andy Becker | 800h | Supernova |
| 157 | 3.2.1.3.6 | Develop requirements for follow-up obervations software and selection criteria (SN) |  | 50d | 2004-11-15 | 2005-02-02 |  | 992d | 0d | John Marriner; Juan Estrada | 800h | Supernova |
| 158 | 3.2.1.3.7 | Develop requirements for public web server |  | 33.33d | 2004-11-15 | 2005-01-11 |  | 1008.67d | 16.67d | Josh Frieman; John Marriner; Andy Becker | 800h | Supernova |
| 159 | 3.2.1.3.8 | Review of software requirements document |  | 5d | 2005-02-03 | 2005-02-09 | 152, 153, 154, 155, 156, 157, 158 | 992d | 0d | Mgmt Committee; Steve Kent; Robert Lupton | 120h | Supernova |
| 160 | 3.2.1.3.9 | Software requirements document approved by MC | milestone | 0d | 2005-02-09 | 2005-02-09 | 159 | 992d |  | Mgmt Committee |  | Supernova |

| ID | WBS | Task | Type | Duration | Start | Finish | Predecessors | Total slack | Free slack | Constraint | Resources | Work | Text2 |
| --- | --- | --- | --- | --- | --- | --- | --- | --- | --- | --- | --- | --- | --- |
| 161 | 3.2.1.4 | **SN Proposal for Bright-time Operations in 2005-07** |  | 70d | 2004-11-15 | 2005-03-02 |  | 115d |  |  | John Marriner | 4280h | Supernova |
| 162 | 3.2.1.4.1 | Evaluate bright-time data from Fall 2004 and earlier |  | 50d | 2004-11-15 | 2005-02-02 |  | 977d | 0d |  | John Marriner; Andy Becker; Fritz DeJongh; Hubert Lampeitl; Ben Dilday; Rick Kessler | 2400h | Supernova |
| 163 | 3.2.1.4.2 | Review 2.5m schedule w/ Legacy and SEGUE Teams, Observers, and MC |  | 20d | 2005-02-03 | 2005-03-02 | 162 | 977d |  |  | Rich Kron; John Marriner; Josh Frieman; Brian Yanny; Connie Rockosi; Scot Kleinman; R. French Leger | 1120h | Supernova |
| 164 | 3.2.1.4.3 | Develop proposal for bright-time operations in 2005-07 |  | 10d | 2004-11-15 | 2004-11-30 |  | 115d | 0d |  | John Marriner; Fritz DeJongh | 160h | Supernova |
| 165 | 3.2.1.4.4 | Review of SN bright-time operations proposal by observers, Survey Coordinator, MC |  | 5d | 2004-12-01 | 2004-12-07 | 164 | 115d | 0d |  | Mgmt Committee | 40h | Supernova |
| 166 | 3.2.1.4.5 | SN bright-time operations proposal approved by MC | milestone | 0d | 2004-12-07 | 2004-12-07 | 165 | 115d | 0d |  |  |  | Supernova |
| 167 | 3.2.1.5 | **2.5m SN Observing Plans** |  | 25d | 2004-12-08 | 2005-01-19 |  | 115d |  |  | Steve Kent | 720h | Supernova |
| 168 | 3.2.1.5.1 | Develop SN observing plans/protocols in coord with survey mgmt |  | 20d | 2004-12-08 | 2005-01-12 | 166 | 115d | 0d |  | Josh Frieman; Steve Kent; Scot Kleinman | 480h | Supernova |
| 169 | 3.2.1.5.2 | Review of SN observing plan by MC |  | 5d | 2005-01-13 | 2005-01-19 | 168 | 115d | 0d | finish no later than 2005-06-30 | Mgmt Committee | 40h | Supernova |
| 170 | 3.2.1.5.3 | SN Observing Plan approved by MC | milestone | 0d | 2005-01-19 | 2005-01-19 | 169 | 1007d |  |  | Mgmt Committee |  | Supernova |
| 171 | 3.2.1.6 | **SN Project Operations Plan** |  | 65d | 2004-11-15 | 2005-02-23 |  | 982d |  |  | Fritz DeJongh | 3040h | Supernova |
| 172 | 3.2.1.6.1 | Develop SN operations plan with data flow diagrams |  | 60d | 2004-11-15 | 2005-02-16 |  | 982d | 0d |  | Josh Frieman; John Marriner; Rick Kessler; Fritz DeJongh; Juan Estrada | 2400h | Supernova |
| 173 | 3.2.1.6.2 | Review of SN Operations Plan by observers, Survey Coordinator, MC |  | 5d | 2005-02-17 | 2005-02-23 | 172 | 982d | 0d |  | Scot Kleinman; Steve Kent; Mgmt Committee | 120h | Supernova |
| 174 | 3.2.1.6.3 | SN Operations Plan approved by MC | milestone | 0d | 2005-02-23 | 2005-02-23 | 173 | 982d |  |  | Mgmt Committee |  | Supernova |
| 175 | 3.2.1.7 | **SN Software Development Plan** |  | 70d | 2004-11-15 | 2005-03-02 |  | 977d |  |  | Fritz DeJongh | 4000h | Supernova |
| 176 | 3.2.1.7.1 | Develop software development plan |  | 60d | 2004-11-15 | 2005-02-16 |  | 977d | 0d |  | Josh Frieman; Fritz DeJongh; John Marriner; Rick Kessler; Ben Dilday; Jen Adelman; Andy Becker | 3360h | Supernova |
| 177 | 3.2.1.7.2 | Review of SN software development plan by MC |  | 10d | 2005-02-17 | 2005-03-02 | 176 | 977d | 0d |  | Mgmt Committee | 80h | Supernova |
| 178 | 3.2.1.7.3 | Initial software development plan approved by MC | milestone | 0d | 2005-03-02 | 2005-03-02 | 177 | 977d |  |  | Mgmt Committee |  | Supernova |
| 179 | 3.2.1.8 | **SN On-mountain Computer Hardware Plan** |  | 92d | 2004-11-15 | 2005-04-01 |  | 884d |  |  | Fritz DeJongh | 2568h | Supernova |
| 180 | 3.2.1.8.1 | Determine computing requirements for on-mountain SN data reduction system |  | 30d | 2004-11-15 | 2005-01-05 |  | 884d | 0d |  | Fritz DeJongh; Rick Kessler | 480h | Supernova |
| 181 | 3.2.1.8.2 | Benchmark machines for APO cluster |  | 33d | 2005-01-06 | 2005-02-21 | 180 | 884d | 0d |  | Rick Kessler; Fritz DeJongh; JEA | 792h | Supernova |
| 182 | 3.2.1.8.3 | Assess impact of SN computing requirements on APO infrastructure |  | 5d | 2005-02-22 | 2005-02-28 | 181 | 884d | 0d |  | Fritz DeJongh; Craig Loomis | 80h | Supernova |
| 183 | 3.2.1.8.4 | Develop computer hardware plan and cost est for SN on-mountain data reduction ops |  | 13.33d | 2005-01-06 | 2005-01-25 | 180 | 929.67d | 44.67d |  | Fritz DeJongh; Rick Kessler; Andy Becker | 320h | Supernova |
| 184 | 3.2.1.8.5 | Review of SN on-mountain computer hardware plan by APO & FNAL staff, MC |  | 4d | 2005-03-29 | 2005-04-01 | 183, 189SS | 885d | 0d |  | Steve Kent; Mgmt Committee; Josh Frieman; John Marriner; Craig Loomis | 160h | Supernova |
| 185 | 3.2.1.8.6 | SN On-mountain Computer Hardware Plan approved by MC | milestone | 0d | 2005-04-01 | 2005-04-01 | 184 | 885d | 0d |  | Mgmt Committee |  | Supernova |

| ID | WBS | Task | Type | Duration | Start | Finish | Predecessors | Total slack | Free slack | Constraint | Resources | Work | Text2 |
| --- | --- | --- | --- | --- | --- | --- | --- | --- | --- | --- | --- | --- | --- |
| 186 | 3.2.1.9 | **APO Computer Room Cooling Upgrade Plan** |  | 30d | 2005-02-22 | 2005-04-04 |  | 884d |  |  | Bruce Gillespie | 600h | Supernova |
| 187 | 3.2.1.9.1 | Develop APO computer room cooling upgrade requirements |  | 5d | 2005-02-22 | 2005-02-28 | 182SS | 884d | 0d |  | Fritz DeJongh; Craig Loomis; Mark Klaene | 120h | Supernova |
| 188 | 3.2.1.9.2 | Develop APO computer room cooling upgrade plan with cost estimate |  | 20d | 2005-03-01 | 2005-03-28 | 187 | 884d | 0d |  | Mark Klaene | 160h | Supernova |
| 189 | 3.2.1.9.3 | Review of APO computer room cooling upgrade plan |  | 5d | 2005-03-29 | 2005-04-04 | 188 | 884d | 0d |  | Bruce Gillespie; Mgmt Committee | 80h | Supernova |
| 190 | 3.2.1.9.4 | APO computer room cooling upgrade plan approved | milestone | 0d | 2005-04-04 | 2005-04-04 | 189 | 884d | 0d |  | Mgmt Committee |  | Supernova |
| 191 | 3.2.1.10 | **SN Off-mountain Computer Hardware Plan** |  | 81d | 2004-11-15 | 2005-03-17 |  | 916d |  |  | Hubert Lampeitl | 1984h | Supernova |
| 192 | 3.2.1.10.1 | Determine computing requirements for off-mountain SN data reduction system |  | 56d | 2004-11-15 | 2005-02-10 |  | 916d | 0d |  | Hubert Lampeitl; Fritz DeJongh | 896h | Supernova |
| 193 | 3.2.1.10.2 | Assess impact of SN computing requirements on FNAL/FCC infrastructure |  | 5d | 2005-02-11 | 2005-02-17 | 192 | 916d | 0d |  | Steve Kent; Chris Stoughton | 80h | Supernova |
| 194 | 3.2.1.10.3 | Develop computer hardware plan for SN off-mountain data reduction operations |  | 15d | 2005-02-18 | 2005-03-10 | 193 | 916d | 0d |  | Hubert Lampeitl; Fritz DeJongh | 240h | Supernova |
| 195 | 3.2.1.10.4 | Review of SN off-mountain computer hardware plan by FNAL staff, MC |  | 5d | 2005-03-11 | 2005-03-17 | 194 | 966d | 0d |  | Mgmt Committee; Steve Kent; Chris Stoughton | 120h | Supernova |
| 196 | 3.2.1.10.5 | SN Off-mountain Computer Hardware Plan approved by MC | milestone | 0d | 2005-03-17 | 2005-03-17 | 195 | 966d |  |  |  |  | Supernova |
| 197 | 3.2.1.11 | **SN Database Development Plan** |  | 35d | 2005-02-03 | 2005-03-23 |  | 912d |  |  | Hubert Lampeitl | 1360h | Supernova |
| 198 | 3.2.1.11.1 | Develop requirements for SN databases (loading, hosting, maintaining, etc.) |  | 15d | 2005-02-03 | 2005-02-23 | 217 | 912d | 0d |  | Hubert Lampeitl; Ben Dilday; John Marriner; Rick Kessler | 480h | Supernova |
| 199 | 3.2.1.11.2 | Determine compute resources at Fermilab to host SN databases |  | 15d | 2005-02-24 | 2005-03-16 | 194FF, 198 | 912d | 0d |  | Hubert Lampeitl; Ben Dilday | 240h | Supernova |
| 200 | 3.2.1.11.3 | Develop plan for hosting SN databases at Fermilab |  | 15d | 2005-02-24 | 2005-03-16 | 199SS | 912d | 0d |  | Hubert Lampeitl; Ben Dilday | 240h | Supernova |
| 201 | 3.2.1.11.4 | Review of SN database plan by Fermilab, MC |  | 5d | 2005-03-17 | 2005-03-23 | 200 | 912d | 0d |  | Mgmt Committee; Steve Kent; Chris Stoughton | 120h | Supernova |
| 202 | 3.2.1.11.5 | SN database plan approved. | milestone | 0d | 2005-03-23 | 2005-03-23 | 201 | 912d | 0d |  |  |  | Supernova |
| 203 | 3.2.1.12 | **SN Candidate Rapid Dissemination Plan** |  | 60d | 2004-11-15 | 2005-02-16 |  | 987d |  |  | John Marriner | 960h | Supernova |
| 204 | 3.2.1.12.1 | Develop plan for rapid dissemination of SN candidates to the community |  | 60d | 2004-11-15 | 2005-02-16 |  | 987d | 0d |  | John Marriner | 480h | Supernova |
| 205 | 3.2.1.12.2 | Rapid dissemination plan approved by SN Project Team Leaders | milestone | 0d | 2005-02-16 | 2005-02-16 | 204 | 987d |  |  | Josh Frieman; Craig Hogan |  | Supernova |
| 206 | 3.2.1.13 | **Coordination of Follow-up Observations** |  | 160d | 2004-11-15 | 2005-07-07 |  | 887d |  |  | Josh Frieman | 9936h | Supernova |
| 207 | 3.2.1.13.1 | Compose and submit observing proposals |  | 43d | 2005-01-05 | 2005-03-04 |  | 975d |  | start no earlier than 2005-01-05 | Josh Frieman; John Marriner; Juan Estrada | 1032h | Supernova |
| 208 | 3.2.1.13.2 | Develop collaboration to carry out follow-up on ARC and non-ARC telescopes |  | 160d | 2004-11-15 | 2005-07-07 |  | 887d |  |  | Josh Frieman; John Marriner; Juan Estrada | 3840h | Supernova |
| 209 | 3.2.1.13.3 | Coordinate with collaborators submitting observer proposals |  | 43d | 2005-01-05 | 2005-03-04 |  | 975d |  | start no earlier than 2005-01-05 | Josh Frieman; John Marriner; Juan Estrada | 1032h | Supernova |
| 210 | 3.2.1.13.4 | Develop priorities for different follow-up telescopes |  | 43d | 2005-01-05 | 2005-03-04 |  | 975d |  | start no earlier than 2005-01-05 | Josh Frieman; John Marriner; Juan Estrada | 1032h | Supernova |
| 211 | 3.2.1.13.5 | Develop dissemination procedures for candidates for follow-up observers/teams |  | 43d | 2005-01-05 | 2005-03-04 |  | 975d |  | start no earlier than 2005-01-05 | Josh Frieman; John Marriner; Juan Estrada | 1032h | Supernova |
| 212 | 3.2.1.13.6 | Develop plan for coordinating follow-up information received from collaborators |  | 43d | 2005-01-05 | 2005-03-04 |  | 975d |  | start no earlier than 2005-01-05 | John Marriner; Juan Estrada | 688h | Supernova |

| ID | WBS | Task | Type | Duration | Start | Finish | Predecessors | Total slack | Free slack | Constraint | Resources | Work | Baseline cost | Text2 |
| --- | --- | --- | --- | --- | --- | --- | --- | --- | --- | --- | --- | --- | --- | --- |
| 213 | 3.2.1.14 | **SN Public Dissemination Plan** |  | 50d | 2004-11-15 | 2005-02-02 |  | 912d |  |  | Chris Stoughton | 1160h |  | Supernova |
| 214 | 3.2.1.14.1 | Develop plan for timely public dissemination of SN data (corrected frames and catalogs) |  | 20d | 2004-11-15 | 2004-12-14 |  | 937d | 25d |  | Chris Stoughton; Hubert Lampeitl | 320h |  | Supernova |
| 215 | 3.2.1.14.2 | Develop computer hardware plan and cost estimate for SN public data archive |  | 45d | 2004-11-15 | 2005-01-26 | 214FF | 912d | 0d |  | Chris Stoughton | 360h |  | Supernova |
| 216 | 3.2.1.14.3 | Review of SN public dissemination plan by affected parties |  | 5d | 2005-01-27 | 2005-02-02 | 215 | 912d | 0d |  | Mgmt Committee; Steve Kent | 80h |  | Supernova |
| 217 | 3.2.1.14.4 | SN Public Dissemination Plan approved by MC | milestone | 0d | 2005-02-02 | 2005-02-02 | 216 | 912d | 0d |  |  |  |  | Supernova |
| 218 | 3.2.2 | **SN Project Computing Hardware Implementation** |  | 96d | 2005-03-24 | 2005-08-05 |  | 866d |  |  | Josh Frieman | 6424h |  | Supernova |
| 219 | 3.2.2.1 | **APO Computer Room Cooling Upgrade** |  | 83d | 2005-04-05 | 2005-07-29 |  | 871d |  |  | Bruce Gillespie | 1304h |  | Supernova |
| 220 | 3.2.2.1.1 | Prepare RFQ for APO computer room upgrade based on approved upgrade plan |  | 15d | 2005-04-05 | 2005-04-25 | 185, 190 | 884d | 0d |  | Mark Klaene | 120h |  | Supernova |
| 221 | 3.2.2.1.2 | RFQ for APO computer room upgrade out for bids |  | 15d | 2005-04-26 | 2005-05-16 | 220 | 884d | 0d |  | Mark Klaene | 120h |  | Supernova |
| 222 | 3.2.2.1.3 | Bids due for APO computer room upgrade | milestone | 0d | 2005-05-16 | 2005-05-16 | 221 | 884d | 0d |  |  |  |  | Supernova |
| 223 | 3.2.2.1.4 | Review bids and award contract for APO computer room upgrade |  | 5d | 2005-05-17 | 2005-05-23 | 222 | 884d | 18d |  | Mark Klaene; Bruce Gillespie; Josh Frieman; Mgmt Committee | 160h |  | Supernova |
| 224 | 3.2.2.1.5 | APO computer room upgrade work by contractor |  | 20d | 2005-06-20 | 2005-07-15 | 223 | 866d | 0d | start no earlier than 2005-06-20 | Contractor | 160h |  | Supernova |
| 225 | 3.2.2.1.6 | APO computer room cooling upgrade finished | milestone | 0d | 2005-07-15 | 2005-07-15 | 224 | 866d | 0d |  |  |  |  | Supernova |
| 226 | 3.2.2.1.7 | APO computer room cooling upgrade punchlist work by contractor |  | 10d | 2005-07-18 | 2005-07-29 | 225 | 871d | 0d |  | Contractor | 80h |  | Supernova |
| 227 | 3.2.2.1.8 | APO computer room cooling upgrade punchlist work complete | milestone | 0d | 2005-07-29 | 2005-07-29 | 226 | 871d |  |  |  |  |  | Supernova |
| 228 | 3.2.2.2 | **SN On-mountain Computer Hardware Implementation** |  | 89d | 2005-04-04 | 2005-08-05 |  | 866d |  |  | Fritz DeJongh | 2672h |  | Supernova |
| 229 | 3.2.2.2.1 | Purchase computer hardware for on-mountain system |  | 20d | 2005-04-04 | 2005-04-29 | 185 | 885d | 0d | start no earlier than 2005-04-04 | Fritz DeJongh; Craig Loomis; Dan Yocum; Rick Kessler | 640h | 25,000 | Supernova |
| 230 | 3.2.2.2.2 | Assemble, configure and test on-mountain compute system at Fermilab |  | 30d | 2005-05-02 | 2005-06-13 | 229 | 885d | 0d |  | Fritz DeJongh; Dan Yocum; Rick Kessler | 720h |  | Supernova |
| 231 | 3.2.2.2.3 | Pack on-mountain compute cluster and ship from Fermilab to APO |  | 5d | 2005-06-14 | 2005-06-20 | 230 | 885d | 0d |  | Fritz DeJongh; Dan Yocum; Rick Kessler | 120h |  | Supernova |
| 232 | 3.2.2.2.4 | On-mountain compute cluster delivered to APO | milestone | 0d | 2005-06-20 | 2005-06-20 | 231 | 885d | 19d |  |  |  |  | Supernova |
| 233 | 3.2.2.2.5 | Re-configure and re-test on-mountain compute cluster at APO |  | 15d | 2005-07-18 | 2005-08-05 | 232, 225 | 866d | 0d |  | Fritz DeJongh; Dan Yocum; Rick Kessler; Craig Loomis | 480h |  | Supernova |
| 234 | 3.2.2.2.6 | On-mountain compute cluster ready for SN operations at APO | milestone | 0d | 2005-08-05 | 2005-08-05 | 233 | 866d |  |  |  |  |  | Supernova |
| 235 | 3.2.2.3 | **SN Off-mountain Computer Hardware Implementation** |  | 30d | 2005-04-04 | 2005-05-13 |  | 925d |  |  | Hubert Lampeitl | 720h |  | Supernova |
| 236 | 3.2.2.3.1 | Purchase computer hardware for off-mountain data analysis system |  | 10d | 2005-04-04 | 2005-04-15 |  | 925d | 0d | start no earlier than 2005-04-04 | Hubert Lampeitl; Dan Yocum | 160h |  | Supernova |
| 237 | 3.2.2.3.2 | Assemble, configure and test off-mountain compute system at Fermilab |  | 20d | 2005-04-18 | 2005-05-13 | 236 | 925d | 0d |  | Hubert Lampeitl; Dan Yocum | 320h |  | Supernova |
| 238 | 3.2.2.3.3 | Off-mountain compute cluster verified as ready for use | milestone | 0d | 2005-05-13 | 2005-05-13 | 237 | 925d |  |  |  |  |  | Supernova |

| ID | WBS | Task | Type | Duration | Start | Finish | Predecessors | Total slack | Free slack | Constraint | Resources | Work | Text2 |
| --- | --- | --- | --- | --- | --- | --- | --- | --- | --- | --- | --- | --- | --- |
| 239 | 3.2.2.4 | **Supernova Database Computer Hardware Implementation** |  | 30d | 2005-03-24 | 2005-05-04 |  | 932d |  |  | Chris Stoughton | 480h | Supernova |
| 240 | 3.2.2.4.1 | Purchase computer hardware for supernova database at (host institution name) |  | 20d | 2005-03-24 | 2005-04-20 | 202 | 932d | 0d |  | Chris Stoughton | 160h | Supernova |
| 241 | 3.2.2.4.2 | Assemble, configure and verify supernova database cluster setup |  | 10d | 2005-04-21 | 2005-05-04 | 240 | 932d | 0d |  | Chris Stoughton | 80h | Supernova |
| 242 | 3.2.2.4.3 | Supernova database cluster ready for software loading | milestone | 0d | 2005-05-04 | 2005-05-04 | 241 | 932d |  |  | Chris Stoughton |  | Supernova |
| 243 | 3.2.2.5 | **SN Public Archive Computer Hardware Implementation** |  | 30d | 2005-03-24 | 2005-05-04 |  | 932d |  |  | Chris Stoughton | 480h | Supernova |
| 244 | 3.2.2.5.1 | Purchase computer hardware for SN Public Archive |  | 20d | 2005-03-24 | 2005-04-20 | 202 | 932d | 0d |  | Chris Stoughton | 160h | Supernova |
| 245 | 3.2.2.5.2 | Assemble, configure and verify SN Public Archive hardware setup |  | 10d | 2005-04-21 | 2005-05-04 | 244 | 932d | 0d |  | Chris Stoughton | 80h | Supernova |
| 246 | 3.2.2.5.3 | SN public archive database cluster ready for software loading | milestone | 0d | 2005-05-04 | 2005-05-04 | 245 | 932d |  |  |  |  | Supernova |
| 247 | 3.2.3 | **SN Software Development for 2.5m Survey Operations** |  | 135d | 2004-11-15 | 2005-06-02 |  | 912d |  |  | Josh Frieman | 76828h | Supernova |
| 248 | 3.2.3.1 | **SN Software Script Development** |  | 135d | 2004-11-15 | 2005-06-02 |  | 912d |  |  | Rick Kessler | 8712h | Supernova |
| 249 | 3.2.3.1.1 | Port scripts to scientific Linux |  | 48d | 2004-11-15 | 2005-01-31 |  | 999d |  |  | Rick Kessler; Fritz DeJongh; JEA | 1152h | Supernova |
| 250 | 3.2.3.1.2 | Develop scripts to automate tape spooling |  | 135d | 2004-11-15 | 2005-06-02 |  | 912d |  |  | Rick Kessler; Ben Dilday | 2160h | Supernova |
| 251 | 3.2.3.1.3 | Develop script to automate pipeline running at APO |  | 135d | 2004-11-15 | 2005-06-02 |  | 912d |  |  | Rick Kessler; Ben Dilday | 2160h | Supernova |
| 252 | 3.2.3.1.4 | Develop script to monitor progress of pipelines during data processing |  | 135d | 2004-11-15 | 2005-06-02 |  | 912d |  |  | Rick Kessler; Ben Dilday | 2160h | Supernova |
| 253 | 3.2.3.2 | **Improved Stripe 82 Photo-Z Implementation** |  | 135d | 2004-11-15 | 2005-06-02 |  | 912d |  |  | Erin Sheldon | 3240h | Supernova |
| 254 | 3.2.3.2.1 | Implement improved stripe 82 photo-z's from other SDSS collaborators into database, for improved targ selection |  | 135d | 2004-11-15 | 2005-06-02 |  | 912d |  |  | Erin Sheldon; Hubert Lampeitl | 2160h | Supernova |
| 255 | 3.2.3.3 | **PHOTO Module Improvements (only if necessary to meet processing-time req.)** |  | 135d | 2004-11-15 | 2005-06-02 |  | 912d |  |  | Rick Kessler | 4320h | Supernova |
| 256 | 3.2.3.3.1 | Develop list of PHOTO modules to be modifed to run in parallel fashion |  | 20d | 2004-11-15 | 2004-12-14 |  | 912d | 0d |  | Rick Kessler; Ben Dilday; Jen Adelman | 480h | Supernova |
| 257 | 3.2.3.3.2 | Develop plan for modifying PHOTO modules based on processing requirements |  | 20d | 2004-12-15 | 2005-01-19 | 256 | 912d | 0d |  | Rick Kessler; Ben Dilday; Jen Adelman | 480h | Supernova |
| 258 | 3.2.3.3.3 | Implement plan as necessary (placeholder) |  | 95d | 2005-01-20 | 2005-06-02 | 257 | 912d |  |  | Rick Kessler; Ben Dilday; Jen Adelman | 2280h | Supernova |
| 259 | 3.2.3.4 | **SN Software Tools** |  | 91d | 2004-11-15 | 2005-03-31 |  | 956d |  |  | Ben Dilday | 2888h | Supernova |
| 260 | 3.2.3.4.1 | Develop software tools to monitor SN detection efficiency |  | 73d | 2004-11-29 | 2005-03-17 |  | 956d | 0d | start no earlier than 2004-11-29 | Ben Dilday; Rick Kessler | 1168h | Supernova |
| 261 | 3.2.3.4.2 | Develop software tools to test accuracy of SN photometry |  | 52d | 2004-11-15 | 2005-02-04 |  | 985d | 29d |  | Ben Dilday; Rick Kessler | 832h | Supernova |
| 262 | 3.2.3.4.3 | Test and validate SN software tool by putting artificial Sne into the data-stream |  | 10d | 2005-03-18 | 2005-03-31 | 260, 261 | 956d |  |  | Ben Dilday; Hubert Lampeitl | 160h | Supernova |
| 263 | 3.2.3.4.4 | Development of SN software tools finished | milestone | 0d | 2004-11-15 | 2004-11-15 |  | 1047d |  |  |  |  | Supernova |

| ID | WBS | Task | Type | Duration | Start | Finish | Predecessors | Total slack | Free slack | Constraint | Resources | Work | Text2 |
| --- | --- | --- | --- | --- | --- | --- | --- | --- | --- | --- | --- | --- | --- |
| 264 | 3.2.3.5 | **Frame Subtraction Pipeline Development** |  | 135d | 2004-11-15 | 2005-06-02 |  | 912d |  |  | Fritz DeJongh | 9720h | Supernova |
| 265 | 3.2.3.5.1 | Develop improved re-mapping algorithm between search and template frames |  | 135d | 2004-11-15 | 2005-06-02 |  | 912d | 0d |  | Fritz DeJongh; Andy Becker | 2160h | Supernova |
| 266 | 3.2.3.5.2 | Develop improved characterization of noise properties of the subtracted image |  | 135d | 2004-11-15 | 2005-06-02 |  | 912d | 0d |  | Fritz DeJongh; Andy Becker; John Marriner | 3240h | Supernova |
| 267 | 3.2.3.5.3 | Implement screening/flagging and improved masking within the frame subtraction pipeline of artifacts |  | 135d | 2004-11-15 | 2005-06-02 |  | 912d | 0d |  | Andy Becker | 1080h | Supernova |
| 268 | 3.2.3.5.4 | Implement better resampling methods |  | 135d | 2004-11-15 | 2005-06-02 |  | 912d | 0d |  | Andy Becker | 1080h | Supernova |
| 269 | 3.2.3.5.5 | Implement masked pixels |  | 135d | 2004-11-15 | 2005-06-02 |  | 912d | 0d |  | Andy Becker | 1080h | Supernova |
| 270 | 3.2.3.5.6 | Include PHOTO Info on astrometry, PSF, masks | milestone | 0d | 2005-06-02 | 2005-06-02 | 269 | 912d | 0d | finish no earlier than 2005-06-02 | Fritz DeJongh; Andy Becker |  | Supernova |
| 271 | 3.2.3.5.7 | Frame subtraction pipeline development work complete | milestone | 0d | 2005-06-02 | 2005-06-02 | 265, 266, 267, 268, 270 | 912d |  |  |  |  | Supernova |
| 272 | 3.2.3.6 | **Co-Added Template Frames (enhanced goal)** |  | 107d | 2005-01-03 | 2005-06-01 |  | 913d |  |  | Josh Frieman | 5136h | Supernova |
| 273 | 3.2.3.6.1 | Develop/test co-added template frames for stripe 82 to reach required depth of SN search |  | 107d | 2005-01-03 | 2005-06-01 |  | 913d | 0d | start no earlier than 2005-01-03 | Hubert Lampeitl; Fritz DeJongh; Jen Adelman; Huan Lin; Andy Becker | 4280h | Supernova |
| 274 | 3.2.3.6.2 | Co-added template frame development complete | milestone | 0d | 2005-06-01 | 2005-06-01 | 273 | 913d |  |  |  |  | Supernova |
| 275 | 3.2.3.7 | **Production and preparation of Templates** |  | 53.5d | 2005-01-03 | 2005-03-17 |  | 966.5d |  |  | Josh Frieman | 2140h | Supernova |
| 276 | 3.2.3.7.1 | Choose, Process, Zero-point templates for 82S and 82N |  | 53.5d | 2005-01-03 | 2005-03-17 |  | 966.5d | 0d | start no earlier than 2005-01-03 | Ben Dilday; Fritz DeJongh; Hubert Lampeitl; Andy Becker | 1712h | Supernova |
| 277 | 3.2.3.7.2 | template development complete | milestone | 0d | 2005-03-17 | 2005-03-17 | 276 | 966.5d |  |  |  |  | Supernova |
| 278 | 3.2.3.8 | **I-Band Frame Subtraction** |  | 107d | 2005-01-03 | 2005-06-01 |  | 913d |  |  | Fritz DeJongh | 1712h | Supernova |
| 279 | 3.2.3.8.1 | Implement I-band frame subtraction for all processed frames as part of normal operations |  | 107d | 2005-01-03 | 2005-06-01 |  | 913d | 0d | start no earlier than 2005-01-03 | Fritz DeJongh | 856h | Supernova |
| 280 | 3.2.3.8.2 | I-band frame subtraction code complete | milestone | 0d | 2005-06-01 | 2005-06-01 | 279 | 913d |  |  |  |  | Supernova |
| 281 | 3.2.3.9 | **Forced Object Measurement** |  | 107d | 2005-01-03 | 2005-06-01 |  | 913d |  |  | Fritz DeJongh; Andy Becker | 3424h | Supernova |
| 282 | 3.2.3.9.1 | Implement frame subration and forced object detection for candidates in u and z and for earlier/later exposure in g,r,i if not found |  | 107d | 2005-01-03 | 2005-06-01 |  | 913d | 0d | start no earlier than 2005-01-03 | Fritz DeJongh; Andy Becker | 1712h | Supernova |
| 283 | 3.2.3.9.2 | Forced object measurement code complete | milestone | 0d | 2005-06-01 | 2005-06-01 | 282 | 913d |  |  |  |  | Supernova |
| 284 | 3.2.3.10 | **Veto Catalogs and Objects Database** |  | 107d | 2005-01-03 | 2005-06-01 |  | 913d |  |  | Hubert Lampeitl | 8560h | Supernova |
| 285 | 3.2.3.10.1 | Construct/test bright star masks for both strips of stripe 82 |  | 107d | 2005-01-03 | 2005-06-01 |  | 913d | 0d | start no earlier than 2005-01-03 | Hubert Lampeitl; Juan Estrada | 1712h | Supernova |
| 286 | 3.2.3.10.2 | Cross-correlate stellar and QSO veto catalogs with other catalogs |  | 107d | 2005-01-03 | 2005-06-01 | 285SS | 913d | 0d | start no earlier than 2005-01-03 | Hubert Lampeitl; Juan Estrada | 1712h | Supernova |
| 287 | 3.2.3.10.3 | Conduct further tests on input variability catalogs |  | 107d | 2005-01-03 | 2005-06-01 | 285SS | 913d | 0d | start no earlier than 2005-01-03 | Hubert Lampeitl; Juan Estrada | 1712h | Supernova |
| 288 | 3.2.3.10.4 | Star list for frame subtraction fitting |  | 107d | 2005-01-03 | 2005-06-01 | 285SS | 913d | 0d |  | Hubert Lampeitl | 856h | Supernova |
| 289 | 3.2.3.10.5 | List of galaxy photo-z's in database |  | 107d | 2005-01-03 | 2005-06-01 | 285SS | 913d | 0d |  | Hubert Lampeitl; Erin Sheldon | 1712h | Supernova |
| 290 | 3.2.3.10.6 | Veto catalogs and database work complete | milestone | 0d | 2005-06-01 | 2005-06-01 | 285, 286, 289, 287, 288 | 913d |  |  |  |  | Supernova |

| ID | WBS | Task | Type | Duration | Start | Finish | Predecessors | Total slack | Free slack | Constraint | Resources | Work | Text2 |
| --- | --- | --- | --- | --- | --- | --- | --- | --- | --- | --- | --- | --- | --- |
| 291 | 3.2.3.11 | **SN Candidates Database** |  | 134d | 2004-11-15 | 2005-06-01 |  | 913d |  |  | Hubert Lampeitl | 3480h | Supernova |
| 292 | 3.2.3.11.1 | Define scope of work for further development work on SN Candidates Database |  | 10d | 2005-01-03 | 2005-01-14 |  | 913d | 0d | start no earlier than 2005-01-03 | Hubert Lampeitl | 80h | Supernova |
| 293 | 3.2.3.11.2 | Further development work on SN Candidates Database |  | 97d | 2005-01-17 | 2005-06-01 | 292 | 913d |  |  | Hubert Lampeitl; Ben Dilday; John Marriner | 2328h | Supernova |
| 294 | 3.2.3.11.3 | First round of development work on SN Candidates Database complete | milestone | 0d | 2004-11-15 | 2004-11-15 |  | 1047d |  |  |  |  | Supernova |
| 295 | 3.2.3.12 | **doObjects Pipeline** |  | 107d | 2005-01-03 | 2005-06-01 |  | 913d |  |  | Hubert Lampeitl | 2488h | Supernova |
| 296 | 3.2.3.12.1 | Define scope of work for additional development work on doObjects pipeline |  | 10d | 2005-01-03 | 2005-01-14 |  | 913d | 0d | start no earlier than 2005-01-03 | Hubert Lampeitl | 80h | Supernova |
| 297 | 3.2.3.12.2 | Further development on doObjects pipeline |  | 97d | 2005-01-17 | 2005-06-01 | 296 | 913d | 0d |  | Hubert Lampeitl; Rick Kessler | 1552h | Supernova |
| 298 | 3.2.3.12.3 | First round of development work on doObjects pipeline complete | milestone | 0d | 2005-06-01 | 2005-06-01 | 297 | 913d |  |  |  |  | Supernova |
| 299 | 3.2.3.13 | **HandScan Tool Development** |  | 107d | 2005-01-03 | 2005-06-01 |  | 913d |  |  | Hubert Lampeitl | 5992h | Supernova |
| 300 | 3.2.3.13.1 | Make framesub diagnostics available for field around each object being scanned |  | 107d | 2005-01-03 | 2005-06-01 |  | 913d | 0d | start no earlier than 2005-01-03 | Hubert Lampeitl; Rick Kessler; Fritz DeJongh; Ben Dilday; Andy Becker | 4280h | Supernova |
| 301 | 3.2.3.13.2 | Develop web-based HandScan tool |  | 107d | 2005-01-03 | 2005-06-01 |  | 913d | 0d | start no earlier than 2005-01-03 | Andy Becker | 856h | Supernova |
| 302 | 3.2.3.13.3 | HandScan tool development complete | milestone | 0d | 2005-06-01 | 2005-06-01 | 300, 301 | 913d |  |  |  |  | Supernova |
| 303 | 3.2.3.14 | **Target Selection Development** |  | 107d | 2005-01-03 | 2005-06-01 |  | 913d |  |  | Josh Frieman | 4280h | Supernova |
| 304 | 3.2.3.14.1 | Develop color-color and color-mag pre-selection using models and color/mags of nearby SN |  | 40d | 2005-01-03 | 2005-02-25 |  | 913d | 0d | start no earlier than 2005-01-03 | Josh Frieman; John Marriner; Andy Becker | 960h | Supernova |
| 305 | 3.2.3.14.2 | Develop real-time light-curve fitting and estimated current mag. |  | 40d | 2005-01-03 | 2005-02-25 |  | 913d | 0d | start no earlier than 2005-01-03 | Andy Becker | 320h | Supernova |
| 306 | 3.2.3.14.3 | Test color-color and multi-night vs. single-epoch selection using Fall 2004 data and artificial Sne |  | 10d | 2005-02-28 | 2005-03-11 | 304, 305 | 913d | 0d |  | Josh Frieman; John Marriner; Andy Becker; Rick Kessler | 320h | Supernova |
| 307 | 3.2.3.14.4 | Refine selection criteria for SN brightness relative to host, separation from host, etc. |  | 57d | 2005-03-14 | 2005-06-01 | 306 | 913d | 0d |  | Josh Frieman; John Marriner; Andy Becker; Rick Kessler | 1824h | Supernova |
| 308 | 3.2.3.14.5 | SN target selection development complete | milestone | 0d | 2005-06-01 | 2005-06-01 | 307 | 913d |  |  |  |  | Supernova |
| 309 | 3.2.3.15 | **Selection Criteria** |  | 107d | 2005-01-03 | 2005-06-01 |  | 913d |  |  | John Marriner | 5136h | Supernova |
| 310 | 3.2.3.15.1 | Develop selection criteria for subsample of multii-epoch spectrophotometry |  | 107d | 2005-01-03 | 2005-06-01 |  | 913d | 0d | start no earlier than 2005-01-03 | John Marriner | 856h | Supernova |
| 311 | 3.2.3.15.2 | Develop selection criteria for optical and NIR imaging follow-up |  | 107d | 2005-01-03 | 2005-06-01 |  | 913d | 0d | start no earlier than 2005-01-03 | John Marriner; Josh Frieman; Jon Holtzman; Bob Nichol | 3424h | Supernova |
| 312 | 3.2.3.15.3 | Selection criteria developed | milestone | 0d | 2005-06-01 | 2005-06-01 | 310, 311 | 913d |  |  |  |  | Supernova |
| 313 | 3.2.3.16 | **Target Selection Web Interface** |  | 107d | 2005-01-03 | 2005-06-01 |  | 913d |  |  | John Marriner | 2808h | Supernova |
| 314 | 3.2.3.16.1 | Develop web interface for target selection |  | 87d | 2005-01-03 | 2005-05-03 |  | 913d | 0d | start no earlier than 2005-01-03 | John Marriner; Andy Becker | 1392h | Supernova |
| 315 | 3.2.3.16.2 | Implement improved finding charts on target selection web interface |  | 10d | 2005-05-04 | 2005-05-17 | 314 | 913d | 0d |  | John Marriner; Erin Sheldon; Ben Dilday; Andy Becker | 320h | Supernova |
| 316 | 3.2.3.16.3 | Implement improved consolidation of information on target selection web interface |  | 10d | 2005-05-18 | 2005-06-01 | 315 | 913d | 0d |  | John Marriner; Ben Dilday; Andy Becker | 240h | Supernova |
| 317 | 3.2.3.16.4 | Target selection web interface finished | milestone | 0d | 2005-06-01 | 2005-06-01 | 316 | 913d |  |  |  |  | Supernova |

| ID | WBS | Task | Type | Duration | Start | Finish | Predecessors | Total slack | Free slack | Constraint | Resources | Work | Text2 |
| --- | --- | --- | --- | --- | --- | --- | --- | --- | --- | --- | --- | --- | --- |
| 318 | 3.2.3.17 | **Public SN Candidate Web Server** |  | 107d | 2005-01-03 | 2005-06-01 |  | 913d |  |  | John Marriner | 1712h | Supernova |
| 319 | 3.2.3.17.1 | Develop public version of SN candidate web server |  | 102d | 2005-01-03 | 2005-05-24 |  | 913d | 0d | start no earlier than 2005-01-03 | John Marriner | 816h | Supernova |
| 320 | 3.2.3.17.2 | Link Public SN Candidate Web Server to www.sdss.org |  | 5d | 2005-05-25 | 2005-06-01 | 319 | 913d | 0d |  | John Marriner | 40h | Supernova |
| 321 | 3.2.3.17.3 | Public SN candidate web server ready for use | milestone | 0d | 2005-06-01 | 2005-06-01 | 320 | 913d |  |  |  |  | Supernova |
| 322 | 3.2.4 | **Software Development for Follow-up Observations** |  | 135d | 2004-11-15 | 2005-06-02 |  | 912d |  |  | Josh Frieman | 17040h | Supernova |
| 323 | 3.2.4.1 | **Follow-up Candidates and Observed Objects Database** |  | 107d | 2005-01-03 | 2005-06-01 |  | 913d |  |  | John Marriner | 2448h | Supernova |
| 324 | 3.2.4.1.1 | Develop database for follow-up candidates and observed objects |  | 92d | 2005-01-03 | 2005-05-10 |  | 913d | 0d | start no earlier than 2005-01-03 | John Marriner; Hubert Lampeitl | 1472h | Supernova |
| 325 | 3.2.4.1.2 | Develop web interface for Follow-up Candidates database |  | 10d | 2005-05-11 | 2005-05-24 | 324 | 913d | 0d |  | John Marriner | 80h | Supernova |
| 326 | 3.2.4.1.3 | Link Follow-up Candidates database web interface to candidate pages |  | 5d | 2005-05-25 | 2005-06-01 | 325 | 913d | 0d |  | John Marriner | 40h | Supernova |
| 327 | 3.2.4.1.4 | Follow-up Candidates DB development complete | milestone | 0d | 2005-06-01 | 2005-06-01 | 326 | 913d |  |  |  |  | Supernova |
| 328 | 3.2.4.2 | **SN Observing Tools** |  | 107d | 2005-01-03 | 2005-06-01 |  | 913d |  |  | John Marriner | 3424h | Supernova |
| 329 | 3.2.4.2.1 | Develop tools to determine if sufficient spectro S/N achieved after given exposure time |  | 107d | 2005-01-03 | 2005-06-01 |  | 913d | 0d | start no earlier than 2005-01-03 | John Marriner; Jon Holtzman | 1712h | Supernova |
| 330 | 3.2.4.2.2 | Develop tool to do "on-the-fly" SN typing and redshift determination |  | 107d | 2005-01-03 | 2005-06-01 |  | 913d | 0d | start no earlier than 2005-01-03 | John Marriner | 856h | Supernova |
| 331 | 3.2.4.2.3 | SN Observing Tools developed | milestone | 0d | 2005-06-01 | 2005-06-01 | 329, 330 | 913d |  |  |  |  | Supernova |
| 332 | 3.2.4.3 | **SN Typing Tools** |  | 107d | 2005-01-03 | 2005-06-01 |  | 913d |  |  | Juan Estrada | 3424h | Supernova |
| 333 | 3.2.4.3.1 | Develop tools for galaxy spectroscopic subtraction for improved SN typing |  | 107d | 2005-01-03 | 2005-06-01 |  | 913d | 0d | start no earlier than 2005-01-03 | Juan Estrada; John Marriner; Andy Becker | 2568h | Supernova |
| 334 | 3.2.4.3.2 | SN Typing tools developed | milestone | 0d | 2005-06-01 | 2005-06-01 | 333 | 913d |  |  |  |  | Supernova |
| 335 | 3.2.4.4 | **Auxiliary Imaging Data Reduction Tools** |  | 107d | 2005-01-03 | 2005-06-01 |  | 913d |  |  | Hubert Lampeitl | 3424h | Supernova |
| 336 | 3.2.4.4.1 | Further develop tools for reducing aux imaging data from NMSU 1m, 3.5m SPIcam, etc. |  | 107d | 2005-01-03 | 2005-06-01 |  | 913d | 0d | start no earlier than 2005-01-03 | Jon Holtzman; Hubert Lampeitl; Bob Nichol | 2568h | Supernova |
| 337 | 3.2.4.4.2 | Tools for reducing auxiliary imaging data developed | milestone | 0d | 2005-06-01 | 2005-06-01 | 336 | 913d |  |  |  |  | Supernova |
| 338 | 3.2.4.5 | **SN Intercalibration Framework** |  | 135d | 2004-11-15 | 2005-06-02 |  | 912d |  |  | Hubert Lampeitl | 3240h | Supernova |
| 339 | 3.2.4.5.1 | Determine level of framework required for intercalibration between 2.5m, NMSU 1m, and 3.5m imaging |  | 25d | 2004-11-15 | 2004-12-21 |  | 912d | 0d |  | Hubert Lampeitl; Jon Holtzman | 400h | Supernova |
| 340 | 3.2.4.5.2 | Develop required framework for intercalibration between 2.5m, NMSU 1m, and 3.5m imaging |  | 110d | 2004-12-22 | 2005-06-02 | 339 | 912d | 0d |  | Hubert Lampeitl; Jon Holtzman | 1760h | Supernova |
| 341 | 3.2.4.5.3 | SN intercalibration framework developed | milestone | 0d | 2005-06-02 | 2005-06-02 | 340 | 912d |  |  |  |  | Supernova |

| ID | WBS | Task | Type | Duration | Start | Finish | Predecessors | Complete | Remaining | Total slack | Free slack | Constraint | Resources | Work | Actual work | Cost | Text2 |
| --- | --- | --- | --- | --- | --- | --- | --- | --- | --- | --- | --- | --- | --- | --- | --- | --- | --- |
| 342 | 3.2.5 | **Software Development for SN Off-mountain Analysis** |  | 150d | 2004-11-15 | 2005-06-23 |  |  |  | 897d |  |  | Josh Frieman | 8488h |  |  | Supernova |
| 343 | 3.2.5.1 | **SN Photometry Pipeline** |  | 150d | 2004-11-15 | 2005-06-23 |  |  |  | 897d |  |  | Hubert Lampeitl | 4720h |  |  | Supernova |
| 344 | 3.2.5.1.1 | Develop initial precision SN photometry pipeline (aperture and PSF photometry) |  | 20d | 2004-11-15 | 2004-12-14 |  |  |  | 897d | 0d |  | Hubert Lampeitl; Fritz DeJongh; John Marriner | 480h |  |  | Supernova |
| 345 | 3.2.5.1.2 | Develop final precision SN photometry pipeline (aperture and PSF photometry) |  | 120d | 2004-12-15 | 2005-06-09 | 344 |  |  | 897d | 0d |  | Hubert Lampeitl; Fritz DeJongh; John Marriner | 2880h |  |  | Supernova |
| 346 | 3.2.5.1.3 | Test/characterize SN Photometry Pipeline with artificial supernovae |  | 10d | 2005-06-10 | 2005-06-23 | 345 |  |  | 897d | 0d |  | Hubert Lampeitl; Ben Dilday | 160h |  |  | Supernova |
| 347 | 3.2.5.1.4 | SN Photometry Pipeline development complete | milestone | 0d | 2005-06-23 | 2005-06-23 | 346 |  |  | 897d |  |  |  |  |  |  | Supernova |
| 348 | 3.2.5.2 | **Improved Stripe 82 Object/Image Calibrations** |  | 107d | 2005-01-03 | 2005-06-01 |  |  |  | 913d |  |  | Juan Estrada | 2568h |  |  | Supernova |
| 349 | 3.2.5.2.1 | Implement improved calibrations of stripe 82 objects/images based on multiple observations |  | 107d | 2005-01-03 | 2005-06-01 |  |  |  | 913d | 0d | start no earlier than 2005-01-03 | Juan Estrada; Hubert Lampeitl | 1712h |  |  | Supernova |
| 350 | 3.2.5.2.2 | Improved stripe 82 calibrations implemented | milestone | 0d | 2005-06-01 | 2005-06-01 | 349 |  |  | 913d |  |  |  |  |  |  | Supernova |
| 351 | 3.2.6 | **SN Database Development** |  | 108d | 2005-01-03 | 2005-06-02 |  |  |  | 912d |  |  | Josh Frieman | 5168h |  |  | Supernova |
| 352 | 3.2.6.1 | **Collaboration Archive of Repeat Imaging Data and/or Catalogs** |  | 107d | 2005-01-03 | 2005-06-01 |  |  |  | 913d |  |  | Chris Stoughton | 1712h |  |  | Supernova |
| 353 | 3.2.6.1.1 | Create framework for collaboration archive of repeat imaging data and/or catalogs |  | 107d | 2005-01-03 | 2005-06-01 |  |  |  | 913d | 0d | start no earlier than 2005-01-03 | Chris Stoughton | 856h |  |  | Supernova |
| 354 | 3.2.6.1.2 | Framework in place for collaboration archive of repeat imaging data and/or catalogs | milestone | 0d | 2005-06-01 | 2005-06-01 | 353 |  |  | 913d |  |  | Chris Stoughton |  |  |  | Supernova |
| 355 | 3.2.6.2 | **Public Archive of Repeat Imaging Data and/or Catalogs** |  | 107d | 2005-01-03 | 2005-06-01 |  |  |  | 913d |  |  | Chris Stoughton | 1712h |  |  | Supernova |
| 356 | 3.2.6.2.1 | Create framework for public archive of repeat imaging data and/or catalogs |  | 107d | 2005-01-03 | 2005-06-01 |  |  |  | 913d | 0d | start no earlier than 2005-01-03 | Chris Stoughton | 856h |  |  | Supernova |
| 357 | 3.2.6.2.2 | Framework in place for public archive of repeat imaging data and/or catalogs | milestone | 0d | 2005-06-01 | 2005-06-01 | 356 |  |  | 913d |  |  | Chris Stoughton |  |  |  | Supernova |
| 358 | 3.2.6.3 | **SN Database Development** |  | 50d | 2005-03-24 | 2005-06-02 |  |  |  | 912d |  |  | Hubert Lampeitl | 880h |  |  | Supernova |
| 359 | 3.2.6.3.1 | Develop database for collaboration and public dissemination of SN data |  | 40d | 2005-03-24 | 2005-05-18 | 202 |  |  | 912d | 0d |  | Hubert Lampeitl | 320h |  |  | Supernova |
| 360 | 3.2.6.3.2 | Test and verify SN database ready for production use |  | 10d | 2005-05-19 | 2005-06-02 | 359 |  |  | 912d | 0d |  | Hubert Lampeitl; Rick Kessler | 160h |  |  | Supernova |
| 361 | 3.2.6.3.3 | SN database development complete; database ready for use | milestone | 0d | 2005-06-02 | 2005-06-02 | 360 |  |  | 912d |  |  |  |  |  |  | Supernova |
| 362 | 3.3 | Photometric Calibration Development |  | 1d? | 2004-11-15 | 2004-11-15 |  |  |  | 1046d |  |  | Jill Knapp | 8h |  |  | Calibration |
| 363 | 3.4 | **Data Acquisition Upgrade** |  | 197.5d? | 2004-12-06 A | 2005-09-16 |  | 18% | 161.98d? | 836.5d |  |  | Don Holmgren | 17572h | 2615.06h | 14,700 | DA Upgrade |
| 364 | 3.4.1 | **DA Upgrade Functional Specification** |  | 6d | 2005-04-06 A | 2005-04-13 |  | 17% | 5d | 947d |  |  | Don Holmgren | 224h | 24h |  | DA Upgrade |
| 365 | 3.4.1.1 | Develop functional specs for the DA upgrade |  | 1d | 2005-04-06 A | 2005-04-06 A |  | 100% |  |  |  | start no earlier than 2005-03-01 | Margaret Votava; Don Holmgren | 16h | 16h |  | DA Upgrade |
| 366 | 3.4.1.2 | Vet DA Upgrade functional specs with relevant parties (MC, developers, APO staff) |  | 5d | 2005-04-07 | 2005-04-13 | 365 |  |  | 947d | 0d |  | Mgmt Committee; Robert Lupton; Craig Loomis; Connie Rockosi | 160h |  |  | DA Upgrade |
| 367 | 3.4.1.3 | Functional specs for DA Upgrade approved | milestone | 0d | 2005-04-13 | 2005-04-13 | 366 |  |  | 947d |  |  |  |  |  |  | DA Upgrade |

| ID | WBS | Task | Type | Duration | Start | Finish | Predecessors | Complete | Remaining | Total slack | Free slack | Constraint | Resources | Work | Actual work | Cost | Text2 |
| --- | --- | --- | --- | --- | --- | --- | --- | --- | --- | --- | --- | --- | --- | --- | --- | --- | --- |
| 368 | 3.4.2 | **DA Upgrade Test Plan** |  | 15d | 2005-05-18 A | 2005-06-08 |  | 33% | 10d | 908d |  |  | Don Holmgren | 360h | 120h |  | DA Upgrade |
| 369 | 3.4.2.1 | Develop test plan for DA system modifications |  | 10d | 2005-05-18 A | 2005-06-01 |  | 50% | 5d | 873.5d | 0d | start no earlier than 2005-03-14 | Don Holmgren; Margaret Votava | 160h | 80h |  | DA Upgrade |
| 370 | 3.4.2.2 | Review and approve DA test plan |  | 5d | 2005-06-02 | 2005-06-08 | 369 |  |  | 908d | 0d |  | Jim Gunn; Connie Rockosi | 80h |  |  | DA Upgrade |
| 371 | 3.4.2.3 | DA test plan approved | milestone | 0d | 2005-06-08 | 2005-06-08 | 370 |  |  | 908d |  |  |  |  |  |  | DA Upgrade |
| 372 | 3.4.3 | **DA Upgrade Commissioning Plan** |  | 10d | 2005-06-02 | 2005-06-15 |  |  |  | 873.5d |  |  | Don Holmgren | 360h |  |  | DA Upgrade |
| 373 | 3.4.3.1 | Develop plan for DA commissioning at APO |  | 10d | 2005-06-02 | 2005-06-15 | 369 |  |  | 873.5d | 0d |  | Don Holmgren; Ron Rechenmacher; CP6 | 240h |  |  | DA Upgrade |
| 374 | 3.4.3.2 | Review and approve DA commissioning plan |  | 2.5d | 2005-06-13 | 2005-06-15 | 373FS-3d |  |  | 873.5d | 0d |  | Jim Gunn; Connie Rockosi | 40h |  |  | DA Upgrade |
| 375 | 3.4.3.3 | DA commisioning plan approved | milestone | 0d | 2005-06-15 | 2005-06-15 | 374 |  |  | 873.5d | 18.5d |  |  |  |  |  | DA Upgrade |
| 376 | 3.4.4 | **Hardware Procurements** |  | 134d | 2004-12-06 A | 2005-06-20 |  | 30% | 93.27d | 900d |  |  | Don Holmgren | 2488h | 750.62h | 14,700 | DA Upgrade |
| 377 | 3.4.4.1 | Procure (1) Motorola MVE5500 PowerPC cards and transition modules for prototyping |  | 16d | 2004-12-06 A | 2005-01-04 A |  | 100% |  |  |  |  | Dinker Charak | 128h | 128h |  | DA Upgrade |
| 378 | 3.4.4.2 | Procure (19) Motorola MVE5500 PowerPC cards and transition modules for new DA system |  | 26d | 2005-04-20 A | 2005-05-25 A | 8 | 100% |  |  |  |  | Dinker Charak | 208h | 208h |  | DA Upgrade |
| 379 | 3.4.4.3 | Procure (19) IPMC712 modules |  | 15d | 2005-05-31 A | 2005-06-20 |  | 1% | 14.9d | 857d | 0d |  | Bill Boroski | 120h | 0.8h |  |  |
| 380 | 3.4.4.3 | Specify hardware requirements for sdsshost replacement |  | 10d | 2005-02-28 | 2005-03-11 |  |  |  | 940d | 40d | start no earlier than 2005-02-28 | Ron Rechenmacher | 80h |  |  | DA Upgrade |
| 381 | 3.4.4.4 | Procure (2) dual-processor PCs for sdsshost replacement |  | 20d | 2005-05-09 A | 2005-06-06 | 380, 8 | 50% | 10d | 890d | 0d |  | Bill Boroski | 160h | 80h | 4,500 | DA Upgrade |
| 382 | 3.4.4.5 | New "lhost" machine delivered to FNAL |  | 1d | 2005-05-26 A | 2005-05-26 A | 381 | 100% |  |  |  |  |  |  |  |  | DA Upgrade |
| 383 | 3.4.4.6 | Install lhost at FNAL and run burn-in tests |  | 5d | 2005-05-26 A | 2005-06-02 | 382 | 20% | 4d | 912d |  |  | Margaret Votava | 40h | 8h |  | DA Upgrade |
| 384 | 3.4.4.7 | New "lhost" machine delivered to APO | milestone | 0d | 2005-06-06 | 2005-06-06 | 381 |  |  | 902d | 0d |  |  |  |  |  | DA Upgrade |
| 385 | 3.4.4.8 | Install lhost at APO and run burn-in tests |  | 5d | 2005-06-07 | 2005-06-13 | 384 |  |  | 902d | 0d |  | Craig Loomis | 40h |  |  | DA Upgrade |
| 386 | 3.4.4.9 | Procure VxWorks license for PowerPC platform |  | 5d | 2005-04-01 | 2005-04-07 | 8 |  |  | 951d |  |  | Margaret Votava | 40h |  | 8,000 | DA Upgrade |
| 387 | 3.4.4.10 | Procure (5) 250GB IDE disks for prototyping |  | 10d | 2005-04-01 | 2005-04-14 | 8 |  |  | 946d |  |  | Don Holmgren | 80h |  | 700 | DA Upgrade |
| 388 | 3.4.4.11 | Procure (2) 8-bay drive chassis' |  | 15d | 2005-04-01 | 2005-04-21 | 8 |  |  | 941d |  |  | Don Holmgren | 120h |  |  | DA Upgrade |
| 389 | 3.4.4.12 | Procure (18) DLT tape drives to replace current drives? (placeholder) |  | 30d | 2005-04-01 | 2005-05-12 | 8 |  |  | 926d |  |  | Don Holmgren | 240h |  |  | DA Upgrade |
| 390 | 3.4.4.13 | Procure new networking gear (Gb switch) |  | 20d | 2005-04-01 | 2005-04-28 | 8 |  |  | 936d |  |  | Craig Loomis | 160h |  | 1,500 | DA Upgrade |
| 391 | 3.4.5 | **Software Development** |  | 117.5d | 2005-03-01 A | 2005-08-12 |  | 21% | 93.17d | 861.5d |  |  | Don Holmgren | 7704h | 1240.81h |  | DA Upgrade |
| 392 | 3.4.5.1 | **VxWorks Environment** |  | 15d | 2005-03-21 A | 2005-04-08 |  | 50% | 7.5d | 911.25d |  |  | David Slimmer | 256h | 128h |  | DA Upgrade |
| 393 | 3.4.5.1.1 | Get VxWorks test environment set up at FNAL |  | 10d | 2005-03-21 A | 2005-04-01 |  | 50% | 5d | 946.25d | 0d | start no earlier than 2005-02-28 | David Slimmer | 80h | 40h |  | DA Upgrade |
| 394 | 3.4.5.1.2 | Get VME board booting in VxWorks environment |  | 5d | 2005-03-25 A | 2005-04-06 | 393 | 50% | 2.5d | 911.25d | 0d |  | David Slimmer | 40h | 20h |  | DA Upgrade |
| 395 | 3.4.5.1.3 | Build existing DA code in VxWorks environment to verify and as necessary modify work scope |  | 5d | 2005-03-21 A | 2005-04-08 | 394 | 50% | 2.5d | 911.25d | 0d |  | David Slimmer | 40h | 20h |  | DA Upgrade |
| 396 | 3.4.5.1.4 | Existing DA code successfully built in VxWorks environment | milestone | 0d | 2005-04-08 | 2005-04-08 | 395 |  |  | 946.25d | 0d |  |  |  |  |  | DA Upgrade |

Notes:
- 377: VME PC + SCSI option for each crate (13 (1 per fiber) plus 4 for test stand plus 2 spares ($3K/ea))
- 381: Two high-end dual processor PCs (4 GB, ~2TB disk) (main + spare). (6 8-hr nights = 1TB uncompressed). ($4.5K/ea.) Replaces sdsshost and sdssmth.
- 387: Est. cost: $140/ea.
- 389: Existing DLT drives are nearing end of life

| ID | WBS | Task | Type | Duration | Start | Finish | Predecessors | Complete | Remaining | Total slack | Free slack | Constraint | Resources | Work | Actual work | Text2 |
| --- | --- | --- | --- | --- | --- | --- | --- | --- | --- | --- | --- | --- | --- | --- | --- | --- |
| 397 | 3.4.5.2 | **VxTools Mods** |  | 23d | 2005-03-21 A | 2005-04-20 |  | 50% | 11.5d | 907d |  |  | David Slimmer | 160h | 80h | DA Upgrade |
| 398 | 3.4.5.2.1 | Map registers and rest of VxTools (other than DMA) |  | 2.5d | 2005-03-21 A | 2005-04-12 | 396 | 50% | 1.25d | 911.25d | 1.75d |  | David Slimmer; Dinker Charak | 40h | 20h | DA Upgrade |
| 399 | 3.4.5.2.2 | Write new DMA driver for VCI+ and scrolling display |  | 5d | 2005-04-14 A | 2005-04-20 | 398 | 50% | 2.5d | 942d | 0d |  | David Slimmer; Dinker Charak | 80h | 40h | DA Upgrade |
| 400 | 3.4.5.2.3 | Modifications to VxTools complete | milestone | 0d | 2005-04-20 | 2005-04-20 | 399 |  |  | 942d | 0d |  |  |  |  | DA Upgrade |
| 401 | 3.4.5.3 | **Emulation Code Development** |  | 31d | 2005-03-21 A | 2005-05-02 |  | 90% | 2.98d | 934d |  |  | Kurt Biery | 872h | 728.15h | DA Upgrade |
| 402 | 3.4.5.3.1 | Develop functional specs for PTVME emulation scheme |  | 16d | 2005-03-21 A | 2005-04-11 A |  | 100% |  |  |  | start no earlier than 2005-02-28 | Kurt Biery; Ron Rechenmacher | 256h | 256h | DA Upgrade |
| 403 | 3.4.5.3.2 | Review and sign-off on PTVME emulation scheme |  | 5d | 2005-04-12 | 2005-04-18 | 402 |  |  | 944d |  |  | Jim Gunn; Don Holmgren; Connie Rockosi | 120h |  | DA Upgrade |
| 404 | 3.4.5.3.3 | Develop code to emulate PTVME functionality |  | 31d | 2005-03-21 A | 2005-05-02 A | 403 | 100% |  |  |  |  | Kurt Biery | 248h | 248h | DA Upgrade |
| 405 | 3.4.5.3.4 | Emulation code mods complete | milestone | 0d | 2005-05-02 | 2005-05-02 | 404 |  |  | 934d |  |  |  |  |  | DA Upgrade |
| 406 | 3.4.5.4 | **Archiver Mods** |  | 20d | 2005-05-03 | 2005-05-31 |  |  |  | 836.5d |  |  | Margaret Votava | 320h |  | DA Upgrade |
| 407 | 3.4.5.4.1 | Modify both sides of archiver to write to remote side disk |  | 20d | 2005-05-03 | 2005-05-31 | 404 |  |  | 836.5d | 0d | start no earlier than 2005-03-01 | TBD | 160h |  | DA Upgrade |
| 408 | 3.4.5.5 | **Murmur Portability Check** |  | 15d | 2005-04-21 | 2005-05-11 |  |  |  | 907d |  |  | Margaret Votava | 240h |  | DA Upgrade |
| 409 | 3.4.5.5.1 | Port murmur to Linux box at FNAL and compile |  | 15d | 2005-04-21 | 2005-05-11 | 400 |  |  | 912d | 0d | start no earlier than 2005-03-15 | TBD | 120h |  | DA Upgrade |
| 410 | 3.4.5.5.2 | Murmur ported to Linux successfully, or additional scope of work defined | milestone | 0d | 2005-05-11 | 2005-05-11 | 409 |  |  | 927d |  |  | TBD |  |  | DA Upgrade |
| 411 | 3.4.5.6 | **Network Time Protocol (NTP)** |  | 10d | 2005-04-04 | 2005-04-15 |  |  |  | 945d |  |  | Dinker Charak | 160h |  | DA Upgrade |
| 412 | 3.4.5.6.1 | Port NTP to VxWorks (if NTP does not come with current version of VxWorks) |  | 10d | 2005-04-04 | 2005-04-15 |  |  |  | 945d |  | start no earlier than 2005-04-04 | Dinker Charak | 80h |  | DA Upgrade |
| 413 | 3.4.5.7 | **ftelnet Tests** |  | 5d | 2005-03-15 | 2005-03-21 |  |  |  | 961d |  |  | Craig Loomis | 80h |  | DA Upgrade |
| 414 | 3.4.5.7.1 | Port ftelnet to Linux at APO and test |  | 5d | 2005-03-15 | 2005-03-21 |  |  |  | 961d | 33d | start no earlier than 2005-03-15 | Craig Loomis | 40h |  | DA Upgrade |
| 415 | 3.4.5.8 | **Port Infrastructure Code to "lhost"** |  | 84d | 2005-03-01 A | 2005-06-27 |  | 10% | 75.25d | 895d |  |  | Margaret Votava | 1216h | 110h | DA Upgrade |
| 416 | 3.4.5.8.1 | Specify software environment (compiler/distribution) for lhost. |  | 10d | 2005-03-01 | 2005-03-14 |  |  |  | 904d | 0d | start no earlier than 2005-03-01 | Margaret Votava | 80h |  | DA Upgrade |
| 417 | 3.4.5.8.2 | Vet software specs for lhost machine |  | 10d | 2005-03-15 | 2005-03-28 | 416 |  |  | 904d | 0d |  | Jim Gunn; Don Holmgren; Connie Rockosi | 240h |  | DA Upgrade |
| 418 | 3.4.5.8.3 | Port current development environment (support) for MCP and TPM to lhost |  | 10d | 2005-06-07 | 2005-06-20 | 381, 417 |  |  | 895d | 0d | start no earlier than 2005-02-28 | Margaret Votava | 80h |  | DA Upgrade |
| 419 | 3.4.5.8.4 | Port astroDA to lhost |  | 5d | 2005-03-21 A | 2005-06-23 | 418 | 50% | 2.5d | 897.5d |  |  | Margaret Votava | 40h | 20h | DA Upgrade |
| 420 | 3.4.5.8.5 | Install murmur on lhost at FNAL |  | 5d | 2005-06-21 | 2005-06-27 | 418 |  |  | 895d |  |  | Margaret Votava | 40h |  | DA Upgrade |
| 421 | 3.4.5.8.6 | Install ftelnet on lhost at FNAL |  | 3d | 2005-06-14 | 2005-06-16 | 381, 385, 414 |  |  | 902d |  |  | Margaret Votava | 24h |  | DA Upgrade |
| 422 | 3.4.5.8.7 | Endian conversion on lhost |  | 5d | 2005-05-09 A | 2005-06-03 | 407 | 50% | 2.5d | 836.5d | 0d |  | Margaret Votava | 40h | 20h | DA Upgrade |
| 423 | 3.4.5.8.8 | Infrastructure code port to FNAL lhost complete | milestone | 0d | 2005-06-03 | 2005-06-03 | 422 |  |  | 836.5d | 0d |  |  |  |  | DA Upgrade |

Notes:
- 422: Work involves swapping data and dealing with 16-bit binary registers on devices. Recollection is that the TCC position broadcast is binary and perhaps floating point.

| ID | WBS | Task | Type | Duration | Start | Finish | Predecessors | Total slack | Free slack | Constraint | Resources | Work | Text2 |
| --- | --- | --- | --- | --- | --- | --- | --- | --- | --- | --- | --- | --- | --- |
| 424 | 3.4.5.9 | **Port Observing Tools to "lhost"** |  | 20d | 2005-06-07 | 2005-07-04 |  | 890d |  |  |  | 160h | DA Upgrade |
| 425 | 3.4.5.9.1 | Port current set of host code to lhost (e.g., tccmon, watcher, webserver, etc.) |  | 20d | 2005-06-07 | 2005-07-04 | 381 | 890d | 0d |  | Eric Neilsen | 160h | DA Upgrade |
| 426 | 3.4.5.9.2 | Existing "observing tools" code ported to 'lhost" at FNAL | milestone | 0d | 2005-07-04 | 2005-07-04 | 425 | 890d |  |  |  |  | DA Upgrade |
| 427 | 3.4.5.10 | **IOP code modifications** |  | 97.5d | 2005-03-29 | 2005-08-12 |  | 861.5d |  |  | Eric Neilsen | 2340h | DA Upgrade |
| 428 | 3.4.5.10.1 | **Critical IOP Changes** |  | 55d | 2005-03-29 | 2005-06-14 |  | 904d |  |  | Eric Neilsen | 1440h | DA Upgrade |
| 429 | 3.4.5.10.1.1 | **endNight Rewrite** |  | 55d | 2005-03-29 | 2005-06-14 |  | 904d |  |  | Eric Neilsen | 1000h | DA Upgrade |
| 430 | 3.4.5.10.1.1.1 | Develop functional requirements for endNight rewrite |  | 20d | 2005-03-29 | 2005-04-25 | 417 | 904d | 0d |  | Eric Neilsen | 160h | DA Upgrade |
| 431 | 3.4.5.10.1.1.2 | Develop design proposal for endNight rewrite |  | 10d | 2005-04-26 | 2005-05-09 | 430 | 904d | 0d |  | Eric Neilsen | 80h | DA Upgrade |
| 432 | 3.4.5.10.1.1.3 | Vet design proposal for endNight rewrite |  | 5d | 2005-05-10 | 2005-05-16 | 431 | 904d | 0d |  | Connie Rockosi; Jim Gunn; Robert Lupton; Don Holmgren | 160h | DA Upgrade |
| 433 | 3.4.5.10.1.1.4 | Rewrite endNight. |  | 20d | 2005-05-17 | 2005-06-14 | 432 | 904d | 0d |  | Eric Neilsen | 160h | DA Upgrade |
| 434 | 3.4.5.10.1.1.5 | Rewrite of endNight finished and ready for testing | milestone | 0d | 2005-06-14 | 2005-06-14 | 433 | 904d |  |  |  |  | DA Upgrade |
| 435 | 3.4.5.10.2 | **Potential IOP Changes** |  | 5d | 2005-08-05 | 2005-08-12 |  | 861.5d |  |  | Eric Neilsen | 120h | DA Upgrade |
| 436 | 3.4.5.10.2.1 | **Teamster Modifications** |  | 5d | 2005-08-05 | 2005-08-12 |  | 861.5d |  |  | Eric Neilsen | 80h | DA Upgrade |
| 437 | 3.4.5.10.2.1.1 | Write gangs directly on Unix side () |  | 5d | 2005-08-05 | 2005-08-12 | 471FF+5d | 861.5d |  |  | Eric Neilsen | 40h | DA Upgrade |
| 438 | 3.4.5.11 | **Potential Astroline Modifications** |  | 10d | 2005-07-29 | 2005-08-12 |  | 861.5d |  |  | TBD | 160h | DA Upgrade |
| 439 | 3.4.5.11.1 | Improve stretch on scrolling displays (requires code mods on VME side). |  | 10d | 2005-07-29 | 2005-08-12 | 471FF+5d | 861.5d |  |  | TBD | 80h | DA Upgrade |
| 440 | 3.4.5.12 | **sdssmth Upgrade** |  | 20d | 2005-05-12 | 2005-06-09 |  | 907d |  |  | Eric Neilsen | 320h | DA Upgrade |
| 441 | 3.4.5.12.1 | Merge MOP and IOP back together |  | 15d | 2005-05-12 | 2005-06-02 | 409 | 907d | 0d |  | Eric Neilsen | 120h | DA Upgrade |
| 442 | 3.4.5.12.2 | Port MOP onto"lhost" |  | 5d | 2005-06-03 | 2005-06-09 | 441 | 907d |  |  | Eric Neilsen | 40h | DA Upgrade |
| 443 | 3.4.5.13 | **TPM Modifications** |  | 30d | 2005-04-18 | 2005-05-27 |  | 915d |  |  | Peregrine Mc Gehee | 480h | DA Upgrade |
| 444 | 3.4.5.13.1 | Move TPM display monitor to commish (TPM dm) (real-time TPM display) |  | 30d | 2005-04-18 | 2005-05-27 |  | 915d | 0d | start no earlier than 2005-04-18 | Peregrine Mc Gehee | 240h | DA Upgrade |
| 445 | 3.4.5.13.2 | TPM move to commish complete | milestone | 0d | 2005-05-27 | 2005-05-27 | 444 | 915d |  |  |  |  | DA Upgrade |
| 446 | 3.4.6 | **FNAL Test Stand Verification** |  | 5d | 2005-02-28 | 2005-03-04 |  | 900d |  |  | Don Holmgren | 160h | DA Upgrade |
| 447 | 3.4.6.1 | Verify that FNAL simulation environment is functional |  | 5d | 2005-02-28 | 2005-03-04 |  | 900d | 0d | start no earlier than 2005-02-28 | Don Holmgren; Ron Rechenmacher; Margaret Votava | 120h | DA Upgrade |
| 448 | 3.4.6.2 | FNAL test stand functional | milestone | 0d | 2005-03-04 | 2005-03-04 | 447 | 900d | 75d |  |  |  | DA Upgrade |

| ID | WBS | Task | Type | Duration | Start | Finish | Predecessors | Complete | Remaining | Total slack | Free slack | Constraint | Resources | Work | Actual work | Text2 |
| --- | --- | --- | --- | --- | --- | --- | --- | --- | --- | --- | --- | --- | --- | --- | --- | --- |
| 449 | 3.4.7 | **DA System Testing at FNAL** |  | 20d | 2005-06-03 | 2005-07-01 |  |  |  | 836.5d |  |  | CP6 | 480h |  | DA Upgrade |
| 450 | 3.4.7.1 | Full system commisioning tests at FNAL to verify operational readiness of new DA |  | 20d | 2005-06-03 | 2005-07-01 | 423, 448 |  |  | 836.5d | 0d |  | CP6; Ron Rechenmacher | 320h |  | DA Upgrade |
| 451 | 3.4.7.2 | New DA system testing at FNAL complete | milestone | 0d | 2005-07-01 | 2005-07-01 | 450 |  |  | 836.5d | 0d |  |  |  |  | DA Upgrade |
| 452 | 3.4.8 | **DA Preliminary Development and Testing at APO** |  | 55d? | 2005-03-14 A | 2005-05-27 |  | 6% | 51.56d? | 915d |  |  | Fritz Stauffer | 568h | 35.5h | DA Upgrade |
| 453 | 3.4.8.1 | Ship MVME5500 board to APO |  | 1d? | 2005-05-13 A | 2005-05-13 A |  | 100% |  |  |  |  | Fritz Stauffer | 8h | 8h |  |
| 454 | 3.4.8.2 | Ship one MVE5500 board to APO |  | 5d | 2005-03-14 | 2005-03-18 |  |  |  | 955d | 0d | start no earlier than 2005-03-14 | Dinker Charak | 40h |  |  |
| 455 | 3.4.8.2 | Install MVE5500 board at APO and test NTP and TCC broadcast functionality |  | 10d | 2005-05-16 | 2005-05-27 | 454, 453 |  |  | 915d |  |  | Fritz Stauffer | 80h |  | DA Upgrade |
| 456 | 3.4.9 | **DA Board Shipment to APO** |  | 20d | 2005-05-26 | 2005-06-23 |  |  |  | 857d |  |  | Dinker Charak | 248h |  | DA Upgrade |
| 457 | 3.4.9.1 | Pack MVE5500 boards for shipment to APO |  | 3d | 2005-05-26 | 2005-05-31 | 378 |  |  | 869d | 0d |  | Kurt Biery | 24h |  | DA Upgrade |
| 458 | 3.4.9.2 | Ship MVE5500 boards to APO |  | 5d | 2005-06-01 | 2005-06-07 | 457 |  |  | 869d | 12d |  | Kurt Biery | 40h |  | DA Upgrade |
| 459 | 3.4.9.3 | Ship IPCM712 modules to APO |  | 3d | 2005-06-21 | 2005-06-23 | 379 |  |  | 857d | 0d |  | Kurt Biery | 24h |  |  |
| 460 | 3.4.9.3 | New DA hardware on-site at APO | milestone | 0d | 2005-06-23 | 2005-06-23 | 459, 458 |  |  | 857d | 0d |  |  |  |  | DA Upgrade |
| 461 | 3.4.10 | **APO Site Preparations** |  | 10d | 2005-03-14 A | 2005-03-25 A |  | 100% |  |  |  |  | Craig Loomis | 160h | 160h | DA Upgrade |
| 462 | 3.4.10.1 | Assess impact of new DA system on APO infrastructure (power, cabling, etc.) |  | 10d | 2005-03-14 A | 2005-03-25 A | 380 | 100% |  |  |  |  | Craig Loomis | 80h | 80h | DA Upgrade |
| 463 | 3.4.10.2 | Impact of new DA on APO infrastructure deemed acceptable | milestone | 0d | 2005-03-25 A | 2005-03-25 A | 462 | 100% |  |  |  |  |  |  |  | DA Upgrade |
| 464 | 3.4.11 | **DA Upgrade Hardware/Software Installation at APO** |  | 25d | 2005-06-03 | 2005-07-08 |  |  |  | 871.5d |  |  | Craig Loomis | 440h |  | DA Upgrade |
| 465 | 3.4.11.1 | Reconfigure 2.5m networking at APO |  | 5d | 2005-06-03 | 2005-06-10 | 450SS |  |  | 906.5d |  |  | Craig Loomis | 40h |  | DA Upgrade |
| 466 | 3.4.11.2 | Install new MVE5500 boards w/ IPMC712 modules into crate at APO |  | 5d | 2005-06-24 | 2005-06-30 | 463, 460 |  |  | 857d | 0.5d |  | Craig Loomis | 40h |  | DA Upgrade |
| 467 | 3.4.11.3 | Install new DA code at APO |  | 5d | 2005-07-01 | 2005-07-08 | 451, 466 |  |  | 856.5d | 0d |  | Craig Loomis; Margaret Votava; David Slimmer; Kurt Biery | 160h |  | DA Upgrade |
| 468 | 3.4.11.4 | DA upgrade hardware and software installed at APO and ready for testing | milestone | 0d | 2005-07-08 | 2005-07-08 | 467 |  |  | 856.5d | 0d |  |  |  |  | DA Upgrade |
| 469 | 3.4.12 | **DA Upgrade Commissioning at APO** |  | 20d | 2005-07-08 | 2005-08-05 |  |  |  | 856.5d |  |  | CP6 | 560h |  | DA Upgrade |
| 470 | 3.4.12.1 | Start DA commissioning at APO | milestone | 0d | 2005-07-08 | 2005-07-08 | 375, 468 |  |  | 856.5d | 0d |  | CP6 |  |  | DA Upgrade |
| 471 | 3.4.12.2 | Commissioning tests at APO |  | 20d | 2005-07-08 | 2005-08-05 | 470SS, 466 |  |  | 856.5d | 0d |  | CP6; Observers | 320h |  | DA Upgrade |
| 472 | 3.4.12.3 | System handoff to APO staff |  | 10d | 2005-07-22 | 2005-08-05 | 471FF |  |  | 856.5d | 0d |  | CP6 | 80h |  | DA Upgrade |
| 473 | 3.4.12.4 | New DA ready for routine operations | milestone | 0d | 2005-08-05 | 2005-08-05 | 472 |  |  | 856.5d | 0d |  |  |  |  | DA Upgrade |

| ID | WBS | Task | Type | Duration | Start | Finish | Predecessors | Total slack | Free slack | Constraint | Resources | Work | Text2 |
| --- | --- | --- | --- | --- | --- | --- | --- | --- | --- | --- | --- | --- | --- |
| 474 | 3.4.13 | **Final As-built Documentation** |  | 10d | 2005-08-05 | 2005-08-19 |  | 856.5d |  |  | Margaret Votava | 480h | DA Upgrade |
| 475 | 3.4.13.1 | Finish as-built DA system documentation |  | 10d | 2005-08-05 | 2005-08-19 | 473 | 856.5d | 0d |  | Margaret Votava; Kurt Biery; Dinker Charak; David Slimmer | 320h | DA Upgrade |
| 476 | 3.4.13.2 | Update observing procedures |  | 5d | 2005-08-05 | 2005-08-12 | 472 | 861.5d | 5d |  | Scot Kleinman | 40h | DA Upgrade |
| 477 | 3.4.13.3 | Update operating procedures |  | 5d | 2005-08-05 | 2005-08-12 | 472 | 861.5d | 5d |  | Scot Kleinman | 40h | DA Upgrade |
| 478 | 3.4.13.4 | Final as-built documentation complete and delivered to APO | milestone | 0d | 2005-08-19 | 2005-08-19 | 475, 476, 477 | 856.5d |  |  |  |  |  |
| 479 | 3.4.14 | **DA Upgrade Tape Drive Replacement** |  | 113.5d | 2005-04-11 | 2005-09-16 |  | 836.5d |  |  |  | 1760h | DA Upgrade |
| 480 | 3.4.14.1 | **Tape Drive Replacement Plan** |  | 20d | 2005-04-11 | 2005-05-06 |  | 875d |  |  | Bill Boroski | 560h | DA Upgrade |
| 481 | 3.4.14.1.1 | Meet with FCC personnel to define work scope for incorporating hot-swap drives at FNAL |  | 5d | 2005-04-11 | 2005-04-15 |  | 875d | 0d | start no earlier than 2005-04-11 | Bill Boroski; Don Holmgren | 80h | DA Upgrade |
| 482 | 3.4.14.1.2 | Develop plan for replacing tape drives at FNAL and APO |  | 10d | 2005-04-18 | 2005-04-29 | 481 | 875d | 0d |  | Bill Boroski; Don Holmgren | 160h | DA Upgrade |
| 483 | 3.4.14.1.3 | Vet plan for tape drive replacement with key CD personnel |  | 5d | 2005-05-02 | 2005-05-06 | 482 | 875d | 0d |  | Bill Boroski; Don Holmgren; VW; BT | 160h | DA Upgrade |
| 484 | 3.4.14.1.4 | Tape drive replacement plan approved | milestone | 0d | 2005-05-06 | 2005-05-06 | 483 | 875d | 38.5d |  |  |  | DA Upgrade |
| 485 | 3.4.14.2 | **FNAL Infrastructure Upgrade (to incorporate hot-swap disk drives)** |  | 45d | 2005-07-01 | 2005-09-02 |  | 836.5d |  |  | TBD | 880h | DA Upgrade |
| 486 | 3.4.14.2.1 | Procure hot-swap chassis and drives for testing at Fermilab |  | 5d | 2005-07-01 | 2005-07-08 | 484, 451 | 836.5d | 0d |  | TBD | 40h | DA Upgrade |
| 487 | 3.4.14.2.2 | Develop prototype hot-swap disk system and test at FCC |  | 20d | 2005-07-08 | 2005-08-05 | 486 | 836.5d | 0d |  | TBD | 160h | DA Upgrade |
| 488 | 3.4.14.2.3 | Modify FNAL system to read data from DLT tape drives or hot-swappable drives (placeholder) |  | 20d | 2005-08-05 | 2005-09-02 | 487 | 846.5d |  |  | TBD | 160h | DA Upgrade |
| 489 | 3.4.14.2.4 | Adapt FNAL inventory system to accommodate disk drives and DLT tapes (placeholder) |  | 20d | 2005-08-05 | 2005-09-02 | 487 | 836.5d | 0d |  | TBD | 160h | DA Upgrade |
| 490 | 3.4.14.2.5 | FNAL infrastructure upgraded to accommodate hot-swap disk drives | milestone | 0d | 2005-09-02 | 2005-09-02 | 489 | 836.5d | 0d |  |  |  | DA Upgrade |
| 491 | 3.4.14.3 | **APO Infrastructure Upgrade (to incorporate hot-swap disk drives)** |  | 10d | 2005-09-02 | 2005-09-16 |  | 836.5d |  |  | TBD | 160h | DA Upgrade |
| 492 | 3.4.14.3.1 | Modify DA system at APO to read data from DLT tape drives or hot-swappable drives (placeholder) |  | 10d | 2005-09-02 | 2005-09-16 | 484, 490 | 836.5d | 0d |  | TBD | 80h | DA Upgrade |
| 493 | 3.4.14.3.2 | DA system at APO upgraded with hot-swap disk drives | milestone | 0d | 2005-09-16 | 2005-09-16 | 492 | 836.5d |  |  |  |  | DA Upgrade |
| 494 | 3.4.14.4 | **FNAL Test Stand Upgrade (to accommodate hot-swap disk drives)** |  | 10d | 2005-07-01 | 2005-07-15 |  | 881.5d |  |  | TBD | 160h | DA Upgrade |
| 495 | 3.4.14.4.1 | Modify DA test stand at FNAL to incorporate hot-swap drives |  | 10d | 2005-07-01 | 2005-07-15 | 484, 450 | 881.5d | 0d |  | TBD | 80h | DA Upgrade |
| 496 | 3.4.14.4.2 | FNAL DA test stand upgraded with hot-swap tape drives | milestone | 0d | 2005-07-15 | 2005-07-15 | 495 | 881.5d |  |  |  |  | DA Upgrade |
| 497 | 4 | ARC Corporate Support |  | 1d? | 2004-11-15 | 2004-11-15 |  | 1046d |  |  | Mike Evans | 8h | Operations |

| ID | WBS | Task | Duration | Start | Finish | Total slack | Resources | Work | Baseline cost | Text2 |
| --- | --- | --- | --- | --- | --- | --- | --- | --- | --- | --- |
| 498 | 5 | **Public Outreach** | 1d? | 2004-11-15 | 2004-11-15 | 1046d | Michael Strauss | 64h |  | Outreach |
| 499 | 5.1 | AstroBulletin Video Documentary | 1d? | 2004-11-15 | 2004-11-15 | 1046d | American Museum | 8h | 70,000 | Outreach |
| 500 | 5.2 | **AstroBulletin 3D "Flythroughs"** | 1d? | 2004-11-15 | 2004-11-15 | 1046d | American Museum | 32h |  | Outreach |
| 501 | 5.2.1 | 3D Flythrough 2006 | 1d? | 2004-11-15 | 2004-11-15 | 1046d | American Museum | 8h | 20,000 | Outreach |
| 502 | 5.2.2 | 3D Flythrough 2007 | 1d? | 2004-11-15 | 2004-11-15 | 1046d | American Museum | 8h | 20,000 | Outreach |
| 503 | 5.2.3 | 3D Flythrough 2008 | 1d? | 2004-11-15 | 2004-11-15 | 1046d | American Museum | 8h | 20,000 | Outreach |
| 504 | 5.3 | SpaceShow | 1d? | 2004-11-15 | 2004-11-15 | 1046d | American Museum | 8h | 10,000 | Outreach |
| 505 | 5.4 | Rose Center Onsite Astrophysics Education | 1d? | 2004-11-15 | 2004-11-15 | 1046d | American Museum | 8h | 70,000 | Outreach |
| 506 | 6 | Management Reserve | 1d? | 2004-11-15 | 2004-11-15 | 1046d | Rich Kron | 8h |  |  |

Notes:
- 505: Text1: Nearly four million visitors visit the Museum each year, including more than 5,000 teachers and 400,000 schoolchildren who represent New York City’s diversity (in public schools, 39% Hispanic and 33% non-Hispanic Black). In its Rose Center for Earth and
