# Summer_2005

Schedule from MS Project, 2005-07-16 to 2005-08-26.
Fermilab

## Calendars

- Standard: Mon-Fri 08:00-12:00, 13:00-17:00; Sat-Sun off. Exceptions (off unless hours are given): 2005-07-16 08:00-12:00, 13:00-17:00.

## Schedule

| ID | Task | Type | Duration | Start | Finish | Predecessors | Total slack | Free slack | Constraint |
| --- | --- | --- | --- | --- | --- | --- | --- | --- | --- |
| 1 | Start of Summer Shutdown | milestone | 0d | 2005-07-16 | 2005-07-16 |  | 31d |  | start no earlier than 2005-07-16 |
| 2 | Start of August Dark Run | milestone | 0d | 2005-08-26 | 2005-08-26 | 9 | 1d |  | start no earlier than 2005-08-26 |
| 3 | Prep camera for move to clean room |  | 1d | 2005-07-22 | 2005-07-22 |  | 31d | 0d | start no earlier than 2005-07-22 |
| 4 | Move camera to clean room |  | 1d | 2005-07-25 | 2005-07-25 | 3 | 31d | 0d |  |
| 5 | Camera maintenance work |  | 5d | 2005-07-26 | 2005-08-01 | 4 | 31d |  | start no earlier than 2005-07-22 |
| 6 | Disassemble telescope for M1 aluminizing |  | 2d | 2005-07-28 | 2005-07-29 |  | 24d | 0d | start no earlier than 2005-07-28 |
| 7 | M1 at KPNO for aluminizing |  | 5d | 2005-08-01 | 2005-08-05 | 6 | 24d | 0d |  |
| 8 | Telescope re-assembly |  | 3d | 2005-08-08 | 2005-08-10 | 7 | 24d |  |  |
| 9 | Shakedown testing |  | 4d? | 2005-08-22 | 2005-08-25 |  | 1d | 0d | finish no earlier than 2005-08-25 |
| 10 | SN compute cluster machines arrive at APO | milestone | 0d | 2005-08-01 | 2005-08-01 |  | 27d | 0d | start no earlier than 2005-08-01 |
| 11 | SN team at APO to setup and test compute cluster (tentative) |  | 5d | 2005-08-01 | 2005-08-05 | 10 | 27d |  |  |
| 12 | 3.5m shutdown |  | 10d? | 2005-07-18 | 2005-07-29 |  | 32d |  | finish no earlier than 2005-07-29 |
| 13 | 3.5m shutdown |  | 10d? | 2005-08-15 | 2005-08-26 |  | 0d |  | finish no earlier than 2005-08-26 |
| 14 | DA upgrade installation and testing (tentative) |  | 5d | 2005-08-01 | 2005-08-05 |  | 2d | 0d | start no earlier than 2005-08-01 |
| 15 | UPS upgrade in computer room (tentative) |  | 5d | 2005-07-25 | 2005-07-29 |  | 20d |  | start no earlier than 2005-07-25 |
| 16 | SN compute cluster testing and commissioning |  | 10d | 2005-08-08 | 2005-08-19 | 11 | 5d |  |  |
| 17 | DA acceptance testing and commissioning |  | 13d | 2005-08-08 | 2005-08-24 | 14 | 2d |  |  |
